# JUICE UVS IMS DD 20191122 CD NC

Schedule from Primavera P6, 2016-10-03 to 2022-09-21, data date 2019-11-22, A marks actual dates.
Must finish by 2034-06-30

## Calendars

- JUICE 1-8-5 STD: Mon-Fri 08:00-16:00; Sat-Sun off. Exceptions (off unless hours are given): 2016-11-24 to 2016-11-27, 2016-12-23 to 2016-12-26, 2016-12-31 to 2017-01-02, 2017-05-26 to 2017-05-29, 2017-07-04, 2017-09-01 to 2017-09-04, 2017-11-23 to 2017-11-26, 2017-12-23 to 2017-12-26, 2018-01-01, 2018-05-25 to 2018-05-28, 2018-07-04, 2018-08-31 to 2018-09-03, 2018-11-22 to 2018-11-25, 2018-12-22 to 2018-12-25, 2019-01-01, 2019-05-24 to 2019-05-27, 2019-07-04, 2019-08-31 to 2019-09-02, 2019-11-28 to 2019-12-01, 2019-12-24 to 2019-12-25, 2019-12-28 to 2019-12-29, 2020-01-01, 2020-05-22 to 2020-05-25, 2020-07-03 to 2020-07-05, 2020-09-04 to 2020-09-07, 2020-11-26 to 2020-11-29, 2020-12-24 to 2020-12-27, 2021-01-01 to 2021-01-03, 2021-05-28 to 2021-05-31, 2021-07-02 to 2021-07-05, 2021-09-03 to 2021-09-06, 2021-11-25 to 2021-11-28, 2021-12-23 to 2021-12-26, 2022-01-01 to 2022-01-03, 2022-05-27 to 2022-05-30, 2022-07-01 to 2022-07-04, 2022-09-02 to 2022-09-05.

## Schedule

| ID | WBS | Activity | Type | Duration | Start | Finish | Predecessors | Complete | Planned start | Planned finish | Total float | Free float | Constraint | user_text5 | user_text6 | Justify | M/S | JUICE UVS Phases | JUICE UVS Phase CD | JUICE-UVS Resources | NASA Phase | LOE | JUICE-UVS Phase CD | JUICE Mission Phases | user_text1 JUICE-UVS Risk ID | JUICE-UVS Summary Milestones | BUDG - Budget Phase | SORT - Item Sort | EVT |
| --- | --- | --- | --- | --- | --- | --- | --- | --- | --- | --- | --- | --- | --- | --- | --- | --- | --- | --- | --- | --- | --- | --- | --- | --- | --- | --- | --- | --- | --- |
|  | JUICE | **JUICE Project Rollup** |  |  | 2016-10-03 | 2022-09-21 |  |  |  |  |  |  |  |  |  |  |  |  |  |  |  |  |  |  |  |  |  |  |  |
|  | 00 | **JUICE-UVS Milestones** |  |  | 2016-10-03 | 2022-09-21 |  |  |  |  |  |  |  |  |  |  |  |  |  |  |  |  |  |  |  |  |  |  |  |
| JUICE-UVS 0011 |  | Phase C Start LOE | milestone | 0d | 2016-10-03 A | 2016-10-03 A |  | 100% |  |  |  |  |  | INMS0011 | TGE 5.03 INMS.0 | Mission Level Mandated Start Date | P | Phase C | PH CD | 0Budget | C | LOE | PH CD |  |  |  |  |  |  |
| JUICE-UVS 0023 |  | Phase C Start Discrete | milestone | 0d | 2016-10-03 A | 2016-10-03 A |  | 100% |  |  |  |  |  |  |  |  |  |  |  |  |  |  |  |  |  |  |  |  |  |
| JUICE-UVS 0013 |  | NASA KDP-C | milestone | 0d | 2016-10-04 A | 2016-10-04 A |  | 100% | 2016-10-31 | 2016-10-31 |  |  |  | INMS0013 | TGE 5.03 INMS.0 | Mission Level Mandated Finish Date | P | Phase C |  | 0Budget |  |  | PH CD | End B |  |  |  |  |  |
| JUICE-UVS 0007 |  | Mission PDR Complete | milestone | 0d | 2017-03-01 A | 2017-03-01 A |  | 100% |  |  |  |  |  | INMS0007 | TGE 5.03 INMS.0 | Mission Level Mandated Finish Date | P | Phase C | PH CD | 0Budget | C |  | PH CD |  |  |  |  |  |  |
| JUICE-UVS594771 |  | Test Readiness Review (TRR) | milestone | 0d | 2018-06-21 A | 2018-06-21 A |  | 100% | 2018-06-22 | 2018-06-22 |  |  |  |  |  |  |  |  |  |  |  |  |  |  |  |  |  |  |  |
| JUICE-UVS 0019 |  | Mission CDR Complete | milestone | 0d | 2019-03-01 A | 2019-03-01 A |  | 100% |  |  |  |  | mandatory finish 2019-03-01 | INMS0019 | TGE 5.03 INMS.0 | Mission Level Mandated Finish Date | P | Phase C |  | 0Budget | C |  | PH CD |  |  |  |  |  |  |
| JUICE-UVS 0010 |  | PER - Target Milestone Date | milestone | 0d | 2019-03-20 A | 2019-03-20 A | JUICE-UVS 593307 FF | 100% |  |  |  |  | mandatory finish 2019-03-20 |  |  | Mission Level Mandated Finish Date | P | Phase C |  | 0Budget |  |  | PH CD |  |  |  |  |  |  |
| JUICE-UVS 0038 |  | ESA QR - Target Milestone Date | milestone | 0d | 2019-09-25 A | 2019-09-25 A |  | 100% |  |  |  |  | mandatory finish 2019-09-25 |  |  | Mission Level Mandated Finish Date | P | Phase C |  | 0Budget |  |  | PH CD |  |  |  |  |  |  |
| JUICE-UVS 592531 |  | NASA PSR/ESA AR - Target Milestone Date | milestone | 0d | 2019-09-25 A | 2019-09-25 A |  | 100% |  |  |  |  | mandatory finish 2019-09-25 |  |  | Mission Level Mandated Finish Date | P | Phase C |  | 0Budget |  |  | PH CD |  |  |  |  |  |  |
| JUICE-UVS 0029 |  | SC/Payload I&T Complete LOE | milestone | 0d | 2020-09-30 | 2020-09-30 |  |  |  |  | 0d |  | mandatory finish 2020-09-30 | INMS0029 | TGE 5.03 INMS.0 | Mission Level Mandated Finish Date | P | Phase C |  | 0Budget | C | LOE | PH CD |  |  |  |  |  |  |
| JUICE-UVS 0041 |  | End of Phase C LOE | milestone | 0d | 2020-11-13 | 2020-11-13 | JUICE-UVS 3422, JUICE-UVS 0011 |  |  |  | 0d |  | mandatory finish 2020-11-13 |  |  | Mission Level Mandated Finish Date | P | Phase C |  |  |  | LOE |  |  |  |  |  |  |  |
| JUICE-UVS 0014 |  | Phase D Start Discrete | milestone | 0d | 2020-11-16 | 2020-11-16 |  |  |  |  | 0d |  | mandatory start 2020-11-16 |  |  | Mission Level Mandated Start Date | P | Phase D |  | 0Budget | D |  | PH CD |  |  |  |  |  |  |
| JUICE-UVS 0026 |  | Phase D Start LOE | milestone | 0d | 2020-11-16 | 2020-11-16 |  |  |  |  | 0d |  | mandatory finish 2020-11-16 |  |  | Mission Level Mandated Start Date |  |  |  |  |  |  |  |  |  |  |  |  |  |
| JUICE-UVS 0032 |  | Mission Flight Acceptance Review (FAR) | milestone | 0d | 2021-09-15 | 2021-09-15 |  |  |  |  | 0d | 255d | finish on 2021-09-15 |  |  | Mission Level Mandated Finish Date | P | Phase C |  | 0Budget | C |  | PH CD |  |  |  |  |  |  |
| JUICE-UVS 0035 |  | JUICE-UVS-Observatory I&T Begins | milestone | 0d | 2021-09-21 | 2021-09-21 |  |  |  |  | 3198d | 251d | start on or after 2021-09-21 | INMS0035 | TGE 5.03 INMS.0 | Mission Level Mandated Start Date | P | Phase C |  | 0Budget | C |  | PH CD |  |  |  |  |  |  |
| JUICE-UVS 0057 |  | Mission Flight Readiness Review (FRR) | milestone | 0d | 2022-03-22 | 2022-03-22 | JUICE-UVS 5063 |  |  |  | 0d |  | finish on 2022-03-22 |  |  | Mission Level Mandated Finish Date | P | Phase D |  | 0Budget | D |  | PH CD |  |  |  |  |  |  |
| JUICE-UVS 0051 |  | JUICE Launch | milestone | 0d | 2022-06-06 | 2022-06-06 | JUICE-UVS 5709, JUICE-UVS 10600, JUICE-UVS 593661, JUICE-UVS 5060 |  |  |  | 0d |  | mandatory finish 2022-06-04 | INMS0051 | TGE 5.03 INMS.0 | Mission Level Mandated Finish Date | P | Phase D |  | 0Budget | D |  | PH CD |  | RISK ID 22 |  |  |  |  |
| JUICE-UVS 0101 |  | JUICE Cruise/Interplanetary Transfer | milestone | 0d | 2022-06-30 | 2022-06-30 |  |  |  |  | 3003d | 56d | start on or after 2022-06-30 |  |  | Mission Level Mandated Start Date | P | Phase D |  | 0Budget |  |  | PH CD |  |  |  |  |  |  |
| JUICE-UVS 0054 |  | Mission Commissioning Results Review (MCRR) | milestone | 0d | 2022-08-19 | 2022-08-19 |  |  |  |  | 0d | 22d | finish on 2022-08-19 |  |  | Mission Level Mandated Finish Date | P | Phase D |  | 0Budget | D |  | PH CD |  |  |  |  |  |  |
| JUICE-UVS 0017 |  | End of Phase D Discrete | milestone | 0d | 2022-09-21 | 2022-09-21 | JUICE-UVS 592560, JUICE-UVS 592339, JUICE-UVS 592336, JUICE-UVS 5646, JUICE-UVS 8056, JUICE-UVS 8104, JUICE-UVS 8095, JUICE-UVS 592956, JUICE-UVS 592953, JUICE-UVS 592959, JUICE-UVS 592938, JUICE-UVS 592932, JUICE-UVS 592929, JUICE-UVS 592926, JUICE-UVS 592914, JUICE-UVS 592911, JUICE-UVS 592908, JUICE-UVS 592905, JUICE-UVS 592902, JUICE-UVS594768, JUICE-UVS594588, JUICE-UVS594408, JUICE-UVS 5694 |  |  |  | 0d |  | mandatory finish 2022-09-21 |  |  | Mission Level Mandated Finish Date | P | Phase C |  | 0Budget |  |  | PH CD |  |  |  |  |  |  |
| JUICE-UVS 0020 |  | End of Phase D LOE | milestone | 0d | 2022-09-21 | 2022-09-21 | JUICE-UVS 9015, JUICE-UVS 5691, JUICE-UVS 7983, JUICE-UVS 1074, JUICE-UVS 592284, JUICE-UVS 592236, JUICE-UVS 591675, JUICE-UVS 592599, JUICE-UVS 10909, JUICE-UVS 8188, JUICE-UVS 11236, JUICE-UVS 593694, JUICE-UVS 11509, JUICE-UVS 1531, JUICE-UVS 592566, JUICE-UVS 594240, JUICE-UVS 594231 |  |  |  | 0d |  | mandatory finish 2022-09-21 |  |  | Mission Level Mandated Finish Date | P | Phase D |  |  |  | LOE |  |  |  |  |  |  |  |
|  | 01 | **H/W Deliverables** |  |  | 2018-09-26 | 2020-03-23 |  |  |  |  |  |  |  |  |  |  |  |  |  |  |  |  |  |  |  |  |  |  |  |
| JUICE-UVS 098 |  | JUICE-UVS EM 1 Delivery to ESA Target | milestone | 0d | 2018-09-26 A | 2018-09-26 A | JUICE-UVS 2188, JUICE-UVS594138 | 100% | 2018-10-01 | 2018-10-01 |  |  | mandatory finish 2018-09-26 |  |  | Mission Level Mandated Finish Date | D | Phase C |  | 0Budget | C |  | PH CD |  |  | Summary |  |  |  |
| JUICE-UVS 089 |  | JUICE UVS FM Delivery Target LOE | milestone | 0d | 2020-01-21 | 2020-01-21 | JUICE-UVS 593673, JUICE-UVS 2390, JUICE-UVS 0978, JUICE-UVS 592245, JUICE-UVS 591486, JUICE-UVS 591516, JUICE-UVS 591546, JUICE-UVS 591576, JUICE-UVS 592332, JUICE-UVS 591636, JUICE-UVS 591606, JUICE-UVS 592296, JUICE-UVS 2225, JUICE-UVS 592344, JUICE-UVS 592839, JUICE-UVS 3427, JUICE-UVS 3422, JUICE-UVS 3464, JUICE-UVS 3417 |  |  |  | 0d |  | mandatory finish 2020-01-21 |  |  | Mission Level Mandated Finish Date | D | Phase C |  | 0Budget | C | LOE | PH CD |  |  | Summary | C/D | MILE | LOE |
| JUICE-UVS 594213 |  | JUICE UVS FM Delivery Target Discrete | milestone | 0d | 2020-01-21 | 2020-01-21 | JUICE-UVS 593379, JUICE-UVS 8043, JUICE-UVS 593361, JUICE-UVS 593358, JUICE-UVS 593355, JUICE-UVS 593352, JUICE-UVS 593349, JUICE-UVS 593346, JUICE-UVS 593343, JUICE-UVS 593337, JUICE-UVS 593334, JUICE-UVS 593328, JUICE-UVS 593325, JUICE-UVS 593004, JUICE-UVS 593001, JUICE-UVS 592986, JUICE-UVS 592983, JUICE-UVS 592980, JUICE-UVS 592977, JUICE-UVS 592974, JUICE-UVS 592971, JUICE-UVS 592950, JUICE-UVS 592947, JUICE-UVS 592944, JUICE-UVS 592941, JUICE-UVS 592935, JUICE-UVS 592899, JUICE-UVS 592896, JUICE-UVS 592893, JUICE-UVS 592890, JUICE-UVS 592887, JUICE-UVS 592884, JUICE-UVS 592881, JUICE-UVS 592477, JUICE-UVS 592333, JUICE-UVS 0023, JUICE-UVS 5598, JUICE-UVS 2185, JUICE-UVS 592770, JUICE-UVS 594216 |  |  |  | 0d |  | mandatory finish 2020-01-21 |  |  | Mission Level Mandated Finish Date | D | Phase C |  | 0Budget | C |  | PH CD |  |  | Summary | C/D | MILE |  |
| JUICE-UVS3081 |  | EM 2 Delivery SwRI | milestone | 0d | 2020-01-21 | 2020-01-21 | JUICE-UVS594165 |  |  |  | 0d |  | mandatory finish 2020-01-21 |  |  | Mission Level Mandated Finish Date | D | Phase C |  | 0Budget | C |  | PH CD |  |  |  |  |  |  |
| JUICE-UVS 092 |  | JUICE-UVS STM Delivery to ESA | milestone | 0d | 2020-03-23 | 2020-03-23 | JUICE-UVS 51067, JUICE-UVS 3094 |  |  |  | 0d |  | mandatory finish 2020-03-23 |  |  | Mission Level Mandated Finish Date | D | Phase C |  | 0Budget | C |  | PH CD |  |  | Summary |  |  |  |

| ID | WBS | Activity | Type | Duration | Start | Finish | Predecessors | Complete | Remaining | Planned start | Planned finish | Total float | Constraint | Expected finish | Justify | M/S | JUICE Mission Phases | JUICE UVS Phases | JUICE UVS Phase CD | JUICE-UVS Resources | JUICE-UVS Summary Milestones | NASA Phase | JUICE-UVS Phase CD | EVT | LOE | BUDG - Budget Phase | SORT - Item Sort | Work Package Name | JUICE-UVS CAMs | JUICE-UVS Charge #s | Work Package | CA | WP/PP | Control Account | OBS | P6 EVT | user_text1 JUICE-UVS Risk ID |
| --- | --- | --- | --- | --- | --- | --- | --- | --- | --- | --- | --- | --- | --- | --- | --- | --- | --- | --- | --- | --- | --- | --- | --- | --- | --- | --- | --- | --- | --- | --- | --- | --- | --- | --- | --- | --- | --- |
|  | 02 | **Instrument Level Reviews** |  |  | 2016-11-02 | 2019-10-16 |  |  |  |  |  |  |  |  |  |  |  |  |  |  |  |  |  |  |  |  |  |  |  |  |  |  |  |  |  |  |  |
| JUICE-UVS 088 |  | NASA IBR | milestone | 0d | 2016-11-02 A | 2016-11-02 A |  | 100% |  |  |  |  |  |  | Mission Level Mandated Finish Date | P | End B | Phase C | PH CD | 0Budget | Summary | C | PH CD |  |  |  |  |  |  |  |  |  |  |  |  |  |  |
| JUICE-UVS 592776 |  | NASA CDR LOE | milestone | 0d | 2017-09-13 A | 2017-09-13 A | JUICE-UVS593595, JUICE-UVS 593598, JUICE-UVS 592845 | 100% |  |  |  |  |  |  | Mission Level Mandated Finish Date | P |  | Phase C |  | 0Budget | Summary |  | PH CD | LOE | LOE |  |  |  |  |  |  |  |  |  |  |  |  |
| JUICE-UVS 060 |  | ESA ICDR | milestone | 0d | 2017-10-02 A | 2017-10-02 A |  | 100% |  |  |  |  |  |  | Mission Level Mandated Finish Date | P |  | Phase C |  | 0Budget | Summary | C | PH CD |  |  | C/D | MILE |  |  |  |  |  |  |  |  |  |  |
| JUICE-UVS592773 |  | NASA PER | milestone | 0d | 2019-03-20 A | 2019-03-20 A | JUICE-UVS 593307 FF | 100% |  |  |  |  | mandatory finish 2019-03-20 |  | Mission Level Mandated Finish Date | P |  | Phase C |  | 0Budget | Summary |  | PH CD |  |  |  |  |  |  |  |  |  |  |  |  |  |  |
| JUICE-UVS 592770 |  | NASA PSR | milestone | 0d | 2019-10-16 A | 2019-10-16 A | JUICE-UVS 2380, JUICE-UVS 593472 | 100% |  | 2019-10-25 | 2019-10-25 |  | mandatory finish 2019-10-16 |  | Mission Level Mandated Finish Date | P |  | Phase C |  | 0Budget | Summary |  | PH CD |  |  |  |  |  |  |  |  |  |  |  |  |  |  |
| JUICE-UVS 594216 |  | ESA QR | milestone | 0d | 2019-10-16 A | 2019-10-16 A | JUICE-UVS 593319 | 100% |  | 2019-10-25 | 2019-10-25 |  | mandatory finish 2019-10-16 |  | Mission Level Mandated Finish Date | P |  | Phase C |  | 0Budget |  |  | PH CD |  |  |  |  |  |  |  |  |  |  |  |  |  |  |
|  | 03 | **Mission Level Reviews** |  |  | 2017-03-17 | 2020-09-24 |  |  |  |  |  |  |  |  |  |  |  |  |  |  |  |  |  |  |  |  |  |  |  |  |  |  |  |  |  |  |  |
| JUICE-UVS 074 |  | JUICE S/C PDR | milestone | 0d | 2017-03-17 A | 2017-03-17 A |  | 100% |  |  |  |  |  |  | Mission Level Mandated Finish Date | P |  | Phase C |  | 0Budget |  | C | PH CD |  |  |  |  |  |  |  |  |  |  |  |  |  |  |
| JUICE-UVS 077 |  | JUICE S/C CDR | milestone | 0d | 2019-02-04 A | 2019-02-04 A |  | 100% |  |  |  |  | mandatory finish 2019-02-04 |  | Mission Level Mandated Finish Date | P |  | Phase C |  | 0Budget |  | C | PH CD |  |  |  |  |  |  |  |  |  |  |  |  |  |  |
| JUICE-UVS 086 |  | JUICE FAR | milestone | 0d | 2020-09-24 | 2020-09-24 |  |  |  |  |  | 0d | mandatory finish 2020-09-24 |  | Mission Level Mandated Finish Date | P |  | Phase C |  | 0Budget |  | C | PH CD |  |  |  |  |  |  |  |  |  |  |  |  |  |  |
|  | 04 | **SDRLs** |  |  | 2017-08-16 | 2017-10-24 |  |  |  |  |  |  |  |  |  |  |  |  |  |  |  |  |  |  |  |  |  |  |  |  |  |  |  |  |  |  |  |
| JUICE-UVS 593589 |  | CAD Model MA - 06 | milestone | 0d | 2017-08-16 A | 2017-08-16 A | JUICE-UVS 5232 | 100% |  |  |  |  |  |  |  | D |  | Phase C |  |  |  |  | PH CD |  |  |  |  | Instrument SDRLs | Kris | 19190.25.570 |  |  |  |  |  |  |  |
| JUICE-UVS 593424 |  | Instrument Mechanical Interface Control Document SE - 02 | milestone | 0d | 2017-08-30 A | 2017-08-30 A | JUICE-UVS 0023 | 100% |  |  |  |  |  |  | PM Directed SDRL Deliverable Finish Date | D |  | Phase C |  |  |  |  | PH CD |  |  |  |  | Instrument SDRLs | Kris | 19190.25.570 |  |  |  |  |  |  |  |
| JUICE-UVS 593574 |  | SMM MA - 01 | milestone | 0d | 2017-08-30 A | 2017-08-30 A | JUICE-UVS 0023 | 100% |  |  |  |  |  |  | PM Directed SDRL Deliverable Finish Date | D |  | Phase C |  |  |  |  | PH CD |  |  |  |  | Instrument SDRLs | Kris | 19190.25.570 |  |  |  |  |  |  |  |
| JUICE-UVS 593583 |  | RGMM MA - 04 | milestone | 0d | 2017-08-30 A | 2017-08-30 A | JUICE-UVS 0023 | 100% |  |  |  |  |  |  | PM Directed SDRL Deliverable Finish Date | D |  | Phase C |  |  |  |  | PH CD |  |  |  |  | Instrument SDRLs | Kris | 19190.25.570 |  |  |  |  |  |  |  |
| JUICE-UVS 593580 |  | RTMM MA - 03 | milestone | 0d | 2017-09-05 A | 2017-09-05 A | JUICE-UVS 592461 | 100% |  |  |  |  |  |  |  | D |  | Phase C |  |  |  |  | PH CD |  |  |  |  | Instrument SDRLs | Kris | 19190.25.570 |  |  |  |  |  |  |  |
| JUICE-UVS 593577 |  | Radiation Model MA - 02 | milestone | 0d | 2017-10-24 A | 2017-10-24 A | JUICE-UVS 593262 | 100% |  |  |  |  |  |  |  | D |  | Phase C |  |  |  |  | PH CD |  |  |  |  | Instrument SDRLs | Kris | 19190.25.570 |  |  |  |  |  |  |  |
|  | 01 | **Project Management** |  |  | 2016-10-03 | 2022-09-21 |  |  |  |  |  |  |  |  |  |  |  |  |  |  |  |  |  |  |  |  |  |  |  |  |  |  |  |  |  |  |  |
|  | 01 | **Management** |  |  | 2016-10-03 | 2022-09-21 |  |  |  |  |  |  |  |  |  |  |  |  |  |  |  |  |  |  |  |  |  |  |  |  |  |  |  |  |  |  |  |
|  | 01 | **Sustained PM** |  |  | 2016-10-03 | 2022-09-21 |  |  |  |  |  |  |  |  |  |  |  |  |  |  |  |  |  |  |  |  |  |  |  |  |  |  |  |  |  |  |  |
|  | 01 | **Sustained PM Phase C/D** |  |  | 2016-10-03 | 2022-09-21 |  |  |  |  |  |  |  |  |  |  |  |  |  |  |  |  |  |  |  |  |  |  |  |  |  |  |  |  |  |  |  |
| JUICE-UVS 1513 |  | Program Management Oversight FY 17 Start of Phase C |  | 250d | 2016-10-03 A | 2017-09-29 A | JUICE-UVS 0011 | 100% |  |  |  |  |  |  |  |  |  | Phase C |  |  |  | C | PH CD | LOE | LOE |  |  | Sustained PM | Matt | 19190.21.110 | 1.1.1 | 01 | 01.01.01.01 | 1 | DSI | LOE |  |
| JUICE-UVS 592486 |  | Additional ESA Support FY 17 Start of Phase C |  | 250d | 2016-10-03 A | 2017-09-29 A | JUICE-UVS 0011 | 100% |  |  |  |  |  |  |  |  |  | Phase C |  |  |  | C | PH CD | LOE | LOE |  |  | Sustained PM | Matt | 19190.21.110 | 1.1.1 | 01 | 01.01.01.01 | 1 | DSI | LOE |  |
| JUICE-UVS 1516 |  | Program Management Oversight FY 18 |  | 250d | 2017-10-02 A | 2018-09-28 A | JUICE-UVS 1513 | 100% |  |  |  |  |  |  |  |  |  | Phase C |  |  |  | C | PH CD | LOE | LOE |  |  | Sustained PM | Matt | 19190.21.110 | 1.1.1 | 01 | 01.01.01.01 | 1 | DSI | LOE | Risk ID 23 |
| JUICE-UVS 592489 |  | Additional ESA Support FY 18 |  | 250d | 2017-10-02 A | 2018-09-28 A | JUICE-UVS 592486 | 100% |  |  |  |  |  |  |  |  |  | Phase C |  |  |  | C | PH CD | LOE | LOE |  |  | Sustained PM | Matt | 19190.21.110 | 1.1.1 | 01 | 01.01.01.01 | 1 | DSI | LOE | Risk ID 23 |
| JUICE-UVS 1519 |  | Program Management Oversight FY 19 |  | 251d | 2018-10-01 A | 2019-09-30 A | JUICE-UVS 1516 | 100% |  | 2018-10-01 | 2019-09-27 |  |  |  |  |  |  | Phase C |  |  |  | C | PH CD | LOE | LOE |  |  | Sustained PM | Matt | 19190.21.110 | 1.1.1 | 01 | 01.01.01.01 | 1 | DSI | LOE | Risk ID 23 |
| JUICE-UVS 592492 |  | Additional ESA Support FY 19 |  | 251d | 2018-10-01 A | 2019-09-30 A | JUICE-UVS 592489 | 100% |  | 2018-10-01 | 2019-09-27 |  |  |  |  |  |  | Phase C |  |  |  | C | PH CD | LOE | LOE |  |  | Sustained PM | Matt | 19190.21.110 | 1.1.1 | 01 | 01.01.01.01 | 1 | DSI | LOE | Risk ID 23 |
| JUICE-UVS 1522 |  | Program Management Oversight FY 20 |  | 252d | 2019-10-01 A | 2020-10-01 A | JUICE-UVS 1519 | 100% |  | 2019-10-01 | 2020-09-30 |  |  |  |  |  |  | Phase C |  |  |  | C | PH CD | LOE | LOE |  |  | Sustained PM | Matt | 19190.21.110 | 1.1.1 | 01 | 01.01.01.01 | 1 | DSI | LOE | Risk ID 23 |
| JUICE-UVS 592495 |  | Additional ESA Support FY 20 |  | 252d | 2019-10-01 A | 2020-09-30 A | JUICE-UVS 592492 | 100% |  |  |  |  |  |  |  |  |  | Phase C |  |  |  | C | PH CD | LOE | LOE |  |  | Sustained PM | Matt | 19190.21.110 | 1.1.1 | 01 | 01.01.01.01 | 1 | DSI | LOE | Risk ID 23 |
| JUICE-UVS 1525 |  | Program Management Oversight FY 21 End of Phase C |  | 32d | 2020-10-01 A | 2020-11-13 | JUICE-UVS 1522, JUICE-UVS 592495 |  | 246d |  |  | 0d |  | 2020-11-13 |  |  |  | Phase C |  |  |  | C | PH CD | LOE | LOE |  |  | Sustained PM | Matt | 19190.21.110 | 1.1.1 | 01 | 01.01.01.01 | 1 | DSI | LOE |  |
| JUICE-UVS 1528 |  | Program Management Oversight FY 21 Start of Phase D |  | 218d | 2020-11-16 | 2021-09-30 | JUICE-UVS 1525 |  |  |  |  | 0d |  |  |  |  |  | Phase D |  |  |  | D | PH CD | LOE | LOE |  |  | Sustained PM | Matt | 19190.21.110 | 1.1.1 | 01 | 01.01.01.01 | 1 | DSI | LOE |  |
| JUICE-UVS 1531 |  | Program Management Oversight FY 22 End of Phase D |  | 243d | 2021-10-01 | 2022-09-21 | JUICE-UVS 1528 |  |  |  |  | 0d |  |  |  |  |  | Phase D |  |  |  | D | PH CD | LOE | LOE |  |  | Sustained PM | Matt | 19190.21.110 | 1.1.1 | 01 | 01.01.01.01 | 1 | DSI | LOE |  |

| ID | WBS | Activity | Type | Duration | Start | Finish | Predecessors | Complete | Remaining | Planned start | Planned finish | Total float | Free float | Expected finish | CA | WP/PP | Work Package Name | Control Account | JUICE UVS Phases | EVT | JUICE-UVS CAMs | OBS | P6 EVT | JUICE-UVS Charge #s | JUICE-UVS Phase CD | Justify | user_text5 | user_text6 | Work Package | NASA Phase | LOE | user_text2 | user_text8 | JUICE UVS Phase CD | Forecast Chg |
| --- | --- | --- | --- | --- | --- | --- | --- | --- | --- | --- | --- | --- | --- | --- | --- | --- | --- | --- | --- | --- | --- | --- | --- | --- | --- | --- | --- | --- | --- | --- | --- | --- | --- | --- | --- |
|  | 02 | **Discrete PM** |  |  | 2017-06-26 | 2017-08-11 |  |  |  |  |  |  |  |  |  |  |  |  |  |  |  |  |  |  |  |  |  |  |  |  |  |  |  |  |  |
| JUICE-UVS 593592 |  | Project Management Plan PMP - 001 |  | 10d | 2017-06-26 A | 2017-07-10 A | JUICE-UVS 0023 | 100% |  |  |  |  |  |  | 01 | 01.01.02 | Discrete PM | 1 | Phase C | % C | Matt | DSI | 0-100 | 19190.21.210 | PH CD |  |  |  |  |  |  |  |  |  |  |
| JUICE-UVS 593601 |  | Risk Management Plan JUICE-UVS Investigation PM - 7 |  | 10d | 2017-06-26 A | 2017-07-10 A | JUICE-UVS 0023 | 100% |  |  |  |  |  |  | 01 | 01.01.02 | Discrete PM | 1 | Phase C | % C | Matt | DSI | 0-100 | 19190.21.210 | PH CD |  |  |  |  |  |  |  |  |  |  |
| JUICE-UVS 593604 |  | Risk Register Assessment PM - 14 |  | 10d | 2017-07-31 A | 2017-08-11 A | JUICE-UVS 0023 | 100% |  |  |  |  |  |  | 01 | 01.01.02 | Discrete PM | 1 | Phase C | % C | Matt | DSI | 0-100 | 19190.21.210 | PH CD | CDR SDRL Driven Start Date |  |  |  |  |  |  |  |  |  |
| JUICE-UVS 593607 |  | Document Delivery List PM - 16 |  | 10d | 2017-07-31 A | 2017-08-11 A | JUICE-UVS 0023 | 100% |  |  |  |  |  |  | 01 | 01.01.02 | Discrete PM | 1 | Phase C | % C | Matt | DSI | 0-100 | 19190.21.210 | PH CD | CDR SDRL Driven Start Date |  |  |  |  |  |  |  |  |  |
| JUICE-UVS 593610 |  | Projoct Organization Structure for the JUICE-UVS Instrument PM - 50 |  | 10d | 2017-07-31 A | 2017-08-11 A | JUICE-UVS 0023 | 100% |  |  |  |  |  |  | 01 | 01.01.02 | Discrete PM | 1 | Phase C | % C | Matt | DSI | 0-100 | 19190.21.210 | PH CD | CDR SDRL Driven Start Date |  |  |  |  |  |  |  |  |  |
|  | 02 | **Project Control** |  |  | 2016-10-03 | 2020-01-21 |  |  |  |  |  |  |  |  |  |  |  |  |  |  |  |  |  |  |  |  |  |  |  |  |  |  |  |  |  |
| JUICE-UVS 0972 |  | Planning / EVM FY 2017 Start Phase C | level of effort | 250d | 2016-10-03 A | 2017-09-29 A | JUICE-UVS 0011 | 100% |  |  |  |  |  |  | 01 | 01.02 | Project Control | 1 | Phase C | LOE | Matt | DSI | LOE | 19190.21.220 | PH CD |  | INMS0106 | TGE 5.03 INMS.1.1 | 1.2.1 | C | LOE |  |  |  |  |
| JUICE-UVS 0975 |  | Planning / EVM FY 2018 |  | 250d | 2017-10-02 A | 2018-09-28 A | JUICE-UVS 0972 | 100% |  |  |  |  |  |  | 01 | 01.02 | Project Control |  | Phase C | LOE | Matt | DSI | LOE | 19190.21.220 | PH CD |  |  |  |  | C | LOE |  |  |  |  |
| JUICE-UVS 0978 |  | Planning / EVM FY 2019 | level of effort | 189d | 2018-09-28 A | 2020-01-21 | JUICE-UVS 0975 | 80% | 38d | 2018-10-01 | 2019-07-01 | 0d |  |  | 01 | 01.02 | Project Control | 1 | Phase C | LOE | Matt | DSI | LOE | 19190.21.220 | PH CD |  | INMS0106 | TGE 5.03 INMS.1.1 | 1.2.1 | C | LOE | CS1 |  |  |  |
|  | 03 | **Financial** |  |  | 2016-10-03 | 2022-09-21 |  |  |  |  |  |  |  |  |  |  |  |  |  |  |  |  |  |  |  |  |  |  |  |  |  |  |  |  |  |
| JUICE-UVS 1062 |  | Financial FY 2017 Start Phase C |  | 1d | 2016-10-03 A | 2017-09-29 A | JUICE-UVS 0011 | 100% |  | 2017-09-29 | 2017-09-29 |  |  |  | 01 | 01.03 | Financial | 1 | Phase C | LOE | Matt | DSI | LOE | 19190.21.310 | PH CD |  | INMS0106 | TGE 5.03 INMS.1.1 | 1.3.1 | C | LOE |  | CK |  |  |
| JUICE-UVS 1065 |  | Financial FY 2018 |  | 250d | 2017-10-02 A | 2018-09-28 A | JUICE-UVS 1062 | 100% |  |  |  |  |  |  | 01 | 01.03 | Financial |  | Phase C | LOE | Matt | DSI | LOE | 19190.21.310 | PH CD |  |  |  |  | C | LOE |  |  |  |  |
| JUICE-UVS 1068 |  | Financial FY 2019 |  | 251d | 2018-10-01 A | 2019-09-30 A | JUICE-UVS 1062, JUICE-UVS 1065 | 100% |  | 2018-10-01 | 2019-09-27 |  |  |  | 01 | 01.03 | Financial | 1 | Phase C | LOE | Matt | DSI | LOE | 19190.21.310 | PH CD |  | INMS0106 | TGE 5.03 INMS.1.1 | 1.3.1 | C | LOE |  | CK |  |  |
| JUICE-UVS 1071 |  | Financial FY 2020 |  | 252d | 2019-10-01 A | 2020-09-30 | JUICE-UVS 1068 | 15% | 214d |  |  | 0d |  | 2020-09-30 | 01 | 01.03 | Financial | 1 | Phase C | LOE | Matt | DSI | LOE | 19190.21.310 | PH CD |  | INMS0106 | TGE 5.03 INMS.1.1 | 1.3.1 | C | LOE |  | CK |  |  |
| JUICE-UVS 1083 |  | Financial FY 2021 End of Phase C |  | 36d | 2020-10-01 | 2020-11-19 | JUICE-UVS 1071 |  |  |  |  | 0d |  |  | 01 | 01.03 | Financial | 1 | Phase C | LOE | Matt | DSI | LOE | 19190.21.310 | PH CD |  |  |  | 1.3.1 | C | LOE |  | CK |  |  |
| JUICE-UVS 1086 |  | Financial FY 2021 Start of Phase D |  | 214d | 2020-11-20 | 2021-09-30 | JUICE-UVS 1083 |  |  |  |  | 0d |  |  | 01 | 01.03 | Financial | 1 | Phase D | LOE | Matt | DSI | LOE | 19190.21.310 | PH CD |  |  |  | 1.3.1 | C | LOE |  | CK |  |  |
| JUICE-UVS 1074 |  | Financial FY 2022 End of Phase D |  | 243d | 2021-10-01 | 2022-09-21 | JUICE-UVS 1086 |  |  |  |  | 0d |  |  | 01 | 01.03 | Financial | 1 | Phase D | LOE | Matt | DSI | LOE | 19190.21.310 | PH CD |  | INMS0106 | TGE 5.03 INMS.1.1 | 1.3.1 | C | LOE |  | CK |  |  |
|  | 04 | **CAM Support** |  |  | 2016-10-03 | 2019-12-17 |  |  |  |  |  |  |  |  |  |  |  |  |  |  |  |  |  |  |  |  |  |  |  |  |  |  |  |  |  |
|  | 01 | **CAM Support Labor** |  |  | 2016-10-03 | 2019-12-17 |  |  |  |  |  |  |  |  |  |  |  |  |  |  |  |  |  |  |  |  |  |  |  |  |  |  |  |  |  |
| JUICE-UVS 592239 |  | CAM FY 17 Start of Phase C |  | 250d | 2016-10-03 A | 2017-09-29 A | JUICE-UVS 0011 | 100% |  |  |  |  |  |  | 01 | 01.04.01 | CAM Support | 1 | Phase C | LOE | Matt | DSI | LOE | 19190.21.410 | PH CD |  |  |  | 1.4.1 | C | LOE |  | MF | PH CD |  |
| JUICE-UVS 592242 |  | CAM FY 18 |  | 250d | 2017-10-02 A | 2018-09-28 A | JUICE-UVS 592239 | 100% |  |  |  |  |  |  | 01 | 01.04.01 | CAM Support | 1 | Phase C | LOE | Matt | DSI | LOE | 19190.21.410 | PH CD |  |  |  | 1.4.1 | C | LOE |  | MF |  |  |
| JUICE-UVS 592245 |  | CAM FY 19 |  | 105d | 2018-10-01 A | 2019-12-17 | JUICE-UVS 592242 | 85% | 16d | 2018-10-01 | 2019-03-01 | 22d | 0d | 2019-12-17 | 01 | 01.04.01 | CAM Support | 1 | Phase C | LOE | Matt | DSI | LOE | 19190.21.410 | PH CD |  |  |  | 1.4.1 | C | LOE | CS1 | MF |  | Y |
|  | 02 | **CAM Support Non-Labor** |  |  | 2016-10-03 | 2019-12-17 |  |  |  |  |  |  |  |  |  |  |  |  |  |  |  |  |  |  |  |  |  |  |  |  |  |  |  |  |  |
| JUICE-UVS 593667 |  | CAM FY 17 Start of Phase C |  | 250d | 2016-10-03 A | 2017-09-29 A | JUICE-UVS 0011 | 100% |  |  |  |  |  |  | 01 | 01.04.02 | CAM Support | 1 | Phase C | LOE | Matt | DSI | LOE | 19190.21.420 | PH CD |  |  |  | 1.4.1 | C | LOE |  | MF | PH CD |  |
| JUICE-UVS 593670 |  | CAM FY 18 |  | 250d | 2017-10-02 A | 2018-09-28 A | JUICE-UVS 593667 | 100% |  |  |  |  |  |  | 01 | 01.04.02 | CAM Support | 1 | Phase C | LOE | Matt | DSI | LOE | 19190.21.420 |  |  |  |  | 1.4.1 | C | LOE |  | MF | PH CD |  |
| JUICE-UVS 593673 |  | CAM FY 19 |  | 105d | 2018-10-01 A | 2019-12-17 | JUICE-UVS 593670 | 85% | 16d | 2018-10-01 | 2019-03-01 | 22d | 0d | 2019-12-17 | 01 | 01.04.02 | CAM Support | 1 | Phase C | LOE | Matt | DSI | LOE | 19190.21.420 |  |  |  |  | 1.4.1 | C | LOE | CS1 | MF | PH CD | Y |

| ID | WBS | Activity | Duration | Start | Finish | Predecessors | Complete | Planned start | Planned finish | Total float | Free float | Constraint | user_text2 | user_text8 | CA | WP/PP | Work Package Name | Control Account | Justify | JUICE UVS Phases | EVT | JUICE-UVS CAMs | OBS | P6 EVT | JUICE-UVS Charge #s | JUICE-UVS Phase CD | Work Package | NASA Phase |
| --- | --- | --- | --- | --- | --- | --- | --- | --- | --- | --- | --- | --- | --- | --- | --- | --- | --- | --- | --- | --- | --- | --- | --- | --- | --- | --- | --- | --- |
|  | 05 | **Travel** |  | 2016-10-03 | 2022-09-21 |  |  |  |  |  |  |  |  |  |  |  |  |  |  |  |  |  |  |  |  |  |  |  |
|  | 01 | **Travel Phase C** |  | 2016-10-03 | 2021-01-22 |  |  |  |  |  |  |  |  |  |  |  |  |  |  |  |  |  |  |  |  |  |  |  |
| JUICE-UVS 592944 |  | Science Team Meeting (Cancelled) | 3d | 2016-10-03 A | 2016-10-05 A | JUICE-UVS 0023 | 100% |  |  |  |  |  | CS3 | MF | 01 | 01.05.01 | Travel Phase C | 1 | Project Level Mandated Start Date | Phase C | % C | Matt | DSI | 0-100 | 19190.21.510 | PH CD |  |  |
| JUICE-UVS 593001 |  | EM Detector Delivery | 3d | 2017-01-09 A | 2017-01-11 A | JUICE-UVS 0023 | 100% |  |  |  |  |  |  | MF | 01 | 01.05.01 | Travel Phase C | 1 | Project Level Mandated Start Date | Phase C | % C | Matt | DSI | 0-100 | 19190.21.510 | PH CD |  |  |
| JUICE-UVS 592884 |  | PI Day | 5d | 2017-02-06 A | 2017-02-10 A | JUICE-UVS 0023 | 100% |  |  |  |  |  |  | MF | 01 | 01.05.01 | Travel Phase C | 1 | Project Level Mandated Start Date | Phase C | % C | Matt | DSI | 0-100 | 19190.21.510 | PH CD |  |  |
| JUICE-UVS 593349 |  | SWWG | 5d | 2017-02-06 A | 2017-02-10 A | JUICE-UVS 0023 | 100% |  |  |  |  |  |  | MF | 01 | 01.05.01 | Travel Phase C | 1 | Project Level Mandated Start Date | Phase C | % C | Matt | DSI | 0-100 | 19190.21.510 | PH CD |  |  |
| JUICE-UVS 592974 |  | CCWG | 5d | 2017-02-27 A | 2017-03-03 A | JUICE-UVS 0023 | 100% |  |  |  |  |  |  | MF | 01 | 01.05.01 | Travel Phase C | 1 | Project Level Mandated Start Date | Phase C | % C | Matt | DSI | 0-100 | 19190.21.510 | PH CD |  |  |
| JUICE-UVS 592881 |  | PI Day | 5d | 2017-06-19 A | 2017-06-23 A | JUICE-UVS 0023 | 100% |  |  |  |  |  |  | MF | 01 | 01.05.01 | Travel Phase C | 1 | Project Level Mandated Start Date | Phase C | % C | Matt | DSI | 0-100 | 19190.21.510 | PH CD |  |  |
| JUICE-UVS 592971 |  | EMCWG | 5d | 2017-06-19 A | 2017-06-23 A | JUICE-UVS 0023 | 100% |  |  |  |  |  |  | MF | 01 | 01.05.01 | Travel Phase C | 1 | Project Level Mandated Start Date | Phase C | % C | Matt | DSI | 0-100 | 19190.21.510 | PH CD |  |  |
| JUICE-UVS 593343 |  | EM Magnetic Susceptibility Testing | 5d | 2017-06-19 A | 2017-06-23 A | JUICE-UVS 0023 | 100% |  |  |  |  |  |  | MF | 01 | 01.05.01 | Travel Phase C | 1 | Project Level Mandated Start Date | Phase C | % C | Matt | DSI | 0-100 | 19190.21.510 | PH CD |  |  |
| JUICE-UVS 593325 |  | CCWG | 5d | 2017-06-26 A | 2017-06-30 A | JUICE-UVS 0023 | 100% |  |  |  |  |  |  | MF | 01 | 01.05.01 | Travel Phase C | 1 | Project Level Mandated Start Date | Phase C | % C | Matt | DSI | 0-100 | 19190.21.510 | PH CD |  |  |
| JUICE-UVS 593352 |  | SWWG | 5d | 2017-06-26 A | 2017-06-30 A | JUICE-UVS 0023 | 100% |  |  |  |  |  |  | MF | 01 | 01.05.01 | Travel Phase C | 1 | Project Level Mandated Start Date | Phase C | % C | Matt | DSI | 0-100 | 19190.21.510 | PH CD |  |  |
| JUICE-UVS 592887 |  | PI Day | 5d | 2017-09-11 A | 2017-09-15 A | JUICE-UVS 0023 | 100% |  |  |  |  |  |  | MF | 01 | 01.05.01 | Travel Phase C | 1 | Project Level Mandated Start Date | Phase C | % C | Matt | DSI | 0-100 | 19190.21.510 | PH CD |  |  |
| JUICE-UVS 592327 |  | ESA ICDR Travel | 5d | 2017-10-09 A | 2017-10-13 A | JUICE-UVS 0023 | 100% |  |  |  |  |  |  | MF | 01 | 01.05.01 | Travel Phase C | 1 | Project Level Mandated Start Date | Phase C | % C | Matt | DSI | 0-100 | 19190.21.510 | PH CD | 1.5.1 |  |
| JUICE-UVS 592947 |  | Science Team Meeting | 3d | 2017-10-09 A | 2017-10-11 A | JUICE-UVS 0023 | 100% |  |  |  |  |  | CS3 | MF | 01 | 01.05.01 | Travel Phase C | 1 | Project Level Mandated Start Date | Phase C | % C | Matt | DSI | 0-100 | 19190.21.510 | PH CD |  |  |
| JUICE-UVS 592935 |  | Science Conference Meeting - AGU | 5d | 2017-12-11 A | 2017-12-18 A | JUICE-UVS 0023 | 100% | 2017-12-11 | 2017-12-15 |  |  |  |  | MF | 01 | 01.05.01 | Travel Phase C | 1 | Project Level Mandated Start Date | Phase C | % C | Matt | DSI | 0-100 | 19190.21.510 | PH CD |  |  |
| JUICE-UVS 593355 |  | SWWG | 5d | 2018-01-08 A | 2018-01-12 A | JUICE-UVS 0023 | 100% |  |  |  |  |  |  | MF | 01 | 01.05.01 | Travel Phase C | 1 | Project Level Mandated Start Date | Phase C | % C | Matt | DSI | 0-100 | 19190.21.510 | PH CD |  |  |
| JUICE-UVS 592941 |  | HVPS Parylene | 40d | 2018-01-26 A | 2018-03-22 A | JUICE-UVS 0023, JUICE-UVS 3252 | 100% |  |  |  |  |  |  | MF | 01 | 01.05.01 | Travel Phase C | 1 | Project Level Mandated Start Date | Phase C | % C | Matt | DSI | 50-50 | 19190.21.510 | PH CD |  |  |
| JUICE-UVS 592890 |  | PI Day | 5d | 2018-02-26 A | 2018-03-05 A | JUICE-UVS 0023 | 100% | 2018-02-26 | 2018-03-02 |  |  |  |  | MF | 01 | 01.05.01 | Travel Phase C | 1 |  | Phase C | % C | Matt | DSI | 0-100 | 19190.21.510 | PH CD |  |  |
| JUICE-UVS 592980 |  | CCWG | 5d | 2018-02-26 A | 2018-03-05 A | JUICE-UVS 0023 | 100% | 2018-02-26 | 2018-03-02 |  |  |  |  | MF | 01 | 01.05.01 | Travel Phase C | 1 |  | Phase C | % C | Matt | DSI | 0-100 | 19190.21.510 | PH CD |  |  |
| JUICE-UVS 592977 |  | EMCWG | 5d | 2018-02-27 A | 2018-03-05 A | JUICE-UVS 0023 | 100% |  |  |  |  |  |  | MF | 01 | 01.05.01 | Travel Phase C | 1 |  | Phase C | % C | Matt | DSI | 0-100 | 19190.21.510 | PH CD |  |  |
| JUICE-UVS 593004 |  | FM/FS Detector Delivery | 3d | 2018-05-11 A | 2018-05-15 A | JUICE-UVS 0023, JUICE-UVS 9099 | 100% |  |  |  |  |  |  | MF | 01 | 01.05.01 | Travel Phase C | 1 | Project Level Mandated Start Date | Phase C | % C | Matt | DSI | 0-100 | 19190.21.510 | PH CD |  |  |
| JUICE-UVS 593337 |  | CCWG | 5d | 2018-06-18 A | 2018-06-25 A | JUICE-UVS 0023 | 100% | 2018-06-18 | 2018-06-22 |  |  |  |  | MF | 01 | 01.05.01 | Travel Phase C | 1 |  | Phase C | % C | Matt | DSI | 0-100 | 19190.21.510 | PH CD |  |  |
| JUICE-UVS 593328 |  | EMCWG | 5d | 2018-06-19 A | 2018-06-25 A | JUICE-UVS 0023 SS, JUICE-UVS 0023 | 100% |  |  |  |  |  |  | MF | 01 | 01.05.01 | Travel Phase C | 1 |  | Phase C | % C | Matt | DSI | 0-100 | 19190.21.510 | PH CD |  |  |
| JUICE-UVS 592893 |  | PI Day | 5d | 2018-06-25 A | 2018-06-25 A | JUICE-UVS 0023 | 100% | 2018-06-25 | 2018-06-29 |  |  |  |  | MF | 01 | 01.05.01 | Travel Phase C | 1 |  | Phase C | % C | Matt | DSI | 0-100 | 19190.21.510 | PH CD |  |  |
| JUICE-UVS 593358 |  | SWWG | 5d | 2018-06-25 A | 2018-06-29 A | JUICE-UVS 0023 | 100% |  |  |  |  |  |  | MF | 01 | 01.05.01 | Travel Phase C | 1 |  | Phase C | % C | Matt | DSI | 0-100 | 19190.21.510 | PH CD |  |  |
| JUICE-UVS 593346 |  | FM Magnetic Susceptibility Testing | 5d | 2018-08-13 A | 2018-08-17 A | JUICE-UVS 0023 | 100% |  |  |  |  |  |  | MF | 01 | 01.05.01 | Travel Phase C | 1 | Project Level Mandated Start Date | Phase C | % C | Matt | DSI | 0-100 | 19190.21.510 | PH CD |  |  |
| JUICE-UVS 592896 |  | PI Day | 5d | 2018-09-10 A | 2018-09-14 A | JUICE-UVS 0023 | 100% |  |  |  |  |  |  | MF | 01 | 01.05.01 | Travel Phase C | 1 | Project Level Mandated Start Date | Phase C | % C | Matt | DSI | 0-100 | 19190.21.510 | PH CD |  |  |
| JUICE-UVS 8043 |  | EM1 Delivery Travel | 1d | 2018-09-19 A | 2018-09-19 A | JUICE-UVS 0023 | 100% |  |  |  |  |  |  | MF | 01 | 01.05.01 | Travel Phase C | 1 | Project Level Mandated Start Date | Phase C | % C | Matt | DSI | 0-100 | 19190.21.510 | PH CD | 1.5.1 |  |
| JUICE-UVS 592950 |  | Science Team Meeting | 3d | 2018-10-08 A | 2018-10-10 A | JUICE-UVS 0023 | 100% |  |  |  |  |  | CS3 | MF | 01 | 01.05.01 | Travel Phase C | 1 | Project Level Mandated Start Date | Phase C | % C | Matt | DSI | 0-100 | 19190.21.510 | PH CD |  |  |
| JUICE-UVS 593334 |  | EMCWG | 5d | 2018-10-16 A | 2018-10-22 A | JUICE-UVS 0023 | 100% |  |  |  |  |  |  | MF | 01 | 01.05.01 | Travel Phase C | 1 | Project Level Mandated Start Date | Phase C | % C | Matt | DSI | 0-100 | 19190.21.510 | PH CD |  |  |
| JUICE-UVS 592899 |  | PI Day | 5d | 2019-01-07 A | 2019-01-11 A | JUICE-UVS 0023 | 100% |  |  |  |  |  |  | MF | 01 | 01.05.01 | Travel Phase C | 1 | Project Level Mandated Start Date | Phase C | % C | Matt | DSI | 0-100 | 19190.21.510 | PH CD |  |  |
| JUICE-UVS 592983 |  | EMCWG | 5d | 2019-01-14 A | 2019-01-18 A | JUICE-UVS 0023 | 100% |  |  |  |  |  |  | MF | 01 | 01.05.01 | Travel Phase C | 1 | Project Level Mandated Start Date | Phase C | % C | Matt | DSI | 0-100 | 19190.21.510 | PH CD |  |  |
| JUICE-UVS 592986 |  | CCWG | 5d | 2019-01-14 A | 2019-01-18 A | JUICE-UVS 0023 | 100% |  |  |  |  |  |  | MF | 01 | 01.05.01 | Travel Phase C | 1 | Project Level Mandated Start Date | Phase C | % C | Matt | DSI | 0-100 | 19190.21.510 | PH CD |  |  |
| JUICE-UVS 593361 |  | SWWG | 5d | 2019-01-14 A | 2019-01-18 A | JUICE-UVS 0023 | 100% |  |  |  |  |  |  | MF | 01 | 01.05.01 | Travel Phase C | 1 | Project Level Mandated Start Date | Phase C | % C | Matt | DSI | 0-100 | 19190.21.510 | PH CD |  |  |
| JUICE-UVS 592902 |  | PI Day | 5d | 2019-05-13 A | 2019-05-17 A | JUICE-UVS 0023 | 100% |  |  |  |  | start on or after 2019-05-13 |  | MF | 01 | 01.05.01 | Travel Phase C | 1 | Project Level Mandated Start Date | Phase C | % C | Matt | DSI | 0-100 | 19190.21.510 | PH CD |  |  |
| JUICE-UVS 592339 |  | S/C End to End Testing (x2) | 5d | 2019-07-08 A | 2019-07-12 A | JUICE-UVS 0023 | 100% |  |  |  |  | start on or after 2019-06-17 | CS5 | MF | 01 | 01.05.01 | Travel Phase C | 1 | Project Level Mandated Start Date | Phase C | % C | Matt | DSI | 0-100 | 19190.21.510 | PH CD | 1.5.1 |  |
| JUICE-UVS 592905 |  | PI Day | 5d | 2019-09-09 A | 2019-09-13 A | JUICE-UVS 0023 | 100% |  |  |  |  | start on or after 2019-09-09 |  | MF | 01 | 01.05.01 | Travel Phase C | 1 | Project Level Mandated Start Date | Phase C | % C | Matt | DSI | 0-100 | 19190.21.510 | PH CD |  |  |
| JUICE-UVS 592554 |  | Additional FY 21 ESA Travel (AI&T Support, x2 End to End) | 249d | 2019-10-01 A | 2020-09-25 A | JUICE-UVS 0023 | 100% |  |  |  |  | start on or after 2019-10-01 | CS5 | SP | 01 | 01.05.01 | Travel Phase C | 1 | Project Level Mandated Start Date | Phase C | % C | Matt | DSI | % C | 19190.21.510 | PH CD | 1.5.1 |  |
| JUICE-UVS 592953 |  | Science Team Meeting | 3d | 2019-10-07 A | 2019-10-09 A | JUICE-UVS 0023 | 100% |  |  |  |  | start on or after 2019-10-07 | CS3 | MF | 01 | 01.05.01 | Travel Phase C | 1 | Project Level Mandated Start Date | Phase C | % C | Matt | DSI | 0-100 | 19190.21.510 | PH CD |  |  |
| JUICE-UVS 592333 |  | FM Delivery Travel | 1d | 2019-12-17 | 2019-12-17 | JUICE-UVS 0023 |  |  |  | 23d |  | start on or after 2019-12-17 |  | MF | 01 | 01.05.01 | Travel Phase C | 1 | Project Level Mandated Start Date | Phase C | % C | Matt | DSI | 0-100 | 19190.21.510 | PH CD | 1.5.1 |  |
| JUICE-UVS 592908 |  | PI Day | 5d | 2020-01-13 | 2020-01-17 | JUICE-UVS 0023 |  |  |  | 299d | 10d | start on or after 2020-01-13 |  | MF | 01 | 01.05.01 | Travel Phase C | 1 | Project Level Mandated Start Date | Phase C | % C | Matt | DSI | 0-100 | 19190.21.510 | PH CD |  |  |
| JUICE-UVS 592328 |  | STM Delivery Travel | 3d | 2020-01-20 | 2020-01-22 | JUICE-UVS 0023 |  |  |  | 416d | 0d | start on or after 2020-01-20 |  | MF | 01 | 01.05.01 | Travel Phase C | 1 | Project Level Mandated Start Date | Phase C | % C | Matt | DSI | 0-100 | 19190.21.510 | PH CD | 1.5.1 |  |
| JUICE-UVS 592336 |  | S/C End to End Testing (x2) | 252d | 2020-01-23 | 2021-01-22 | JUICE-UVS 0023, JUICE-UVS 592328 |  |  |  | 416d |  | start on or after 2019-10-01 | CS5 | SP | 01 | 01.05.01 | Travel Phase C | 1 | Project Level Mandated Start Date | Phase C | % C | Matt | DSI | % C | 19190.21.510 | PH CD | 1.5.1 |  |
| JUICE-UVS 592911 |  | PI Day | 5d | 2020-05-11 | 2020-05-15 | JUICE-UVS 0023 |  |  |  | 586d |  | start on or after 2020-05-11 |  | MF | 01 | 01.05.01 | Travel Phase C | 1 | Project Level Mandated Start Date | Phase C | % C | Matt | DSI | 0-100 | 19190.21.510 | PH CD |  |  |
| JUICE-UVS 592914 |  | PI Day | 5d | 2020-09-14 | 2020-09-18 | JUICE-UVS 0023 |  |  |  | 501d |  | start on or after 2020-09-14 |  | MF | 01 | 01.05.01 | Travel Phase C | 1 | Project Level Mandated Start Date | Phase C | % C | Matt | DSI | 0-100 | 19190.21.510 | PH CD |  |  |
| JUICE-UVS 8095 |  | Travel FY 21 End of Phase C | 32d | 2020-10-01 | 2020-11-13 | JUICE-UVS 0023 |  |  |  | 0d |  | start on or after 2020-10-01 |  | SP | 01 | 01.05.01 | Travel Phase C | 1 | Project Level Mandated Start Date | Phase C | % C | Matt | DSI | 50-50 | 19190.21.510 | PH CD | 1.5.1 | C |
| JUICE-UVS 592956 |  | Science Team Meeting | 3d | 2020-10-05 | 2020-10-07 | JUICE-UVS 0023 |  |  |  | 488d |  | start on or after 2020-10-05 | CS3 | MF | 01 | 01.05.01 | Travel Phase C | 1 | Project Level Mandated Start Date | Phase C | % C | Matt | DSI | 0-100 | 19190.21.510 | PH CD |  |  |

Notes:
- JUICE-UVS 592554: Steps: ESA AI&T Supt Travel trip 1 FY21 (done); ESA AI&T Supt Travel trip 2 FY21 (done); ESA AI&T Supt Travel trip 3 FY21 (done); ESA AI&T Supt Travel trip 4 FY21 (done)
- JUICE-UVS 592336: Steps: S/C E2E Testing trip 1; S/C E2E Testing trip 2

| ID | WBS | Activity | Type | Duration | Start | Finish | Predecessors | Complete | Remaining | Planned start | Planned finish | Total float | Free float | Constraint | Expected finish | user_text8 | Work Package | CA | WP/PP | Work Package Name | Control Account | JUICE UVS Phases | EVT | JUICE-UVS CAMs | OBS | P6 EVT | JUICE-UVS Charge #s | JUICE-UVS Phase CD | NASA Phase | Justify | user_text2 | JUICE UVS Phase CD | LOE | BCR # | M/S | JUICE-UVS Summary Milestones |
| --- | --- | --- | --- | --- | --- | --- | --- | --- | --- | --- | --- | --- | --- | --- | --- | --- | --- | --- | --- | --- | --- | --- | --- | --- | --- | --- | --- | --- | --- | --- | --- | --- | --- | --- | --- | --- |
|  | 02 | **Travel Phase D** |  |  | 2020-11-16 | 2022-09-21 |  |  |  |  |  |  |  |  |  |  |  |  |  |  |  |  |  |  |  |  |  |  |  |  |  |  |  |  |  |  |
| JUICE-UVS 592560 |  | Additional FY 22 ESA Travel (AI&T Support, 2x End to End) |  | 218d | 2020-11-16 | 2021-09-30 | JUICE-UVS 592554, JUICE-UVS 0014 |  |  |  |  | 243d |  |  |  | SP | 1.5.1 | 01 | 01.05.02 | Travel Phase D | 1 | Phase D | % C | Matt | DSI | % C | 19190.31.510 | PH CD |  |  |  |  |  |  |  |  |
| JUICE-UVS 8104 |  | Travel FY 22 Start of Phase D |  | 218d | 2020-11-16 | 2021-09-30 | JUICE-UVS 8095, JUICE-UVS 0014 |  |  |  |  | 0d |  |  |  | SP | 1.1.5 | 01 | 01.05.02 | Travel Phase D | 1 | Phase D | % C | Matt | DSI | % C | 19190.31.510 | PH CD | E |  |  |  |  |  |  |  |
| JUICE-UVS 592917 |  | PI Day |  | 5d | 2021-01-11 | 2021-01-15 | JUICE-UVS 0014 |  |  |  |  | 178d |  | start on or after 2021-01-11 |  | MF |  | 01 | 01.05.02 | Travel Phase D | 1 | Phase D | % C | Matt | DSI | 0-100 | 19190.31.510 | PH CD |  | Project Level Mandated Start Date |  |  |  |  |  |  |
| JUICE-UVS 592920 |  | PI Day |  | 5d | 2021-05-10 | 2021-05-14 | JUICE-UVS 0014 |  |  |  |  | 93d |  | start on or after 2021-05-10 |  | MF |  | 01 | 01.05.02 | Travel Phase D | 1 | Phase D | % C | Matt | DSI | 0-100 | 19190.31.510 | PH CD |  | Project Level Mandated Start Date |  |  |  |  |  |  |
| JUICE-UVS 592923 |  | PI Day |  | 5d | 2021-09-13 | 2021-09-17 | JUICE-UVS 0014 |  |  |  |  | 9d |  | start on or after 2021-09-13 |  | MF |  | 01 | 01.05.02 | Travel Phase D | 1 | Phase D | % C | Matt | DSI | 0-100 | 19190.31.510 | PH CD |  | Project Level Mandated Start Date |  |  |  |  |  |  |
| JUICE-UVS 8056 |  | Travel FY 22 |  | 243d | 2021-10-01 | 2022-09-21 | JUICE-UVS 592923, JUICE-UVS 592920, JUICE-UVS 592917, JUICE-UVS 8104 |  |  |  |  | 0d |  |  |  | SP | 1.1.5 | 01 | 01.05.02 | Travel Phase D | 1 | Phase D | % C | Matt | DSI | % C | 19190.31.510 | PH CD | E |  |  |  |  |  |  |  |
| JUICE-UVS 592959 |  | Science Team Meeting |  | 3d | 2021-10-11 | 2021-10-13 | JUICE-UVS 0014 |  |  |  |  | 234d |  | start on or after 2021-10-11 |  | MF |  | 01 | 01.05.02 | Travel Phase D | 1 | Phase D | % C | Matt | DSI | 0-100 | 19190.31.510 | PH CD |  | Project Level Mandated Start Date | CS3 |  |  |  |  |  |
| JUICE-UVS 592926 |  | PI Day |  | 5d | 2022-01-10 | 2022-01-14 | JUICE-UVS 0014 |  |  |  |  | 172d |  | start on or after 2022-01-10 |  | MF |  | 01 | 01.05.02 | Travel Phase D | 1 | Phase D | % C | Matt | DSI | 0-100 | 19190.31.510 | PH CD |  | Project Level Mandated Start Date |  |  |  |  |  |  |
| JUICE-UVS 592929 |  | PI Day |  | 5d | 2022-05-09 | 2022-05-13 | JUICE-UVS 0014 |  |  |  |  | 87d |  | start on or after 2022-05-09 |  | MF |  | 01 | 01.05.02 | Travel Phase D | 1 | Phase D | % C | Matt | DSI | 0-100 | 19190.31.510 | PH CD |  | Project Level Mandated Start Date |  |  |  |  |  |  |
| JUICE-UVS 592938 |  | Science Team Launch |  | 5d | 2022-06-20 | 2022-06-24 | JUICE-UVS 0014 |  |  |  |  | 59d |  | start on or after 2022-06-20 |  | MF |  | 01 | 01.05.02 | Travel Phase D | 1 | Phase D | % C | Matt | DSI | 0-100 | 19190.31.510 | PH CD |  | Project Level Mandated Start Date |  |  |  |  |  |  |
| JUICE-UVS 592932 |  | PI Day |  | 5d | 2022-09-12 | 2022-09-16 | JUICE-UVS 0014 |  |  |  |  | 3d |  | start on or after 2022-09-12 |  | MF |  | 01 | 01.05.02 | Travel Phase D | 1 | Phase D | % C | Matt | DSI | 0-100 | 19190.31.510 | PH CD |  | Project Level Mandated Start Date |  |  |  |  |  |  |
|  | 06 | **Project Support** |  |  | 2016-10-03 | 2022-09-21 |  |  |  |  |  |  |  |  |  |  |  |  |  |  |  |  |  |  |  |  |  |  |  |  |  |  |  |  |  |  |
| JUICE-UVS 592215 |  | Project Support FY 17 Start of Phase C |  | 250d | 2016-10-03 A | 2017-09-29 A | JUICE-UVS 0011 | 100% |  |  |  |  |  |  |  |  | 1.6.1 | 01 | 01.06 | Project Support | 1 | Phase C | LOE | Matt | DSI | LOE | 19190.21.610 | PH CD | C |  |  | PH CD | LOE |  |  |  |
| JUICE-UVS 592221 |  | Project Support FY 18 |  | 250d | 2017-10-02 A | 2018-09-28 A | JUICE-UVS 592215 | 100% |  |  |  |  |  |  |  |  | 1.6.1 | 01 | 01.06 | Project Support | 1 | Phase C | LOE | Matt | DSI | LOE | 19190.21.610 | PH CD | C |  |  |  | LOE |  |  |  |
| JUICE-UVS 592224 |  | Project Support FY 19 |  | 251d | 2018-10-01 A | 2019-09-27 A | JUICE-UVS 592221 | 100% |  |  |  |  |  |  |  |  | 1.6.1 | 01 | 01.06 | Project Support | 1 | Phase C | LOE | Matt | DSI | LOE | 19190.21.610 | PH CD | C |  |  |  | LOE |  |  |  |
| JUICE-UVS 592227 |  | Project Support FY 20 |  | 253d | 2019-09-30 A | 2020-09-30 | JUICE-UVS 592224 | 15% | 214d | 2019-10-01 | 2020-10-01 | 0d |  |  | 2020-09-30 |  | 1.6.1 | 01 | 01.06 | Project Support | 1 | Phase C | LOE | Matt | DSI | LOE | 19190.21.610 | PH CD | C |  |  |  | LOE |  |  |  |
| JUICE-UVS 592230 |  | Project Support FY 21 End of Phase C |  | 32d | 2020-10-01 | 2020-11-13 | JUICE-UVS 592227 |  |  |  |  | 0d |  |  |  |  | 1.6.1 | 01 | 01.06 | Project Support | 1 | Phase C | LOE | Matt | DSI | LOE | 19190.21.610 | PH CD | C |  |  |  | LOE |  |  |  |
| JUICE-UVS 592233 |  | Project Support FY 21 Start of Phase D |  | 218d | 2020-11-16 | 2021-09-30 | JUICE-UVS 592230 |  |  |  |  | 0d |  |  |  |  | 1.6.1 | 01 | 01.06 | Project Support | 1 | Phase D | LOE | Matt | DSI | LOE | 19190.21.610 | PH CD | D |  |  |  | LOE |  |  |  |
| JUICE-UVS 592236 |  | Project Support FY 22 End of Phase D |  | 243d | 2021-10-01 | 2022-09-21 | JUICE-UVS 592233 |  |  |  |  | 0d |  |  |  |  | 1.6.1 | 01 | 01.06 | Project Support | 1 | Phase D | LOE | Matt | DSI | LOE | 19190.21.610 | PH CD | D |  |  |  | LOE |  |  |  |
|  | 07 | **Review Support** |  |  | 2017-04-14 | 2019-12-13 |  |  |  |  |  |  |  |  |  |  |  |  |  |  |  |  |  |  |  |  |  |  |  |  |  |  |  |  |  |  |
|  | 01 | **ESA QR** |  |  | 2017-04-14 | 2019-12-13 |  |  |  |  |  |  |  |  |  |  |  |  |  |  |  |  |  |  |  |  |  |  |  |  |  |  |  |  |  |  |
| JUICE-UVS 593313 |  | ESA QR Preparation |  | 10d | 2017-04-14 A | 2017-04-27 A |  | 100% |  |  |  |  |  |  |  |  |  | 01 | 01.07.01 | ESA QR Support | 1 | Phase C | % C | Matt | DSI | 50-50 | 19190.21.710 | PH CD |  |  |  |  |  |  |  |  |
| JUICE-UVS594174 |  | ESA QR Preparation Part 2 |  | 10d | 2019-09-12 A | 2019-09-27 A | JUICE-UVS 593307 | 100% |  | 2019-09-12 | 2019-09-25 |  |  |  |  |  |  | 01 | 01.07.01 | ESA QR Support |  |  | % C | Matt | DSI | 0-100 | 19190.21.710 |  |  |  |  |  |  | BCR 33 |  |  |
| JUICE-UVS 593316 |  | ESA QR Submit | milestone | 0d | 2019-10-15 A | 2019-10-15 A | JUICE-UVS594174 | 100% |  |  |  |  |  |  |  |  |  | 01 | 01.07.01 | ESA QR Support | 1 | Phase C | % C | Matt | DSI | 0-100 | 19190.21.710 | PH CD |  |  |  |  |  | BCR 33 | D |  |
| JUICE-UVS 593319 |  | ESA QR Conduct |  | 1d | 2019-10-16 A | 2019-10-16 A | JUICE-UVS 593316 FF | 100% |  |  |  |  |  | start on or after 2019-10-16 |  |  |  | 01 | 01.07.01 | ESA QR Support | 1 | Phase C | % C | Matt | DSI | 0-100 | 19190.21.710 | PH CD |  |  |  |  |  | BCR 33 |  | Summary |
| JUICE-UVS 593322 |  | ESA QR RFA Closeout |  | 8d | 2019-10-17 A | 2019-12-13 | JUICE-UVS 593319 |  | 14d | 2019-10-17 | 2019-10-28 | 24d | 0d |  | 2019-12-13 |  |  | 01 | 01.07.01 | ESA QR Support | 1 | Phase C | % C | Matt | DSI | 0-100 | 19190.21.710 | PH CD |  |  |  |  |  | BCR 33 |  |  |

Notes:
- JUICE-UVS 592560: Steps: ESA AI&T Supt Travel trip 1 FY22; ESA AI&T Supt Travel trip 2 FY22; ESA AI&T Supt Travel trip 3 FY22; ESA AI&T Supt Travel trip 4 FY22
- JUICE-UVS 8104: Steps: Travel trip 1 FY22 Phase D (CONUS); Travel trip 2 FY22 Phase D (CONUS)
- JUICE-UVS 8056: Steps: Travel trip 1 FY22 Phase D; Travel trip 2 FY22 Phase D; Travel trip 3 FY22 Phase D; Travel trip 4 FY22 Phase D; Travel trip 5 FY22 Phase D; Travel trip 6 FY22 Phase D; Travel trip 7 FY22 Phase D; Travel trip 8 FY22 Phase D; Travel trip 9 FY22 Phase D; Travel trip 10 FY22 Phase D

| ID | WBS | Activity | Type | Duration | Start | Finish | Predecessors | Complete | Remaining | Planned start | Planned finish | Total float | Free float | Constraint | Expected finish | Work Package | CA | WP/PP | Work Package Name | Control Account | JUICE UVS Phases | EVT | NASA Phase | JUICE-UVS CAMs | OBS | P6 EVT | JUICE-UVS Charge #s | JUICE-UVS Phase CD | M/S | user_text8 | Forecast Chg | LOE |
| --- | --- | --- | --- | --- | --- | --- | --- | --- | --- | --- | --- | --- | --- | --- | --- | --- | --- | --- | --- | --- | --- | --- | --- | --- | --- | --- | --- | --- | --- | --- | --- | --- |
|  | 02 | **NASA Critical Design Review (CDR)** |  |  | 2017-08-18 | 2018-02-01 |  |  |  |  |  |  |  |  |  |  |  |  |  |  |  |  |  |  |  |  |  |  |  |  |  |  |
| JUICE-UVS 592474 |  | NASA CDR Preparation |  | 9d | 2017-08-18 A | 2017-08-30 A | JUICE-UVS 593451, JUICE-UVS 593397, JUICE-UVS 593964, JUICE-UVS 593571 FF, JUICE-UVS 593568 FF, JUICE-UVS 593559, JUICE-UVS 593556, JUICE-UVS 593982 FF, JUICE-UVS 593979 FF, JUICE-UVS 593976 FF, JUICE-UVS 593541 FF, JUICE-UVS 593508 FF, JUICE-UVS 593505 FF, JUICE-UVS 593502 FF, JUICE-UVS 593496 FF, JUICE-UVS 593424, JUICE-UVS 593574, JUICE-UVS 593580, JUICE-UVS 593583, JUICE-UVS 593589, JUICE-UVS 593565 FF, JUICE-UVS 593562, JUICE-UVS 593538, JUICE-UVS 593532 FF, JUICE-UVS 593526, JUICE-UVS 593523 FF, JUICE-UVS 593493, JUICE-UVS 593490, JUICE-UVS 593484, JUICE-UVS 593481, JUICE-UVS 593478, JUICE-UVS 593475 FF, JUICE-UVS 593469 FF, JUICE-UVS 593463, JUICE-UVS 593460, JUICE-UVS 593457, JUICE-UVS 593454 FF, JUICE-UVS 593445, JUICE-UVS 593442 FF, JUICE-UVS 593439 FF, JUICE-UVS 593436 FF, JUICE-UVS 593433, JUICE-UVS 593430, JUICE-UVS 593427, JUICE-UVS 593421, JUICE-UVS 593418, JUICE-UVS 593415, JUICE-UVS 593412, JUICE-UVS 593409, JUICE-UVS 593406, JUICE-UVS 593400, JUICE-UVS 593394, JUICE-UVS 3272, JUICE-UVS 592353 FF, JUICE-UVS 592366, JUICE-UVS 592362, JUICE-UVS 592356, JUICE-UVS 592354, JUICE-UVS 592351, JUICE-UVS 592347 FF, JUICE-UVS 2079 FF, JUICE-UVS 2100, JUICE-UVS 2096, JUICE-UVS 2103, JUICE-UVS 2160 FF, JUICE-UVS 2138, JUICE-UVS 2136, JUICE-UVS 2054, JUICE-UVS 2028, JUICE-UVS 3212 FF, JUICE-UVS 2020, JUICE-UVS 593265, JUICE-UVS 2021, JUICE-UVS 2027, JUICE-UVS 2033, JUICE-UVS 592458, JUICE-UVS 593370, JUICE-UVS 592461, JUICE-UVS 592482, JUICE-UVS 592488, JUICE-UVS 592452 | 100% |  |  |  |  |  |  |  | 1.1.7 | 01 | 01.07.02 | NASA CDR Support | 1 | Phase C | % C | C | Matt | DSI | 0-100 | 19190.21.720 | PH CD |  |  |  |  |
| JUICE-UVS 592478 |  | Submit NASA CDR Package | milestone | 0d | 2017-08-31 A | 2017-08-31 A | JUICE-UVS 592474 | 100% |  |  |  |  |  |  |  | 1.1.7 | 01 | 01.07.02 | NASA CDR Support | 1 | Phase C | % C | C | Matt | DSI | 0-100 | 19190.21.720 | PH CD | D |  |  |  |
| JUICE-UVS 592477 |  | NASA CDR RFA Closeout |  | 86d | 2017-09-08 A | 2018-02-01 A | JUICE-UVS 592479, JUICE-UVS 593262, JUICE-UVS 592475 | 100% |  | 2017-09-28 | 2018-02-01 |  |  |  |  | 1.7.1 | 01 | 01.07.02 | NASA CDR Support | 1 | Phase C | % C | C | Matt | DSI | 0-100 | 19190.21.720 | PH CD |  |  |  |  |
| JUICE-UVS 592475 |  | Conduct NASA CDR |  | 2d | 2017-09-13 A | 2017-09-14 A | JUICE-UVS 592478 | 100% |  |  |  |  |  |  |  | 1.7.1 | 01 | 01.07.02 | NASA CDR Support | 1 | Phase C | % C | C | Matt | DSI | 0-100 | 19190.21.720 | PH CD |  |  |  |  |
|  | 03 | **ESA (I-CDR)** |  |  | 2017-08-18 | 2018-04-03 |  |  |  |  |  |  |  |  |  |  |  |  |  |  |  |  |  |  |  |  |  |  |  |  |  |  |
| JUICE-UVS 2340 |  | I-CDR Preparation |  | 10d | 2017-08-18 A | 2017-08-31 A | JUICE-UVS 0023, JUICE-UVS 2030 | 100% |  |  |  |  |  |  |  | 1.7.1 | 01 | 01.07.03 | ESA CDR Support | 1 | Phase C | % C | C | Matt | DSI | 0-100 | 19190.21.730 | PH CD |  | SP |  |  |
| JUICE-UVS 2570 |  | Submit I-CDR Package | milestone | 0d | 2017-08-31 A | 2017-08-31 A | JUICE-UVS 2340 | 100% |  |  |  |  |  |  |  | 1.7.1 | 01 | 01.07.03 | ESA CDR Support | 1 | Phase C | % C | C | Matt | DSI | 0-100 | 19190.21.730 | PH CD | D |  |  |  |
| JUICE-UVS 2350 |  | Conduct I-CDR |  | 22d | 2017-09-29 A | 2017-10-13 A | JUICE-UVS594003, JUICE-UVS 2570 | 100% |  | 2017-09-29 | 2017-10-30 |  |  |  |  | 1.7.1 | 01 | 01.07.03 | ESA CDR Support | 1 | Phase C | % C | C | Matt | DSI | 0-100 | 19190.21.730 | PH CD |  |  |  |  |
| JUICE-UVS 2360 |  | I-CDR RFA Closeout |  | 125d | 2017-10-04 A | 2018-04-03 A | JUICE-UVS 2350, JUICE-UVS 592519 | 100% |  |  |  |  |  |  |  | 1.7.1 | 01 | 01.07.03 | ESA CDR Support | 1 | Phase C | % C | C | Matt | DSI | 0-100 | 19190.21.730 | PH CD |  | MF |  |  |
|  | 04 | **NASA Pre-Environmental Review (I-PER)** |  |  | 2018-11-26 | 2019-08-05 |  |  |  |  |  |  |  |  |  |  |  |  |  |  |  |  |  |  |  |  |  |  |  |  |  |  |
| JUICE-UVS 593301 |  | NASA PER Preparation |  | 17d | 2018-11-26 A | 2019-03-06 A | JUICE-UVS 592475 | 100% |  | 2018-11-26 | 2018-12-18 |  |  |  |  |  | 01 | 01.07.04 | NASA PER Support | 1 | Phase C | % C |  | Matt | DSI | 50-50 | 19190.21.740 | PH CD |  |  |  |  |
| JUICE-UVS 593304 |  | Submit NASA PER Package | milestone | 0d | 2019-03-06 A | 2019-03-06 A | JUICE-UVS 593301 | 100% |  |  |  |  |  | mandatory finish 2019-03-06 |  |  | 01 | 01.07.04 | NASA PER Support | 1 | Phase C | % C |  | Matt | DSI | 0-100 | 19190.21.740 | PH CD | D |  |  |  |
| JUICE-UVS 593307 |  | Conduct NASA PER |  | 1d | 2019-03-20 A | 2019-03-20 A | JUICE-UVS 4352, JUICE-UVS 4332, JUICE-UVS 4304, JUICE-UVS 2360, JUICE-UVS 2177, JUICE-UVS 593304 FS+10d | 100% |  |  |  |  |  | mandatory start 2019-03-20 |  |  | 01 | 01.07.04 | NASA PER Support | 1 | Phase C | % C |  | Matt | DSI | 0-100 | 19190.21.740 | PH CD |  |  |  |  |
| JUICE-UVS 593310 |  | NASA PER RFA Closeout |  | 10d | 2019-03-21 A | 2019-08-05 A | JUICE-UVS 593307 | 100% |  | 2019-03-21 | 2019-04-03 |  |  |  |  |  | 01 | 01.07.04 | NASA PER Support | 1 | Phase C | % C |  | Matt | DSI | 0-100 | 19190.21.740 | PH CD |  | MF | Y |  |
|  | 05 | **NASA Pre-Ship Review (I-PSR)** |  |  | 2019-09-03 | 2019-12-13 |  |  |  |  |  |  |  |  |  |  |  |  |  |  |  |  |  |  |  |  |  |  |  |  |  |  |
| JUICE-UVS 2370 |  | NASA I-PSR Preparation |  | 15d | 2019-09-03 A | 2019-10-15 A | JUICE-UVS 3493 FF, JUICE-UVS 592503 FF, JUICE-UVS11520 FF, JUICE-UVS 593307 | 100% |  | 2019-09-03 | 2019-09-23 |  |  |  |  | 1.7.1 | 01 | 01.07.05 | NASA PSR Support | 1 | Phase C | % C | C | Matt | DSI | 0-100 | 19190.21.750 | PH CD |  |  |  |  |
| JUICE-UVS 2590 |  | Submit NASA I-PSR Package | milestone | 0d | 2019-10-15 A | 2019-10-15 A | JUICE-UVS 2370 | 100% |  |  |  |  |  |  |  | 1.7.1 | 01 | 01.07.05 | NASA PSR Support | 1 | Phase C | % C | C | Matt | DSI | 0-100 | 19190.21.750 | PH CD | D |  |  |  |
| JUICE-UVS 2380 |  | Conduct NASA I-PSR |  | 1d | 2019-10-16 A | 2019-10-16 A | JUICE-UVS 593310, JUICE-UVS 2590 FF, JUICE-UVS594141 | 100% |  |  |  |  |  | start on or after 2019-10-16 |  | 1.7.1 | 01 | 01.07.05 | NASA PSR Support | 1 | Phase C | % C | C | Matt | DSI | 0-100 | 19190.21.750 | PH CD |  |  |  |  |
| JUICE-UVS 2390 |  | NASA I-PSR RFA Closeout |  | 8d | 2019-10-17 A | 2019-12-13 | JUICE-UVS 2380 |  | 14d | 2019-10-17 | 2019-10-28 | 24d | 0d |  | 2019-12-13 | 1.7.1 | 01 | 01.07.05 | NASA PSR Support | 1 | Phase C | % C | C | Matt | DSI | 0-100 | 19190.21.750 | PH CD |  |  | Y |  |
|  | 08 | **Configuration Management/Document Control** |  |  | 2016-10-03 | 2019-12-17 |  |  |  |  |  |  |  |  |  |  |  |  |  |  |  |  |  |  |  |  |  |  |  |  |  |  |
|  | 01 | **Configuration Management** |  |  | 2016-10-03 | 2019-12-17 |  |  |  |  |  |  |  |  |  |  |  |  |  |  |  |  |  |  |  |  |  |  |  |  |  |  |
| JUICE-UVS 591480 |  | CM FY 17 Start of Phase C |  | 250d | 2016-10-03 A | 2017-09-29 A | JUICE-UVS 0011 | 100% |  |  |  |  |  |  |  | 1.8.1 | 01 | 01.08.01 | Configuration Management | 1 | Phase C | LOE | C | Matt | DSI | LOE | 19190.21.810 | PH CD |  |  |  | LOE |
| JUICE-UVS 593598 |  | Configuration Control & Document Management Plan PM - 05 |  | 10d | 2017-07-31 A | 2017-08-11 A | JUICE-UVS 0011 | 100% |  |  |  |  |  |  |  |  | 01 | 01.08.01 | Configuration Management | 1 | Phase C | LOE |  | Matt | DSI | LOE | 19190.21.810 | PH CD |  |  |  | LOE |
| JUICE-UVS 591483 |  | CM FY 18 |  | 250d | 2017-10-02 A | 2018-09-28 A | JUICE-UVS 591480 | 100% |  |  |  |  |  |  |  | 1.8.1 | 01 | 01.08.01 | Configuration Management | 1 | Phase C | LOE | C | Matt | DSI | LOE | 19190.21.810 | PH CD |  |  |  | LOE |
| JUICE-UVS 591486 |  | CM FY 19 |  | 105d | 2018-10-01 A | 2019-12-17 | JUICE-UVS 591483 | 85% | 16d | 2018-10-01 | 2019-03-01 | 22d | 0d |  | 2019-12-17 | 1.8.1 | 01 | 01.08.01 | Configuration Management | 1 | Phase C | LOE | C | Matt | DSI | LOE | 19190.21.810 | PH CD |  |  |  | LOE |

Notes:
- JUICE-UVS 592474: Justify: Project level Mandatory Finish Date
- JUICE-UVS 592478: Justify: Project level Mandatory Finish Date
- JUICE-UVS 592475: Justify: Project level Mandatory Start Date Not on CP, CP is tied only to Delivery
- JUICE-UVS 2340: Justify: Project level Mandatory Start Date
- JUICE-UVS 2570: Justify: Project level Mandatory Finish Date
- JUICE-UVS 2350: Justify: Project level Mandatory Stsrt Date Not on CP, CP is tied only to Delivery
- JUICE-UVS 593301: Justify: Project level Mandatory Finish Date
- JUICE-UVS 593304: Justify: Project level Mandatory Finish Date
- JUICE-UVS 593307: Justify: Project level Mandatory Finish Date Not on CP, CP is tied only to Delivery
- JUICE-UVS 2590: Justify: Project level Mandatory Finish Date
- JUICE-UVS 2380: Justify: Project level Mandatory Finish Date Not on CP, CP is tied only to Delivery

| ID | WBS | Activity | Type | Duration | Start | Finish | Predecessors | Complete | Remaining | Planned start | Planned finish | Total float | Free float | Constraint | Expected finish | Work Package | CA | WP/PP | Work Package Name | Control Account | JUICE UVS Phases | EVT | NASA Phase | JUICE-UVS CAMs | OBS | P6 EVT | JUICE-UVS Charge #s | LOE | JUICE-UVS Phase CD | user_text8 | Forecast Chg | JUICE UVS Phase CD | JUICE-UVS Resources | M/S |
| --- | --- | --- | --- | --- | --- | --- | --- | --- | --- | --- | --- | --- | --- | --- | --- | --- | --- | --- | --- | --- | --- | --- | --- | --- | --- | --- | --- | --- | --- | --- | --- | --- | --- | --- |
|  | 02 | **Document Control** |  |  | 2016-10-03 | 2019-10-01 |  |  |  |  |  |  |  |  |  |  |  |  |  |  |  |  |  |  |  |  |  |  |  |  |  |  |  |  |
| JUICE-UVS 591510 |  | Document Control FY 17 Start of Phase C |  | 250d | 2016-10-03 A | 2017-09-29 A | JUICE-UVS 0011 | 100% |  |  |  |  |  |  |  | 1.8.1 | 01 | 01.08.02 | Document Control | 1 | Phase C | LOE | C | Matt | DSI | LOE | 19190.21.820 | LOE | PH CD |  |  |  |  |  |
| JUICE-UVS593595 |  | Product Document Tree PM - 03 |  | 10d | 2017-07-31 A | 2017-08-11 A | JUICE-UVS 0011 | 100% |  |  |  |  |  |  |  |  | 01 | 01.08.02 | Document Control | 1 | Phase C | LOE |  | Matt | DSI | LOE | 19190.21.820 | LOE | PH CD |  |  |  |  |  |
| JUICE-UVS 591513 |  | Document Control FY 18 |  | 250d | 2017-10-02 A | 2018-09-28 A | JUICE-UVS 591510 | 100% |  |  |  |  |  |  |  | 1.8.1 | 01 | 01.08.02 | Document Control | 1 | Phase C | LOE | C | Matt | DSI | LOE | 19190.21.820 | LOE | PH CD |  |  |  |  |  |
| JUICE-UVS 591516 |  | Document Control FY 19 |  | 105d | 2018-10-01 A | 2019-10-01 A | JUICE-UVS 591513 | 100% |  | 2018-10-01 | 2019-03-01 |  |  |  |  | 1.8.1 | 01 | 01.08.02 | Document Control | 1 | Phase C | LOE | C | Matt | DSI | LOE | 19190.21.820 | LOE | PH CD |  |  |  |  |  |
|  | 09 | **Control Stores** |  |  | 2016-10-03 | 2019-12-17 |  |  |  |  |  |  |  |  |  |  |  |  |  |  |  |  |  |  |  |  |  |  |  |  |  |  |  |  |
| JUICE-UVS 591540 |  | Controlled Stores FY 17 Start of Phase C |  | 250d | 2016-10-03 A | 2017-09-29 A | JUICE-UVS 0011 | 100% |  |  |  |  |  |  |  | 1.9.1 | 01 | 01.09 | Control Stores | 1 | Phase C | LOE | C | Matt | DSI | LOE | 19190.21.910 | LOE | PH CD | TH |  |  |  |  |
| JUICE-UVS 591543 |  | Controlled Stores FY 18 |  | 250d | 2017-10-02 A | 2018-09-28 A | JUICE-UVS 591540 | 100% |  |  |  |  |  |  |  | 1.9.1 | 01 | 01.09 | Control Stores | 1 | Phase C | LOE | C | Matt | DSI | LOE | 19190.21.910 | LOE | PH CD | TH |  |  |  |  |
| JUICE-UVS 591546 |  | Controlled Stores FY 19 |  | 105d | 2018-10-01 A | 2019-12-17 | JUICE-UVS 591543 | 85% | 16d | 2018-10-01 | 2019-03-01 | 22d | 0d |  | 2019-12-17 | 1.9.1 | 01 | 01.09 | Control Stores | 1 | Phase C | LOE | C | Matt | DSI | LOE | 19190.21.910 | LOE | PH CD | TH | Y |  |  |  |
|  | 10 | **Customs Broker Support** |  |  | 2016-10-03 | 2022-09-21 |  |  |  |  |  |  |  |  |  |  |  |  |  |  |  |  |  |  |  |  |  |  |  |  |  |  |  |  |
| JUICE-UVS 592263 |  | Customs Broker FY 17 Start of Phase C |  | 250d | 2016-10-03 A | 2017-09-29 A | JUICE-UVS 0011 | 100% |  |  |  |  |  |  |  | 1.10.1 | 01 | 01.10 | Custom Broker Support | 1 | Phase C | LOE | C | Matt | DSI | LOE | 19190.21.180 | LOE | PH CD | SP |  | PH CD | 0Budget |  |
| JUICE-UVS 592266 |  | Customs Broker FY 18 |  | 250d | 2017-10-02 A | 2018-09-28 A | JUICE-UVS 592263 | 100% |  |  |  |  |  |  |  | 1.10.1 | 01 | 01.10 | Custom Broker Support | 1 | Phase C | LOE | C | Matt | DSI | LOE | 19190.21.180 | LOE | PH CD | SP |  |  |  |  |
| JUICE-UVS 592269 |  | Customs Broker FY 19 |  | 251d | 2018-10-01 A | 2019-09-30 A | JUICE-UVS 592266 | 100% |  | 2018-10-01 | 2019-09-27 |  |  |  |  | 1.10.1 | 01 | 01.10 | Custom Broker Support | 1 | Phase C | LOE | C | Matt | DSI | LOE | 19190.21.180 | LOE | PH CD | SP |  |  | 0Budget |  |
| JUICE-UVS 592275 |  | Customs Broker FY 20 |  | 252d | 2019-10-01 A | 2020-09-30 | JUICE-UVS 592269 | 15% | 214d |  |  | 0d |  | start on or after 2019-10-01 | 2020-09-30 | 1.10.1 | 01 | 01.10 | Custom Broker Support | 1 | Phase C | LOE | C | Matt | DSI | LOE | 19190.21.180 | LOE | PH CD | SP |  |  |  |  |
| JUICE-UVS 592278 |  | Customs Broker FY 21 End of Phase C |  | 32d | 2020-10-01 | 2020-11-13 | JUICE-UVS 592275 |  |  |  |  | 0d |  |  | 2020-11-13 | 1.10.1 | 01 | 01.10 | Custom Broker Support | 1 | Phase C | LOE | C | Matt | DSI | LOE | 19190.21.180 | LOE | PH CD |  |  |  | 0Budget |  |
| JUICE-UVS 592281 |  | Customs Broker FY 21 Start of Phase D |  | 218d | 2020-11-16 | 2021-09-30 | JUICE-UVS 592278 |  |  |  |  | 0d |  |  |  | 1.10.1 | 01 | 01.10 | Custom Broker Support | 1 | Phase D | LOE | D | Matt | DSI | LOE | 19190.21.180 | LOE | PH CD |  |  |  | 0Budget |  |
| JUICE-UVS 592284 |  | Customs Broker FY 22 End of Phase D |  | 243d | 2021-10-01 | 2022-09-21 | JUICE-UVS 592281 |  |  |  |  | 0d |  |  |  | 1.10.1 | 01 | 01.10 | Custom Broker Support | 1 | Phase D | LOE | D | Matt | DSI | LOE | 19190.21.180 | LOE | PH CD |  |  |  | 0Budget |  |
|  | 12 | **Management SDRLs** |  |  | 2017-07-10 | 2017-08-11 |  |  |  |  |  |  |  |  |  |  |  |  |  |  |  |  |  |  |  |  |  |  |  |  |  |  |  |  |
| JUICE-UVS 593394 |  | Project Management Plan PMP - 001 | milestone | 0d | 2017-07-10 A | 2017-07-10 A | JUICE-UVS 593592 | 100% |  |  |  |  |  |  |  |  | 01 | 01.12 | Management SDRLs | 1 | Phase C | % C |  | Matt | DSI | 0-100 | 19190.21.190 |  | PH CD |  |  |  |  | D |
| JUICE-UVS 593400 |  | Product Document Tree PM - 03 | milestone | 0d | 2017-08-07 A | 2017-08-07 A | JUICE-UVS 593595 | 100% |  |  |  |  |  |  |  |  | 01 | 01.12 | Management SDRLs | 1 | Phase C | % C |  | Matt | DSI | 0-100 | 19190.21.190 |  | PH CD |  |  |  |  | D |
| JUICE-UVS 593409 |  | Risk Management Plan JUICE-UVS Investigation PM - 7 | milestone | 0d | 2017-08-07 A | 2017-08-07 A | JUICE-UVS 593601 | 100% |  |  |  |  |  |  |  |  | 01 | 01.12 | Management SDRLs | 1 | Phase C | % C |  | Matt | DSI | 0-100 | 19190.21.190 |  | PH CD |  |  |  |  | D |
| JUICE-UVS 593406 |  | Configuration Control & Document Management Plan PM - 05 | milestone | 0d | 2017-08-11 A | 2017-08-11 A | JUICE-UVS 0023 | 100% |  |  |  |  |  |  |  |  | 01 | 01.12 | Management SDRLs | 1 | Phase C | % C |  | Matt | DSI | 0-100 | 19190.21.190 |  | PH CD |  |  |  |  | D |
| JUICE-UVS 593412 |  | Risk Register Assessment PM - 14 | milestone | 0d | 2017-08-11 A | 2017-08-11 A | JUICE-UVS 593604 | 100% |  |  |  |  |  |  |  |  | 01 | 01.12 | Management SDRLs | 1 | Phase C | % C |  | Matt | DSI | 0-100 | 19190.21.190 |  | PH CD |  |  |  |  | D |
| JUICE-UVS 593415 |  | Document Delivery List PM - 16 | milestone | 0d | 2017-08-11 A | 2017-08-11 A | JUICE-UVS 593607 | 100% |  |  |  |  |  |  |  |  | 01 | 01.12 | Management SDRLs | 1 | Phase C | % C |  | Matt | DSI | 0-100 | 19190.21.190 |  | PH CD |  |  |  |  | D |
| JUICE-UVS 593418 |  | Projoct Organization Structure for the JUICE-UVS Instrument PM - 50 | milestone | 0d | 2017-08-11 A | 2017-08-11 A | JUICE-UVS 593610 | 100% |  |  |  |  |  |  |  |  | 01 | 01.12 | Management SDRLs | 1 | Phase C | % C |  | Matt | DSI | 0-100 | 19190.21.190 |  | PH CD |  |  |  |  | D |

| ID | WBS | Activity | Duration | Start | Finish | Predecessors | Complete | Remaining | Planned start | Planned finish | Total float | Expected finish | user_text8 | Work Package | CA | WP/PP | Work Package Name | JUICE UVS Phases | EVT | NASA Phase | JUICE-UVS CAMs | OBS | P6 EVT | JUICE-UVS Charge #s | LOE | JUICE-UVS Phase CD | user_text1 JUICE-UVS Risk ID | Forecast Chg | BUDG - Budget Phase | SORT - Item Sort | user_text6 | JUICE UVS Phase CD |
| --- | --- | --- | --- | --- | --- | --- | --- | --- | --- | --- | --- | --- | --- | --- | --- | --- | --- | --- | --- | --- | --- | --- | --- | --- | --- | --- | --- | --- | --- | --- | --- | --- |
|  | 02 | **Systems Engineering** |  | 2016-10-03 | 2022-09-21 |  |  |  |  |  |  |  |  |  |  |  |  |  |  |  |  |  |  |  |  |  |  |  |  |  |  |  |
|  | 01 | **SE Support & Oversight** |  | 2016-10-03 | 2022-09-21 |  |  |  |  |  |  |  |  |  |  |  |  |  |  |  |  |  |  |  |  |  |  |  |  |  |  |  |
|  | 01 | **Sustained SE** |  | 2016-10-03 | 2022-09-21 |  |  |  |  |  |  |  |  |  |  |  |  |  |  |  |  |  |  |  |  |  |  |  |  |  |  |  |
| JUICE-UVS 591660 |  | SE FY 17 Start of Phase C | 250d | 2016-10-03 A | 2017-09-29 A | JUICE-UVS 0011 | 100% |  |  |  |  |  | MFA | 2.1.1 | 02 | 02.01.01 | Sustained SE Support | Phase C | LOE | C | Mary F | DSI | LOE | 19190.22.110 | LOE | PH CD |  |  |  |  |  |  |
| JUICE-UVS 592501 |  | Additional ESA Support FY 17 Start of Phase C | 250d | 2016-10-03 A | 2017-09-29 A | JUICE-UVS 0011 | 100% |  |  |  |  |  | MFA | 2.1.1 | 02 | 02.01.01 | Sustained SE Support | Phase C | LOE |  | Mary F | DSI | LOE | 19190.22.110 | LOE | PH CD |  |  |  |  |  |  |
| JUICE-UVS 591663 |  | SE FY 18 | 250d | 2017-10-02 A | 2018-09-28 A | JUICE-UVS 591660 | 100% |  |  |  |  |  | MFA | 2.1.1 | 02 | 02.01.01 | Sustained SE Support | Phase C | LOE | C | Mary F | DSI | LOE | 19190.22.110 | LOE | PH CD | Risk ID 23 |  |  |  |  |  |
| JUICE-UVS 592504 |  | Additional ESA Support FY 18 | 250d | 2017-10-02 A | 2018-09-28 A | JUICE-UVS 592501 | 100% |  |  |  |  |  | MFA | 2.1.1 | 02 | 02.01.01 | Sustained SE Support | Phase C | LOE |  | Mary F | DSI | LOE | 19190.22.110 | LOE | PH CD | Risk ID 23 |  |  |  |  |  |
| JUICE-UVS 591666 |  | SE FY 19 | 251d | 2018-10-01 A | 2019-09-30 A | JUICE-UVS594168, JUICE-UVS 591663 | 100% |  | 2018-10-01 | 2019-09-27 |  |  | MFA | 2.1.1 | 02 | 02.01.01 | Sustained SE Support | Phase C | LOE | C | Mary F | DSI | LOE | 19190.22.110 | LOE | PH CD | Risk ID 23 |  |  |  |  |  |
| JUICE-UVS 592507 |  | Additional ESA Support FY 19 | 251d | 2018-10-01 A | 2019-09-30 A | JUICE-UVS 592504 | 100% |  | 2018-10-01 | 2019-09-27 |  |  | MFA | 2.1.1 | 02 | 02.01.01 | Sustained SE Support | Phase C | LOE |  | Mary F | DSI | LOE | 19190.22.110 | LOE | PH CD | Risk ID 23 |  |  |  |  |  |
| JUICE-UVS 591669 |  | SE FY 20 | 252d | 2019-09-30 A | 2020-09-30 | JUICE-UVS 591666 | 15% | 214d | 2019-10-01 | 2020-09-30 | 0d | 2020-09-30 | MFA | 2.1.1 | 02 | 02.01.01 | Sustained SE Support | Phase C | LOE | C | Mary F | DSI | LOE | 19190.22.110 | LOE | PH CD | Risk ID 23 |  |  |  |  |  |
| JUICE-UVS592509 |  | Additional ESA Support FY 20 | 252d | 2019-09-30 A | 2020-09-30 | JUICE-UVS 592507 | 15% | 214d | 2019-10-01 | 2020-09-30 | 0d | 2020-09-30 | MFA | 2.1.1 | 02 | 02.01.01 | Sustained SE Support | Phase C | LOE |  | Mary F | DSI | LOE | 19190.22.110 | LOE | PH CD | Risk ID 23 |  |  |  |  |  |
| JUICE-UVS 591717 |  | SE FY 21 End of Phase C | 32d | 2020-10-01 | 2020-11-13 | JUICE-UVS 591669, JUICE-UVS592509 |  |  |  |  | 0d |  | MFA | 2.1.1 | 02 | 02.01.01 | Sustained SE Support | Phase C | LOE | C | Mary F | DSI | LOE | 19190.22.110 | LOE | PH CD |  |  |  |  |  |  |
| JUICE-UVS 591720 |  | SE FY 21 Start of Phase D | 218d | 2020-11-16 | 2021-09-30 | JUICE-UVS 591717 |  |  |  |  | 0d |  | MFA | 2.1.1 | 02 | 02.01.01 | Sustained SE Support | Phase D | LOE | D | Mary F | DSI | LOE | 19190.22.110 | LOE | PH CD |  | Y |  |  |  |  |
| JUICE-UVS 591675 |  | SE FY 22 End of Phase D | 243d | 2021-10-01 | 2022-09-21 | JUICE-UVS 591720 |  |  |  |  | 0d |  | MFA | 2.1.1 | 02 | 02.01.01 | Sustained SE Support | Phase D | LOE | D | Mary F | DSI | LOE | 19190.22.110 | LOE | PH CD |  | Y |  |  |  |  |
|  | 02 | **Discrete SE** |  | 2017-08-07 | 2017-08-18 |  |  |  |  |  |  |  |  |  |  |  |  |  |  |  |  |  |  |  |  |  |  |  |  |  |  |  |
| JUICE-UVS 593613 |  | Instrument Design Report SE - 08 | 10d | 2017-08-07 A | 2017-08-18 A | JUICE-UVS 0023 | 100% |  |  |  |  |  |  |  | 02 | 02.01.02 | Discrete SE Support | Phase C | % C |  | Mary F | DSI | 0-100 | 19190.22.120 |  | PH CD |  |  |  |  |  |  |
| JUICE-UVS 593616 |  | Technical Budget Report SE - 09 | 10d | 2017-08-07 A | 2017-08-18 A | JUICE-UVS 0023 | 100% |  |  |  |  |  |  |  | 02 | 02.01.02 | Discrete SE Support | Phase C | % C |  | Mary F | DSI | 0-100 | 19190.22.120 |  | PH CD |  |  |  |  |  |  |
| JUICE-UVS 593619 |  | Not Required Trade-Off Report SE - 17 (N/A) | 10d | 2017-08-07 A | 2017-08-18 A | JUICE-UVS 0023 | 100% |  |  |  |  |  |  |  | 02 | 02.01.02 | Discrete SE Support | Phase C | % C |  | Mary F | DSI | 0-100 | 19190.22.120 |  | PH CD |  |  |  |  |  |  |
|  | 02 | **Specs/ICDs (DOORS)** |  | 2016-10-03 | 2017-08-18 |  |  |  |  |  |  |  |  |  |  |  |  |  |  |  |  |  |  |  |  |  |  |  |  |  |  |  |
| JUICE-UVS 2023 |  | UVS Instrument Specification - Updates and Review | 20d | 2016-10-03 A | 2016-10-28 A | JUICE-UVS 0023 | 100% |  |  |  |  |  | MFA |  | 02 | 02.02 | Specs/ICS (Doors) | Phase C | % C |  | Mary F | DSI | 50-50 | 19190.22.210 |  | PH CD | Risk ID 23 |  |  |  |  |  |
| JUICE-UVS 2054 |  | UVS EID-B (Spacecraft ICD) - Final Review & Updates for Release | 41d | 2016-11-28 A | 2017-01-26 A |  | 100% |  |  |  |  |  | MFA | 2.2.1 | 02 | 02.02 | Specs/ICS (Doors) | Phase C | % C | C | Mary F | DSI | 50-50 | 19190.22.210 |  | PH CD | Risk ID 23 |  | B+ | SYS ENG |  |  |
| JUICE-UVS 2020 |  | UVS Instrument Specification - Final Review for Release | 41d | 2017-05-30 A | 2017-07-26 A | JUICE-UVS 2023 | 100% |  |  |  |  |  | MFA | 2.2.1 | 02 | 02.02 | Specs/ICS (Doors) | Phase C | % C | C | Mary F | DSI | 50-50 | 19190.22.210 |  | PH CD | Risk ID 23 |  | B | SYS ENG | Phase B |  |
| JUICE-UVS 2021 |  | LVPS Bd Performance Func Spec - Final | 13d | 2017-07-12 A | 2017-07-28 A | JUICE-UVS 2054 | 100% |  |  |  |  |  |  |  | 02 | 02.02 | Specs/ICS (Doors) | Phase C | % C |  | Mary F | DSI | 50-50 | 19190.22.210 |  | PH CD |  |  |  |  |  |  |
| JUICE-UVS 2027 |  | C&DH Bd Performance Func Spec - Final | 13d | 2017-07-12 A | 2017-07-28 A | JUICE-UVS 2054 | 100% |  |  |  |  |  |  |  | 02 | 02.02 | Specs/ICS (Doors) | Phase C | % C |  | Mary F | DSI | 50-50 | 19190.22.210 |  | PH CD |  |  |  |  |  |  |
| JUICE-UVS 2028 |  | HVPS Bd Performance Func Spec - Final | 13d | 2017-07-12 A | 2017-07-28 A | JUICE-UVS 2054 | 100% |  |  |  |  |  |  |  | 02 | 02.02 | Specs/ICS (Doors) | Phase C | % C |  | Mary F | DSI | 50-50 | 19190.22.210 |  | PH CD |  |  |  |  |  |  |
| JUICE-UVS 2033 |  | Det & Det Elec. Spec - Final | 13d | 2017-07-12 A | 2017-07-28 A | JUICE-UVS 2054 | 100% |  |  |  |  |  |  |  | 02 | 02.02 | Specs/ICS (Doors) | Phase C | % C |  | Mary F | DSI | 50-50 | 19190.22.210 |  | PH CD |  |  |  |  |  |  |
| JUICE-UVS 2030 |  | Test Equipment Spec - Final | 7d | 2017-08-07 A | 2017-08-15 A | JUICE-UVS 2054 | 100% |  |  |  |  |  | MFA | 2.2.1 | 02 | 02.02 | Specs/ICS (Doors) | Phase C | % C | C | Mary F | DSI | 0-100 | 19190.22.210 |  | PH CD |  |  | B | SYS ENG | Phase B |  |
| JUICE-UVS 2064 |  | JUICE-UVS EICD Development - Final | 5d | 2017-08-07 A | 2017-08-11 A | JUICE-UVS 0023 | 100% |  |  |  |  |  | MFA | 2.2.1 | 02 | 02.02 | Specs/ICS (Doors) | Phase C | % C | C | Mary F | DSI | 50-50 | 19190.22.210 |  | PH CD | Risk ID 23 |  |  |  |  | PH CD |
| JUICE-UVS 593625 |  | Instrument Configuration Item Data List (CIDL) SE - 23 | 10d | 2017-08-07 A | 2017-08-18 A | JUICE-UVS 0023 | 100% |  |  |  |  |  |  |  | 02 | 02.02 | Specs/ICS (Doors) | Phase C | % C |  | Mary F | DSI | 0-100 | 19190.22.210 |  | PH CD |  |  |  |  |  |  |

| ID | WBS | Activity | Duration | Start | Finish | Predecessors | Complete | Planned start | Planned finish | user_text8 | Work Package | CA | WP/PP | Work Package Name | JUICE UVS Phases | EVT | JUICE-UVS CAMs | OBS | P6 EVT | JUICE-UVS Charge #s | JUICE-UVS Phase CD | user_text1 JUICE-UVS Risk ID | NASA Phase | user_text6 | BUDG - Budget Phase | SORT - Item Sort |
| --- | --- | --- | --- | --- | --- | --- | --- | --- | --- | --- | --- | --- | --- | --- | --- | --- | --- | --- | --- | --- | --- | --- | --- | --- | --- | --- |
|  | 03 | **Analyses** |  | 2016-10-03 | 2019-12-13 |  |  |  |  |  |  |  |  |  |  |  |  |  |  |  |  |  |  |  |  |  |
|  | 01 | **Parts Stress Derating** |  | 2017-04-10 | 2017-08-10 |  |  |  |  |  |  |  |  |  |  |  |  |  |  |  |  |  |  |  |  |  |
| JUICE-UVS 592362 |  | Parts Stress Derating Detector - Final | 86d | 2017-04-10 A | 2017-08-10 A | JUICE-UVS 9054 | 100% |  |  | BP | 2.3.1 | 02 | 02.03.01 | PSD Analyses | Phase C | % C | Mary F | DSI | 50-50 | 19190.22.310 | PH CD |  |  |  |  |  |
| JUICE-UVS 592351 |  | Parts Stress Derating LVPS - Final | 38d | 2017-05-12 A | 2017-07-07 A | JUICE-UVS 3272 | 100% |  |  | SC | 2.3.1 | 02 | 02.03.01 | PSD Analyses | Phase C | % C | Mary F | DSI | 50-50 | 19190.22.310 | PH CD |  |  |  |  |  |
| JUICE-UVS 592366 |  | Parts Stress Derating Backplane - Final | 5d | 2017-05-12 A | 2017-05-18 A | JUICE-UVS 592351 SS | 100% |  |  | BP | 2.3.1 | 02 | 02.03.01 | PSD Analyses | Phase C | % C | Mary F | DSI | 0-100 | 19190.22.310 | PH CD |  |  |  |  |  |
| JUICE-UVS 592356 |  | Parts Stress Derating C&DH - Final | 56d | 2017-05-22 A | 2017-08-10 A | JUICE-UVS 5208 SS | 100% |  |  | KP | 2.3.1 | 02 | 02.03.01 | PSD Analyses | Phase C | % C | Mary F | DSI | 50-50 | 19190.22.310 | PH CD |  |  |  |  |  |
| JUICE-UVS 592354 |  | Parts Stress Derating HVPS - Final | 19d | 2017-05-30 A | 2017-06-23 A | JUICE-UVS 3217 | 100% |  |  | SC | 2.3.1 | 02 | 02.03.01 | PSD Analyses | Phase C | % C | Mary F | DSI | 50-50 | 19190.22.310 | PH CD |  |  |  |  |  |
|  | 02 | **Radiation Analyses** |  | 2016-10-03 | 2017-10-24 |  |  |  |  |  |  |  |  |  |  |  |  |  |  |  |  |  |  |  |  |  |
| JUICE-UVS 2088 |  | EEE Radiation Analysis - Incorporate Changes Post PDR | 38d | 2016-10-03 A | 2016-11-23 A | JUICE-UVS 0023 | 100% |  |  | RM | 2.3.2 | 02 | 02.03.02 | UVS RAD Analyses | Phase C | % C | Mary F | DSI | 50-50 | 19190.22.320 | PH CD | Risk ID 23, 6 | C |  |  |  |
| JUICE-UVS 593364 |  | Parts Radiation Testing Incorporate Changes Post PDR | 35d | 2016-10-03 A | 2016-11-18 A | JUICE-UVS 0023 | 100% |  |  | RM | 2.3.2 | 02 | 02.03.02 | UVS RAD Analyses | Phase C | % C | Mary F | DSI | % C | 19190.22.320 | PH CD | Risk ID 23, 6 |  |  |  |  |
| JUICE-UVS 592568 |  | Parts Radiation Testing Final Review for Release | 17d | 2016-11-01 A | 2016-11-23 A | JUICE-UVS 593364 | 100% |  |  | RM | 2.3.2 | 02 | 02.03.02 | UVS RAD Analyses | Phase C | % C | Mary F | DSI | 50-50 | 19190.22.320 | PH CD | Risk ID 23, 6 |  |  |  |  |
| JUICE-UVS 592443 |  | Radiation Transport & Charging Analysis - Incoporate Changes Post PDR | 40d | 2016-11-28 A | 2017-01-25 A | JUICE-UVS 592568 | 100% |  |  | RM | 2.3.2 | 02 | 02.03.02 | UVS RAD Analyses | Phase C | % C | Mary F | DSI | 50-50 | 19190.22.320 | PH CD | Risk ID 6 | C | Phase B | C/D | SYS ENG |
| JUICE-UVS 592449 |  | EEE Radiation Analysis - Draft | 35d | 2017-01-03 A | 2017-02-20 A | JUICE-UVS 2088 | 100% |  |  | RM | 2.3.2 | 02 | 02.03.02 | UVS RAD Analyses | Phase C | % C | Mary F | DSI | 50-50 | 19190.22.320 | PH CD | Risk ID 6 | C |  |  |  |
| JUICE-UVS 592446 |  | Radiation Transport & Charging Analysis - Draft | 40d | 2017-01-26 A | 2017-03-22 A | JUICE-UVS 592443 | 100% |  |  | RM | 2.3.2 | 02 | 02.03.02 | UVS RAD Analyses | Phase C | % C | Mary F | DSI | 50-50 | 19190.22.320 | PH CD | Risk ID 6 | C | Phase B | C/D | SYS ENG |
| JUICE-UVS 592452 |  | EEE Radiation Analysis - Final Review for Release | 35d | 2017-02-21 A | 2017-04-10 A | JUICE-UVS 592449 | 100% |  |  | RM | 2.3.2 | 02 | 02.03.02 | UVS RAD Analyses | Phase C | % C | Mary F | DSI | 50-50 | 19190.22.320 | PH CD | Risk ID 6 | C |  |  |  |
| JUICE-UVS 2079 |  | Radiation Transport & Charging Analysis - Final Review for Release | 62d | 2017-05-08 A | 2017-08-04 A | JUICE-UVS 592446 | 100% |  |  | RM | 2.3.2 | 02 | 02.03.02 | UVS RAD Analyses | Phase C | % C | Mary F | DSI | 50-50 | 19190.22.320 | PH CD | Risk ID 6 | C | Phase B | C/D | SYS ENG |
| JUICE-UVS 593262 |  | Radiation Modeling & Analysis Report - Final | 55d | 2017-08-07 A | 2017-10-24 A | JUICE-UVS 592568, JUICE-UVS 2079, JUICE-UVS 592452 | 100% |  |  |  |  | 02 | 02.03.02 | UVS RAD Analyses | Phase C | % C | Mary F | DSI | 50-50 | 19190.22.320 | PH CD | Risk ID 6 |  |  |  |  |
|  | 03 | **FMEA** |  | 2016-10-31 | 2017-08-16 |  |  |  |  |  |  |  |  |  |  |  |  |  |  |  |  |  |  |  |  |  |
| JUICE-UVS 2084 |  | UVS FMEA - Incorporate Changes Post PDR | 16d | 2016-10-31 A | 2016-11-21 A | JUICE-UVS 0023 | 100% |  |  | KP | 2.3.3 | 02 | 02.03.03 | UVS FMEA | Phase C | % C | Mary F | DSI | % C | 19190.22.330 | PH CD |  | C |  | C/D | SYS ENG |
| JUICE-UVS 592602 |  | UVS FTA - Incorporate Changes Post PDR | 16d | 2016-10-31 A | 2016-11-21 A | JUICE-UVS 0023 | 100% |  |  | KP | 2.3.3 | 02 | 02.03.03 | UVS FMEA | Phase C | % C | Mary F | DSI | % C | 19190.22.330 | PH CD |  |  |  |  |  |
| JUICE-UVS 593367 |  | Not Required -UVS FTA - CDR Draft | 29d | 2017-06-26 A | 2017-08-04 A | JUICE-UVS 592602 | 100% |  |  | KP | 2.3.3 | 02 | 02.03.03 | UVS FMEA | Phase C | % C | Mary F | DSI | 50-50 | 19190.22.330 | PH CD |  |  |  |  |  |
| JUICE-UVS 593370 |  | Not Required -UVS FTA - Final Review for Release | 29d | 2017-06-26 A | 2017-08-04 A | JUICE-UVS 593367 SS | 100% |  |  | KP | 2.3.3 | 02 | 02.03.03 | UVS FMEA | Phase C | % C | Mary F | DSI | % C | 19190.22.330 | PH CD |  |  |  |  |  |
| JUICE-UVS 592455 |  | UVS FMEA - CDR Draft | 1d | 2017-08-07 A | 2017-08-07 A | JUICE-UVS 2084 | 100% |  |  | KP | 2.3.3 | 02 | 02.03.03 | UVS FMEA | Phase C | % C | Mary F | DSI | 50-50 | 19190.22.330 | PH CD |  | C |  | C/D | SYS ENG |
| JUICE-UVS 592458 |  | UVS FMEA - Final Review for Release | 10d | 2017-08-07 A | 2017-08-16 A | JUICE-UVS 592455 FF | 100% | 2017-08-07 | 2017-08-18 | KP | 2.3.3 | 02 | 02.03.03 | UVS FMEA | Phase C | % C | Mary F | DSI | 50-50 | 19190.22.330 | PH CD |  | C |  | C/D | SYS ENG |

| ID | WBS | Activity | Duration | Start | Finish | Predecessors | Complete | Remaining | Planned start | Planned finish | Total float | Free float | Constraint | Expected finish | CA | WP/PP | BCR # | Work Package Name | JUICE UVS Phases | EVT | JUICE-UVS CAMs | OBS | P6 EVT | JUICE-UVS Charge #s | JUICE-UVS Phase CD | user_text8 | Work Package | JUICE UVS Phase CD | NASA Phase | user_text6 | BUDG - Budget Phase | SORT - Item Sort | user_text1 JUICE-UVS Risk ID | Justify | Forecast Chg |
| --- | --- | --- | --- | --- | --- | --- | --- | --- | --- | --- | --- | --- | --- | --- | --- | --- | --- | --- | --- | --- | --- | --- | --- | --- | --- | --- | --- | --- | --- | --- | --- | --- | --- | --- | --- |
|  | 04 | **WCA** |  | 2017-03-06 | 2017-08-17 |  |  |  |  |  |  |  |  |  |  |  |  |  |  |  |  |  |  |  |  |  |  |  |  |  |  |  |  |  |  |
| JUICE-UVS594033 |  | LISN LVPS Analysis Sim (R001881) | 5d | 2017-03-06 A | 2017-03-10 A | JUICE-UVS 2054 | 100% |  |  |  |  |  |  |  | 02 | 02.03.04 | 25 | PWA WCA | Phase C | % C | Mary F | DSI | 0-100 | 19190.22.340 | PH CD |  |  |  |  |  |  |  |  |  |  |
| JUICE-UVS594036 |  | LCL Power Stability to LVPS Sim (R001882) | 5d | 2017-03-06 A | 2017-03-10 A | JUICE-UVS 2054 | 100% |  |  |  |  |  |  |  | 02 | 02.03.04 | 25 | PWA WCA | Phase C | % C | Mary F | DSI | 0-100 | 19190.22.340 | PH CD |  |  |  |  |  |  |  |  |  |  |
| JUICE-UVS594042 |  | Power Up/Down Derating (R001883) | 5d | 2017-03-06 A | 2017-03-10 A | JUICE-UVS 2054 | 100% |  |  |  |  |  |  |  | 02 | 02.03.04 |  | PWA WCA | Phase C | % C | Mary F | DSI | 0-100 | 19190.22.340 | PH CD |  |  |  |  |  |  |  |  |  |  |
| JUICE-UVS 2103 |  | HVPS PWA WCA - FM | 76d | 2017-04-24 A | 2017-08-10 A | JUICE-UVS 3229 | 100% |  |  |  |  |  |  |  | 02 | 02.03.04 |  | PWA WCA | Phase C | % C | Mary F | DSI | 50-50 | 19190.22.340 | PH CD | CN | 2.3.4 | PH CD | C |  |  |  |  |  |  |
| JUICE-UVS 2100 |  | LVPS PWA WCA - FM | 76d | 2017-05-01 A | 2017-08-17 A | JUICE-UVS 3272 SS | 100% |  |  |  |  |  |  |  | 02 | 02.03.04 | 25 | PWA WCA | Phase C | % C | Mary F | DSI | 50-50 | 19190.22.340 | PH CD | RB | 2.3.4 | PH CD | C | Phase B | B+ | SYS ENG |  |  |  |
| JUICE-UVS 2096 |  | C&DH PWA WCA - FM | 70d | 2017-05-03 A | 2017-08-11 A | JUICE-UVS 591810 | 100% |  |  |  |  |  |  |  | 02 | 02.03.04 |  | PWA WCA | Phase C | % C | Mary F | DSI | 50-50 | 19190.22.340 | PH CD | CN | 2.3.4 | PH CD | C | Phase B | B+ | SYS ENG |  |  |  |
| JUICE-UVS 592353 |  | C&DH FPGA WCTA - FM | 20d | 2017-05-23 A | 2017-06-21 A | JUICE-UVS 592743 | 100% |  |  |  |  |  |  |  | 02 | 02.03.04 |  | PWA WCA | Phase C | % C | Mary F | DSI | 50-50 | 19190.22.340 | PH CD | MAJ | 2.3.4 | PH CD | C | Phase B | B+ | SYS ENG |  |  |  |
|  | 05 | **Thermal Analyses** |  | 2016-10-31 | 2019-12-13 |  |  |  |  |  |  |  |  |  |  |  |  |  |  |  |  |  |  |  |  |  |  |  |  |  |  |  |  |  |  |
| JUICE-UVS 592513 |  | Additional Thermal Interface Analysis FY 17 | 116d | 2016-10-31 A | 2017-04-17 A | JUICE-UVS 0023 | 100% |  |  |  |  |  |  |  | 02 | 02.03.05 |  | Thermal Analyses | Phase C | % C | Mary F | DSI | % C | 19190.22.350 | PH CD | BW | 2.3.5 |  |  |  |  |  | Risk ID 20 |  |  |
| JUICE-UVS 2104 |  | UVS Thermal Analysis - Incorporate Changes Post PDR | 82d | 2017-01-06 A | 2017-05-01 A | JUICE-UVS 592513 | 100% |  |  |  |  |  |  |  | 02 | 02.03.05 |  | Thermal Analyses | Phase C | % C | Mary F | DSI | % C | 19190.22.350 | PH CD | BW | 2.3.5 |  | C |  | C/D | SYS ENG | Risk ID 20 |  |  |
| JUICE-UVS 592461 |  | UVS Thermal Analysis - Final Review for Release | 75d | 2017-05-22 A | 2017-09-08 A | JUICE-UVS 2581, JUICE-UVS 2104 | 100% |  |  |  |  |  |  |  | 02 | 02.03.05 |  | Thermal Analyses | Phase C | % C | Mary F | DSI | % C | 19190.22.350 | PH CD | BW | 2.3.5 |  | C |  | C/D | SYS ENG | Risk ID 20 |  |  |
| JUICE-UVS 592519 |  | Additional Thermal Interface Analysis FY 17 | 44d | 2017-07-26 A | 2017-09-27 A | JUICE-UVS 592461 | 100% |  |  |  |  |  |  |  | 02 | 02.03.05 |  | Thermal Analyses | Phase C | % C | Mary F | DSI | % C | 19190.22.350 | PH CD | BW | 2.3.5 |  |  |  |  |  | Risk ID 20 |  |  |
| JUICE-UVS 592522 |  | Additional Thermal Interface Analysis FY 18 | 314d | 2017-09-22 A | 2019-12-13 | JUICE-UVS 5235 | 96% | 14d | 2017-09-22 | 2018-12-21 | 24d | 0d |  | 2019-12-13 | 02 | 02.03.05 |  | Thermal Analyses | Phase C | % C | Mary F | DSI | % C | 19190.22.350 | PH CD | BW | 2.3.5 |  |  |  |  |  | Risk ID 20 | PM Directed Start Date | Y |
|  | 06 | **Structural Analyses** |  | 2016-12-19 | 2019-12-13 |  |  |  |  |  |  |  |  |  |  |  |  |  |  |  |  |  |  |  |  |  |  |  |  |  |  |  |  |  |  |
| JUICE-UVS 592516 |  | Additional Structural Interface Analysis FY 17 | 22d | 2016-12-19 A | 2017-01-20 A | JUICE-UVS 0023 | 100% |  |  |  |  |  |  |  | 02 | 02.03.06 |  | Structural Analyses | Phase C | % C | Mary F | DSI | 50-50 | 19190.22.360 | PH CD | BW | 2.3.6 |  |  |  |  |  | Risk ID 20 |  |  |
| JUICE-UVS 592523 |  | Additional Structural Interface Analysis FY 17 | 128d | 2017-03-15 A | 2017-09-15 A | JUICE-UVS 592516 | 100% |  |  |  |  |  |  |  | 02 | 02.03.06 |  | Structural Analyses | Phase C | % C | Mary F | DSI | % C | 19190.22.360 | PH CD | BW | 2.3.6 |  |  |  |  |  | Risk ID 20 |  |  |
| JUICE-UVS 2108 |  | UVS Structural Analysis Bd Level- Incorporate Changes Post PDR | 29d | 2017-06-13 A | 2017-07-24 A | JUICE-UVS 592516, JUICE-UVS 9063, JUICE-UVS 592740 FF, JUICE-UVS 3272 FF, JUICE-UVS 3212 FF+10d | 100% |  |  |  |  |  |  |  | 02 | 02.03.06 |  | Structural Analyses | Phase C | % C | Mary F | DSI | 50-50 | 19190.22.360 | PH CD | BW | 2.3.6 |  | C |  | C/D | SYS ENG | Risk ID 20 | PM Directed SDRL Deliverable Start Date |  |
| JUICE-UVS 592479 |  | UVS Structural Analysis - Final Review for Release | 64d | 2017-07-25 A | 2017-10-24 A | JUICE-UVS 2108, JUICE-UVS 2581 | 100% |  |  |  |  |  |  |  | 02 | 02.03.06 |  | Structural Analyses | Phase C | % C | Mary F | DSI | 50-50 | 19190.22.360 | PH CD | BW | 2.3.6 |  | C |  | C/D | SYS ENG |  |  |  |
| JUICE-UVS 592526 |  | Additional Structural Interface Analysis FY 18 | 334d | 2017-10-02 A | 2019-12-13 | JUICE-UVS 592523 | 88% | 14d | 2017-10-02 | 2019-01-31 | 24d | 0d |  | 2019-12-13 | 02 | 02.03.06 |  | Structural Analyses | Phase C | % C | Mary F | DSI | % C | 19190.22.360 | PH CD | BW | 2.3.6 |  |  |  |  |  | Risk ID 20 | PM Directed SDRL Deliverable Start Date | Y |
|  | 07 | **PRA Support** |  | 2017-07-03 | 2017-08-11 |  |  |  |  |  |  |  |  |  |  |  |  |  |  |  |  |  |  |  |  |  |  |  |  |  |  |  |  |  |  |
| JUICE-UVS 592347 |  | UVS Reliability PRA - FM Final | 29d | 2017-07-03 A | 2017-08-11 A | JUICE-UVS 0023, JUICE-UVS 5208, JUICE-UVS 3272, JUICE-UVS 3212, JUICE-UVS 9060 | 100% |  |  |  |  |  |  |  | 02 | 02.03.07 |  | UVS PRA | Phase C | % C | Mary F | DSI | 50-50 | 19190.22.370 | PH CD | JK | 2.3.7 |  | C |  | C/D | SYS ENG |  |  |  |
|  | 08 | **Revised Thermal Analysis** |  | 2019-04-08 | 2019-12-13 |  |  |  |  |  |  |  |  |  |  |  |  |  |  |  |  |  |  |  |  |  |  |  |  |  |  |  |  |  |  |
| JUICE-UVS 594813 |  | Revised Thermal Analysis | 10d | 2019-04-08 A | 2019-12-13 | JUICE-UVS 5235 | 50% | 14d | 2019-04-08 | 2019-04-19 | 24d | 0d | start on or after 2019-04-08 | 2019-12-13 | 02 | 02.03.08 |  | Revise Thermal Analysis | Phase C | % C | Mary F | DSI | 50-50 | 19190.22.351 |  |  |  |  | C |  |  |  |  |  |  |

Notes:
- JUICE-UVS 592522: Steps: Initial Analysis (done); Thermoelastic Analysis - TAR Update Start (done); Thermoelastic Analysis - TAR Update Finish (done); Line of Sight Sensitivity Matrix Analysis Start (done); Line of Sight Sensitivity Matrix Analysis Finish (done); ESA Model Conversion - TAR Update (done); Additional Thermal Cases - Pre-TBAL Start (done); Additional Thermal Cases - Pre-TBAL Finish (done); Additional Thermal Cases - TBAL Correlation; Thermal Isolator Analysis (done)
- JUICE-UVS 592526: Steps: Fail Safe Analysis Start (done); Fail Safe Analysis Finish (done); Thermoelastic Analysis - TAR Update Start (done); Thermoelastic Analysis - TAR Update Finish (done); Thermoelastic Analysis - Iteration 2 (done); Thermoelastic Analysis - Iteration 3 (done); Thermoelastic Analysis - MAR Update; Micro Vibration Susceptibility - MAR Update Start; Vibration Notching Analysis (done); Micro Vibration Susceptibility - MAR Update Finish; Micro Vibration Emissions - MAR Update Start (done); Micro Vibration Emissions - MAR Update Finish (done); Thermal Isolator Structural Analysis (done)

| ID | WBS | Activity | Duration | Start | Finish | Predecessors | Complete | Remaining | Planned start | Planned finish | Total float | Free float | Expected finish | user_text8 | CA | WP/PP | Work Package Name | JUICE UVS Phases | EVT | JUICE-UVS CAMs | OBS | P6 EVT | JUICE-UVS Charge #s | JUICE-UVS Phase CD | user_text6 | Work Package | BUDG - Budget Phase | SORT - Item Sort | NASA Phase | PHAS - Alice (Old) | PERT - Pert Select | JUICE UVS Phase CD | JUICE Mission Phases | Forecast Chg |
| --- | --- | --- | --- | --- | --- | --- | --- | --- | --- | --- | --- | --- | --- | --- | --- | --- | --- | --- | --- | --- | --- | --- | --- | --- | --- | --- | --- | --- | --- | --- | --- | --- | --- | --- |
|  | 04 | **Verification** |  | 2016-12-06 | 2020-03-11 |  |  |  |  |  |  |  |  |  |  |  |  |  |  |  |  |  |  |  |  |  |  |  |  |  |  |  |  |  |
|  | 01 | **Verification Plan/Matrix** |  | 2016-12-06 | 2017-07-18 |  |  |  |  |  |  |  |  |  |  |  |  |  |  |  |  |  |  |  |  |  |  |  |  |  |  |  |  |  |
| JUICE-UVS 592878 |  | Verification Plan - Prelim | 50d | 2016-12-06 A | 2017-02-16 A | JUICE-UVS 0023 | 100% |  |  |  |  |  |  | SE | 02 | 02.04.01 | Verification Plan/Matrix | Phase C | % C | Mary F | DSI | % C | 19190.22.410 | PH CD |  |  |  |  |  |  |  |  |  |  |
| JUICE-UVS 2122 |  | Verification Plan - Draft | 48d | 2017-03-01 A | 2017-05-05 A | JUICE-UVS 592878 | 100% |  |  |  |  |  |  | SE | 02 | 02.04.01 | Verification Plan/Matrix | Phase C | % C | Mary F | DSI | 50-50 | 19190.22.410 | PH CD | Phase B | 2.4.1 | B | PLANS | C |  |  |  |  |  |
| JUICE-UVS 592482 |  | Verification Plan - Final Review for Release | 35d | 2017-05-30 A | 2017-07-18 A | JUICE-UVS 2122 | 100% |  |  |  |  |  |  | SE | 02 | 02.04.01 | Verification Plan/Matrix | Phase C | % C | Mary F | DSI | 50-50 | 19190.22.410 | PH CD | Phase B | 2.4.1 | B | PLANS | C |  |  |  |  |  |
|  | 02 | **Acceptance Data Package** |  | 2018-09-04 | 2020-03-11 |  |  |  |  |  |  |  |  |  |  |  |  |  |  |  |  |  |  |  |  |  |  |  |  |  |  |  |  |  |
| JUICE-UVS 2188 |  | UVS EM End Item Data Package | 10d | 2018-09-04 A | 2018-09-17 A |  | 100% |  |  |  |  |  |  | BW | 02 | 02.04.02 | Verification - ADP | Phase C | % C | Mary F | DSI | 50-50 | 19190.22.420 | PH CD |  | 2.4.2 |  |  | C |  |  |  |  |  |
| JUICE-UVS 2185 |  | UVS FM End Item Data Package | 59d | 2019-08-06 A | 2019-12-31 | JUICE-UVS 592526 FF, JUICE-UVS 592522 FF, JUICE-UVS 594813 FF, JUICE-UVS 593310 | 50% | 24d | 2019-08-06 | 2019-10-28 | 14d | 0d | 2019-12-31 | BW | 02 | 02.04.02 | Verification - ADP | Phase C | % C | Mary F | DSI | 50-50 | 19190.22.420 | PH CD |  | 2.4.2 | C/D | INT&TEST | C | 130 | Y | PH CD |  |  |
| JUICE-UVS 3094 |  | UVS STM End Item Data Package | 10d | 2020-02-27 | 2020-03-11 | JUICE-UVS 51076 |  |  |  |  | 8d |  |  | BW | 02 | 02.04.02 | Verification - ADP | Phase C | % C | Mary F | DSI | 50-50 | 19190.22.420 | PH CD |  | 2.4.2 |  |  | C |  |  |  |  |  |
|  | 03 | **Plans/Procedures** |  | 2017-01-27 | 2019-07-16 |  |  |  |  |  |  |  |  |  |  |  |  |  |  |  |  |  |  |  |  |  |  |  |  |  |  |  |  |  |
|  | 01 | **Test Plans** |  | 2017-01-27 | 2017-08-18 |  |  |  |  |  |  |  |  |  |  |  |  |  |  |  |  |  |  |  |  |  |  |  |  |  |  |  |  |  |
| JUICE-UVS 593265 |  | UVS EMI/EMC Test Plan Final | 98d | 2017-01-27 A | 2017-06-15 A | JUICE-UVS 2054 | 100% |  |  |  |  |  |  |  | 02 | 02.04.03.01 | UVS Test Plans | Phase C | % C | Mary F | DSI | 50-50 | 19190.22.430 | PH CD |  |  |  |  |  |  |  |  |  |  |
| JUICE-UVS 592875 |  | UVS I&T Test Plan - Prelim Phase C | 47d | 2017-02-15 A | 2017-04-20 A | JUICE-UVS 0023 | 100% |  |  |  |  |  |  |  | 02 | 02.04.03.01 | UVS Test Plans | Phase C | % C | Mary F | DSI | 50-50 | 19190.22.430 | PH CD |  |  |  |  |  |  |  |  |  |  |
| JUICE-UVS 2138 |  | UVS Calibration Plan - Final | 20d | 2017-04-03 A | 2017-04-28 A | JUICE-UVS 0023 | 100% |  |  |  |  |  |  | MD | 02 | 02.04.03.01 | UVS Test Plans | Phase C | % C | Mary F | DSI | 50-50 | 19190.22.430 | PH CD | Phase B | 2.4.3.1 |  | PLANS | C |  |  |  |  |  |
| JUICE-UVS 2136 |  | UVS AI&T Test Plan - Final | 9d | 2017-08-07 A | 2017-08-17 A | JUICE-UVS 592875, JUICE-UVS 593265 | 100% |  |  |  |  |  |  | KP | 02 | 02.04.03.01 | UVS Test Plans | Phase C | % C | Mary F | DSI | 50-50 | 19190.22.430 | PH CD | Phase B | 2.4.3.1 |  | PLANS | C |  |  |  |  |  |
| JUICE-UVS 593628 |  | Fracture Control Plan & Summary Report SE - 31 | 10d | 2017-08-07 A | 2017-08-18 A | JUICE-UVS 2138 | 100% |  |  |  |  |  |  |  | 02 | 02.04.03.01 | UVS Test Plans | Phase C | % C | Mary F | DSI | 50-50 | 19190.22.430 | PH CD |  |  |  |  |  |  |  |  |  |  |
|  | 02 | **Instrument Level Test Proc** |  | 2017-08-07 | 2017-08-30 |  |  |  |  |  |  |  |  |  |  |  |  |  |  |  |  |  |  |  |  |  |  |  |  |  |  |  |  |  |
| JUICE-UVS 2160 |  | UVS Full Func Test Procedure (ATP) - FM Phase C | 18d | 2017-08-07 A | 2017-08-30 A | JUICE-UVS 2030 FF | 100% |  |  |  |  |  |  | MV | 02 | 02.04.03.02 | UVS Test Procs | Phase C | % C | Mary F | DSI | 50-50 | 19190.22.440 | PH CD | Phase B | 2.4.3.3 |  | PLANS | C |  |  |  |  |  |
|  | 03 | **Acceptance Test Proc** |  | 2017-02-06 | 2019-07-16 |  |  |  |  |  |  |  |  |  |  |  |  |  |  |  |  |  |  |  |  |  |  |  |  |  |  |  |  |  |
| JUICE-UVS 2170 |  | UVS EMI/EMC Procedure - Prelim | 75d | 2017-02-06 A | 2017-05-19 A | JUICE-UVS 0023 | 100% |  |  |  |  |  |  | KP | 02 | 02.04.03.03 | UVS ATProcs | Phase C | % C | Mary F | DSI | 50-50 | 19190.22.450 | PH CD |  | 2.4.3.4 |  |  | C |  |  |  | End B |  |
| JUICE-UVS 2180 |  | UVS Magnetics Test Proc - Prelim | 44d | 2017-12-27 A | 2018-01-31 A | JUICE-UVS 2350 | 100% |  | 2017-12-27 | 2018-02-27 |  |  |  | KP | 02 | 02.04.03.03 | UVS ATProcs | Phase C | % C | Mary F | DSI | 50-50 | 19190.22.450 | PH CD |  | 2.4.3.4 |  |  | C |  |  |  | End B |  |
| JUICE-UVS 2177 |  | UVS Magnetics Test Proc - Final | 102d | 2018-01-31 A | 2018-06-25 A | JUICE-UVS 2180 | 100% |  |  |  |  |  |  | KP | 02 | 02.04.03.03 | UVS ATProcs | Phase C | % C | Mary F | DSI | 50-50 | 19190.22.450 | PH CD |  | 2.4.3.4 |  |  | C |  |  |  |  |  |
| JUICE-UVS 4304 |  | UVS EMI/EMC Procedure - Final | 102d | 2018-01-31 A | 2018-06-25 A | JUICE-UVS 2350, JUICE-UVS 2170 | 100% |  |  |  |  |  |  | KP | 02 | 02.04.03.03 | UVS ATProcs | Phase C | % C | Mary F | DSI | 50-50 | 19190.22.450 | PH CD |  | 2.4.3.4 | C/D | PLANS | C | 651 | Y |  |  |  |
| JUICE-UVS 4335 |  | UVS Vibration Procedure - Prelim | 20d | 2018-06-25 A | 2018-07-23 A | JUICE-UVS 2350 | 100% |  |  |  |  |  |  | BW | 02 | 02.04.03.03 | UVS ATProcs | Phase C | % C | Mary F | DSI | 50-50 | 19190.22.450 | PH CD |  | 2.4.3.4 |  |  | C |  |  |  | End B |  |
| JUICE-UVS 4347 |  | UVS TVAC Test Procedure - Prelim | 20d | 2018-06-25 A | 2018-07-23 A | JUICE-UVS 2350 | 100% |  |  |  |  |  |  | BW | 02 | 02.04.03.03 | UVS ATProcs | Phase C | % C | Mary F | DSI | 50-50 | 19190.22.450 | PH CD |  | 2.4.3.4 |  |  | C |  |  |  | End B |  |
| JUICE-UVS 4332 |  | UVS Vibration Procedure - Final | 15d | 2019-01-07 A | 2019-01-25 A | JUICE-UVS 4335 | 100% |  |  |  |  |  |  | BW | 02 | 02.04.03.03 | UVS ATProcs | Phase C | % C | Mary F | DSI | 50-50 | 19190.22.450 | PH CD |  | 2.4.3.4 | C/D | PLANS | C | 651 | Y |  |  |  |
| JUICE-UVS 4352 |  | UVS TVAC Test Procedure - Final | 15d | 2019-01-07 A | 2019-07-16 A | JUICE-UVS 4347 | 100% |  | 2019-01-07 | 2019-01-25 |  |  |  | BW | 02 | 02.04.03.03 | UVS ATProcs | Phase C | % C | Mary F | DSI | 50-50 | 19190.22.450 | PH CD |  | 2.4.3.4 | C/D | PLANS | C | 651 | Y |  |  | Y |

Notes:
- JUICE-UVS 592482: Justify: PM Directed SDRL Deliverable Start Date
- JUICE-UVS 3094: Justify: Activity completion is not needed until right before delivery
- JUICE-UVS 2160: Problem: ?? / Technician hours charged to this phase in error. / Activity is not actually started. hrs will be transferred. / Justify: PM Directed SDRL Deliverable Start Date
- JUICE-UVS 2180: Justify: Project level Mandatory Finish Date
- JUICE-UVS 4332: Justify: Project level Mandatory Finish Date
- JUICE-UVS 4352: Justify: Project level Mandatory Finish Date

| ID | WBS | Activity | Type | Duration | Start | Finish | Predecessors | Complete | Remaining | Planned start | Planned finish | Total float | Free float | Expected finish | user_text8 | Work Package | CA | WP/PP | Work Package Name | PHAS - Alice (Old) | BUDG - Budget Phase | SORT - Item Sort | PERT - Pert Select | JUICE UVS Phases | EVT | NASA Phase | JUICE-UVS CAMs | OBS | P6 EVT | JUICE-UVS Charge #s | JUICE-UVS Phase CD | user_text1 JUICE-UVS Risk ID | LOE | M/S | Justify |
| --- | --- | --- | --- | --- | --- | --- | --- | --- | --- | --- | --- | --- | --- | --- | --- | --- | --- | --- | --- | --- | --- | --- | --- | --- | --- | --- | --- | --- | --- | --- | --- | --- | --- | --- | --- |
|  | 04 | **Calibration Proc** |  |  | 2017-06-26 | 2017-08-04 |  |  |  |  |  |  |  |  |  |  |  |  |  |  |  |  |  |  |  |  |  |  |  |  |  |  |  |  |  |
| JUICE-UVS 2178 |  | UVS Calibration Procedure |  | 29d | 2017-06-26 A | 2017-08-04 A | JUICE-UVS 2138 | 100% |  |  |  |  |  |  | MD | 2.4.3.5 | 02 | 02.04.03.04 | UVS CAL Proc | 651 | C/D | PLANS | Y | Phase C | % C | C | Mary F | DSI | 50-50 | 19190.22.460 | PH CD |  |  |  |  |
|  | 05 | **Contamination Control** |  |  | 2016-10-03 | 2017-09-29 |  |  |  |  |  |  |  |  |  |  |  |  |  |  |  |  |  |  |  |  |  |  |  |  |  |  |  |  |  |
| JUICE-UVS 591570 |  | Contamination Control FY 17 |  | 250d | 2016-10-03 A | 2017-09-29 A | JUICE-UVS 0011 | 100% |  |  |  |  |  |  | MD | 2.5.1 | 02 | 02.05 | Contamination Control |  |  |  |  | Phase C | LOE | C | Mary F | DSI | LOE | 19190.22.510 | PH CD | Risk ID 9 | LOE |  |  |
|  | 06 | **Contamination Control FY 18-19** |  |  | 2017-10-02 | 2019-12-17 |  |  |  |  |  |  |  |  |  |  |  |  |  |  |  |  |  |  |  |  |  |  |  |  |  |  |  |  |  |
| JUICE-UVS 591573 |  | Contamination Control FY 18 |  | 250d | 2017-10-02 A | 2018-09-28 A | JUICE-UVS 591570 | 100% |  |  |  |  |  |  | MD | 2.5.1 | 02 | 02.06 | Contamination Control FY 18-19 |  |  |  |  | Phase C | LOE | C | Mary F | DSI | LOE | 19190.22.515 | PH CD | Risk ID 9 | LOE |  |  |
| JUICE-UVS 591576 |  | Contamination Control FY 19 |  | 105d | 2018-10-01 A | 2019-12-17 | JUICE-UVS 591573 | 85% | 16d | 2018-10-01 | 2019-03-01 | 22d | 0d | 2019-12-17 | MD | 2.5.1 | 02 | 02.06 | Contamination Control FY 18-19 |  |  |  |  | Phase C | LOE | C | Mary F | DSI | LOE | 19190.22.515 | PH CD | Risk ID 9 | LOE |  |  |
|  | 07 | **SE SDRLs** |  |  | 2016-12-27 | 2019-10-16 |  |  |  |  |  |  |  |  |  |  |  |  |  |  |  |  |  |  |  |  |  |  |  |  |  |  |  |  |  |
| JUICE-UVS 593397 |  | Engineering, Development & Verification Plan EDVP PM - 01 | milestone | 0d | 2016-12-27 A | 2016-12-27 A | JUICE-UVS 0023 | 100% |  |  |  |  |  |  |  |  | 02 | 02.07 | SE SDRLs |  |  |  |  | Phase C | % C |  | Mary F | DSI | % C |  | PH CD |  |  | D |  |
| JUICE-UVS 593451 |  | Compliance, Traceability & Verification Control Document SE - 15 | milestone | 0d | 2016-12-27 A | 2016-12-27 A | JUICE-UVS 0023 | 100% |  |  |  |  |  |  |  |  | 02 | 02.07 | SE SDRLs |  |  |  |  | Phase C | % C |  | Mary F | DSI | % C |  | PH CD |  |  | D |  |
| JUICE-UVS 593421 |  | Experiment Interface Document - Part B (EID-B) SE - 01 | milestone | 0d | 2017-08-07 A | 2017-08-07 A | JUICE-UVS 2054, JUICE-UVS 593427 | 100% |  |  |  |  |  |  |  |  | 02 | 02.07 | SE SDRLs |  |  |  |  | Phase C | % C |  | Mary F | DSI | % C |  | PH CD |  |  | D |  |
| JUICE-UVS 593427 |  | Instrument Calibration Plan SE - 04 | milestone | 0d | 2017-08-07 A | 2017-08-07 A | JUICE-UVS 2178, JUICE-UVS 593433 | 100% |  |  |  |  |  |  |  |  | 02 | 02.07 | SE SDRLs |  |  |  |  | Phase C | % C |  | Mary F | DSI | % C |  | PH CD |  |  | D |  |
| JUICE-UVS 593433 |  | Instrument EMC COntrol Plan SE - 06 | milestone | 0d | 2017-08-07 A | 2017-08-07 A | JUICE-UVS 0023, JUICE-UVS 593436 | 100% |  |  |  |  |  |  |  |  | 02 | 02.07 | SE SDRLs |  |  |  |  | Phase C | % C |  | Mary F | DSI | % C |  | PH CD |  |  | D |  |
| JUICE-UVS 593436 |  | Instrument Requirements Specification SE - 07 | milestone | 0d | 2017-08-07 A | 2017-08-07 A | JUICE-UVS 2020, JUICE-UVS 593463 | 100% |  |  |  |  |  |  |  |  | 02 | 02.07 | SE SDRLs |  |  |  |  | Phase C | % C |  | Mary F | DSI | % C |  | PH CD |  |  | D |  |
| JUICE-UVS 593463 |  | Instrument Software Configuration File SE - 22 | milestone | 0d | 2017-08-07 A | 2017-08-07 A | JUICE-UVS 0023, JUICE-UVS 593478 | 100% |  |  |  |  |  |  |  |  | 02 | 02.07 | SE SDRLs |  |  |  |  | Phase C | % C |  | Mary F | DSI | % C |  | PH CD |  |  | D |  |
| JUICE-UVS 593538 |  | Fault Tree Analysis (FTA) PA - 03.09 (Not Required) | milestone | 0d | 2017-08-07 A | 2017-08-07 A | JUICE-UVS 593370, JUICE-UVS 593562 | 100% |  |  |  |  |  |  |  |  | 03 | 02.07 | SMA SDRLs |  |  |  |  | Phase C | % C |  | Mary F | DSI | % C |  | PH CD |  |  | D |  |
| JUICE-UVS 593562 |  | Cleanliness & Contamination Requirement Specification & Control Plan PA - 08.01 | milestone | 0d | 2017-08-07 A | 2017-08-07 A | JUICE-UVS 0023, JUICE-UVS 593565 | 100% |  |  |  |  |  |  |  |  | 03 | 02.07 | SMA SDRLs |  |  |  |  | Phase C | % C |  | Mary F | DSI | % C |  | PH CD | Risk ID 9 |  | D |  |
| JUICE-UVS 593565 |  | Contamination Analysis PA - 08.02 | milestone | 0d | 2017-08-07 A | 2017-08-07 A | JUICE-UVS 0023, JUICE-UVS 593397 | 100% |  |  |  |  |  |  |  |  | 03 | 02.07 | SMA SDRLs |  |  |  |  | Phase C | % C |  | Mary F | DSI | % C |  | PH CD | Risk ID 9 |  | D |  |
| JUICE-UVS 593445 |  | JUICE-UVS Electrical Interface Control Document SE - 11 | milestone | 0d | 2017-08-11 A | 2017-08-11 A | JUICE-UVS 2064, JUICE-UVS 593460 | 100% |  |  |  |  |  |  |  |  | 02 | 02.07 | SE SDRLs |  |  |  |  | Phase C | % C |  | Mary F | DSI | % C |  | PH CD |  |  | D |  |
| JUICE-UVS 593523 |  | Dependability Analysis Report PA - 03.02 | milestone | 0d | 2017-08-11 A | 2017-08-11 A | JUICE-UVS 592347, JUICE-UVS 593421 | 100% |  |  |  |  |  |  |  |  | 03 | 02.07 | SMA SDRLs |  |  |  |  | Phase C | % C |  | Mary F | DSI | % C |  | PH CD |  |  | D |  |
| JUICE-UVS 593457 |  | Instrument Operations Concept Document (IOCD) SE - 19 | milestone | 0d | 2017-08-14 A | 2017-08-14 A | JUICE-UVS 593622, JUICE-UVS 593490 | 100% |  |  |  |  |  |  |  |  | 02 | 02.07 | SE SDRLs |  |  |  |  | Phase C | % C |  | Mary F | DSI | % C |  | PH CD |  |  | D |  |
| JUICE-UVS 593490 |  | Instrument Science Performance Report SE - 120 | milestone | 0d | 2017-08-14 A | 2017-08-14 A | JUICE-UVS 593631, JUICE-UVS 593493 | 100% |  |  |  |  |  |  |  |  | 02 | 02.07 | SE SDRLs |  |  |  |  | Phase C | % C |  | Mary F | DSI | % C |  | PH CD |  |  | D |  |
| JUICE-UVS 593493 |  | Instrument Science Implementation Plan SE - 121 | milestone | 0d | 2017-08-14 A | 2017-08-14 A | JUICE-UVS 593634, JUICE-UVS 593445 | 100% |  |  |  |  |  |  |  |  | 02 | 02.07 | SE SDRLs |  |  |  |  | Phase C | % C |  | Mary F | DSI | % C |  | PH CD |  |  | D |  |
| JUICE-UVS 593484 |  | GSE Description & User Manual (TEQ) SE - 34 | milestone | 0d | 2017-08-15 A | 2017-08-15 A | JUICE-UVS 2030, JUICE-UVS 593457 | 100% |  |  |  |  |  |  |  |  | 02 | 02.07 | SE SDRLs |  |  |  |  | Phase C | % C |  | Mary F | DSI | % C |  | PH CD |  |  | D |  |
| JUICE-UVS 593526 |  | FMEA/Hardware-Software Interaction Analysis/Contengency Analysis/Software Criticallity Analysis Report PA - 03.03 | milestone | 0d | 2017-08-16 A | 2017-08-16 A | JUICE-UVS 592458, JUICE-UVS 593484 | 100% |  |  |  |  |  |  |  |  | 03 | 02.07 | SMA SDRLs |  |  |  |  | Phase C | % C |  | Mary F | DSI | % C |  | PH CD |  |  | D |  |
| JUICE-UVS 593430 |  | Instrument AIV/AIT Plan SE - 05 | milestone | 0d | 2017-08-17 A | 2017-08-17 A | JUICE-UVS 2136, JUICE-UVS 593481 | 100% |  |  |  |  |  |  |  |  | 02 | 02.07 | SE SDRLs |  |  |  |  | Phase C | % C |  | Mary F | DSI | % C |  | PH CD |  |  | D |  |
| JUICE-UVS 593532 |  | Worst Case Analysis Report PA - 03.06 | milestone | 0d | 2017-08-17 A | 2017-08-17 A | JUICE-UVS 2100, JUICE-UVS 2103, JUICE-UVS 2096, JUICE-UVS 592354, JUICE-UVS 593526 | 100% |  |  |  |  |  |  |  |  | 03 | 02.07 | SMA SDRLs |  |  |  |  | Phase C | % C |  | Mary F | DSI | % C |  | PH CD |  |  | D |  |
| JUICE-UVS 593460 |  | Instrument Thermal Interface Control Document SE - 20 | milestone | 0d | 2017-09-05 A | 2017-09-05 A | JUICE-UVS 592488, JUICE-UVS 593523 | 100% |  |  |  |  |  |  |  |  | 02 | 02.07 | SE SDRLs |  |  |  |  | Phase C | % C |  | Mary F | DSI | % C |  | PH CD |  |  | D |  |
| JUICE-UVS 593478 |  | Mechanical Analysis Report SE - 32a | milestone | 0d | 2017-09-05 A | 2017-09-05 A | JUICE-UVS 0023, JUICE-UVS 593538 | 100% |  |  |  |  |  |  |  |  | 02 | 02.07 | SE SDRLs |  |  |  |  | Phase C | % C |  | Mary F | DSI | % C |  | PH CD |  |  | D |  |
| JUICE-UVS 593481 |  | Thermal Analysis Report SE - 32a | milestone | 0d | 2017-09-05 A | 2017-09-05 A | JUICE-UVS 592461, JUICE-UVS 593532 | 100% |  |  |  |  |  |  |  |  | 02 | 02.07 | SE SDRLs |  |  |  |  | Phase C | % C |  | Mary F | DSI | % C |  | PH CD |  |  | D |  |
| JUICE-UVS 593439 |  | Instrument Design Report SE - 08 | milestone | 0d | 2017-09-06 A | 2017-09-06 A | JUICE-UVS 593613, JUICE-UVS 593442 | 100% |  |  |  |  |  |  |  |  | 02 | 02.07 | SE SDRLs |  |  |  |  | Phase C | % C |  | Mary F | DSI | % C |  | PH CD |  |  | D |  |
| JUICE-UVS 593442 |  | Technical Budget Report SE - 09 | milestone | 0d | 2017-09-08 A | 2017-09-08 A | JUICE-UVS 593616, JUICE-UVS 593454 | 100% |  |  |  |  |  |  |  |  | 02 | 02.07 | SE SDRLs |  |  |  |  | Phase C | % C |  | Mary F | DSI | % C |  | PH CD |  |  | D |  |
| JUICE-UVS 593454 |  | Trade-Off Report SE - 17 | milestone | 0d | 2017-09-08 A | 2017-09-08 A | JUICE-UVS 593619, JUICE-UVS 593469 | 100% |  |  |  |  |  |  |  |  | 02 | 02.07 | SE SDRLs |  |  |  |  | Phase C | % C |  | Mary F | DSI | % C |  | PH CD |  |  | D |  |
| JUICE-UVS 593469 |  | Instrument Configuration Item Data List (CIDL) SE - 23 | milestone | 0d | 2017-09-08 A | 2017-09-08 A | JUICE-UVS 593625, JUICE-UVS 593475 | 100% |  |  |  |  |  |  |  |  | 02 | 02.07 | SE SDRLs |  |  |  |  | Phase C | % C |  | Mary F | DSI | % C |  | PH CD |  |  | D |  |
| JUICE-UVS 593475 |  | Fracture Control Plan & Summary Report SE - 31 | milestone | 0d | 2017-09-08 A | 2017-09-08 A | JUICE-UVS 593628, JUICE-UVS 593544 | 100% |  |  |  |  |  |  |  |  | 02 | 02.07 | SE SDRLs |  |  |  |  | Phase C | % C |  | Mary F | DSI | % C |  | PH CD |  |  | D |  |
| JUICE-UVS 593544 |  | Radiation Effect Modeling Report PA - 06.01 | milestone | 0d | 2017-10-02 A | 2017-10-02 A | JUICE-UVS 593262, JUICE-UVS 593430 | 100% |  |  |  |  |  |  |  |  | 03 | 02.07 | SMA SDRLs |  |  |  |  | Phase C | % C |  | Mary F | DSI | % C |  | PH CD |  |  | D |  |
| JUICE-UVS 593472 |  | Instrument User Manual SE - 26 | milestone | 0d | 2019-10-16 A | 2019-10-16 A | JUICE-UVS11520 | 100% |  | 2019-10-25 | 2019-10-25 |  |  |  |  |  | 02 | 02.07 | SE SDRLs |  |  |  |  | Phase C | % C |  | Mary F | DSI | % C |  | PH CD |  |  | D | PM Directed SDRL Deliverable Finish Date For CDR |

| ID | WBS | Activity | Duration | Start | Finish | Predecessors | Complete | Remaining | Planned start | Planned finish | Total float | Free float | Expected finish | user_text8 | Work Package | CA | WP/PP | Work Package Name | JUICE UVS Phases | EVT | JUICE UVS Phase CD | NASA Phase | JUICE-UVS CAMs | OBS | P6 EVT | JUICE-UVS Charge #s | LOE | JUICE-UVS Phase CD | Forecast Chg | Justify |
| --- | --- | --- | --- | --- | --- | --- | --- | --- | --- | --- | --- | --- | --- | --- | --- | --- | --- | --- | --- | --- | --- | --- | --- | --- | --- | --- | --- | --- | --- | --- |
|  | 03 | **Safety & Performance Assurance** |  | 2016-10-03 | 2019-12-17 |  |  |  |  |  |  |  |  |  |  |  |  |  |  |  |  |  |  |  |  |  |  |  |  |  |
|  | 01 | **PA Support** |  | 2016-10-03 | 2019-12-17 |  |  |  |  |  |  |  |  |  |  |  |  |  |  |  |  |  |  |  |  |  |  |  |  |  |
|  | 01 | **PA Sustaining Support** |  | 2016-10-03 | 2019-12-17 |  |  |  |  |  |  |  |  |  |  |  |  |  |  |  |  |  |  |  |  |  |  |  |  |  |
| JUICE-UVS 592323 |  | PA FY 17 Phase C | 250d | 2016-10-03 A | 2017-09-29 A | JUICE-UVS 0011 | 100% |  |  |  |  |  |  | JG | 3.1.1 | 03 | 03.01.01 | PA Sustaining Support | Phase C | LOE | PH CD | C | Joerg | IQS | LOE | 19190.23.110 | LOE | PH CD |  |  |
| JUICE-UVS 592329 |  | PA FY 18 | 250d | 2017-10-02 A | 2018-09-28 A | JUICE-UVS 592323 | 100% |  |  |  |  |  |  | JG | 3.1.1 | 03 | 03.01.01 | PA Sustaining Support | Phase C | LOE |  | C | Joerg | IQS | LOE | 19190.23.110 | LOE | PH CD |  |  |
| JUICE-UVS 592332 |  | PA FY 19 | 105d | 2018-10-01 A | 2019-12-17 | JUICE-UVS 592329 | 85% | 16d | 2018-10-01 | 2019-03-01 | 22d | 0d | 2019-12-17 | JG | 3.1.1 | 03 | 03.01.01 | PA Sustaining Support | Phase C | LOE |  | C | Joerg | IQS | LOE | 19190.23.110 | LOE | PH CD | Y |  |
|  | 02 | **PA Discrete Support** |  | 2017-08-07 | 2017-08-30 |  |  |  |  |  |  |  |  |  |  |  |  |  |  |  |  |  |  |  |  |  |  |  |  |  |
| JUICE-UVS 593637 |  | Instrument Product Assurance & Safety Plan PA - 01.04 | 18d | 2017-08-07 A | 2017-08-30 A | JUICE-UVS 0023 | 100% |  |  |  |  |  |  |  |  | 03 | 03.01.02 | PA Discrete Support | Phase C | % C |  |  | Joerg | IQS | 50-50 | 19190.23.120 |  | PH CD |  |  |
| JUICE-UVS 593643 |  | Non-Conformance Report (NCR) PA - 01.05 | 10d | 2017-08-17 A | 2017-08-30 A | JUICE-UVS 0023 | 100% |  |  |  |  |  |  |  |  | 03 | 03.01.02 | PA Discrete Support | Phase C | % C |  |  | Joerg | IQS | 0-100 | 19190.23.120 |  | PH CD |  | PM Directed SDRL Deliverable Start Date for CDR |
| JUICE-UVS 593646 |  | NCRs Status List PA - 01.06 | 10d | 2017-08-17 A | 2017-08-30 A | JUICE-UVS 0023 | 100% |  |  |  |  |  |  |  |  | 03 | 03.01.02 | PA Discrete Support | Phase C | % C |  |  | Joerg | IQS | 0-100 | 19190.23.120 |  | PH CD |  | PM Directed SDRL Deliverable Start Date for CDR |
|  | 02 | **Safety** |  | 2016-10-31 | 2019-12-17 |  |  |  |  |  |  |  |  |  |  |  |  |  |  |  |  |  |  |  |  |  |  |  |  |  |
|  | 01 | **Safety Engineering** |  | 2016-10-31 | 2019-12-17 |  |  |  |  |  |  |  |  |  |  |  |  |  |  |  |  |  |  |  |  |  |  |  |  |  |
| JUICE-UVS 591630 |  | Safety Engineering FY 17 Phase C | 230d | 2016-10-31 A | 2017-09-29 A | JUICE-UVS 0011 | 100% |  |  |  |  |  |  | RA | 3.2.1 | 03 | 03.02.01 | Safety Engineering | Phase C | LOE |  | C | Joerg | IQS | LOE | 19190.23.210 | LOE | PH CD |  |  |
| JUICE-UVS 591633 |  | Safety Engineering FY 18 | 250d | 2017-10-02 A | 2018-09-28 A | JUICE-UVS 591630 | 100% |  |  |  |  |  |  | RA | 3.2.1 | 03 | 03.02.01 | Safety Engineering | Phase C | LOE |  | C | Joerg | IQS | LOE | 19190.23.210 | LOE | PH CD |  |  |
| JUICE-UVS 591636 |  | Safety Engineering FY 19 | 105d | 2018-10-01 A | 2019-12-17 | JUICE-UVS 591633 | 85% | 16d | 2018-10-01 | 2019-03-01 | 22d | 0d | 2019-12-17 | RA | 3.2.1 | 03 | 03.02.01 | Safety Engineering | Phase C | LOE |  | C | Joerg | IQS | LOE | 19190.23.210 | LOE | PH CD |  |  |
|  | 02 | **Hazard Analysis** |  | 2017-02-06 | 2017-08-30 |  |  |  |  |  |  |  |  |  |  |  |  |  |  |  |  |  |  |  |  |  |  |  |  |  |
| JUICE-UVS 593649 |  | Hazard Analysis PA - 04.01 Update per RIDS | 25d | 2017-02-06 A | 2017-03-10 A | JUICE-UVS 0023 | 100% |  |  |  |  |  |  |  |  | 03 | 03.02.02 | Hazard Analysis | Phase C | % C |  |  | Joerg | IQS | 50-50 | 19190.23.220 |  | PH CD |  |  |
| JUICE-UVS 593706 |  | Hazard Analysis PA - 04.01 for CDR | 20d | 2017-08-07 A | 2017-08-30 A | JUICE-UVS 0023 | 100% |  | 2017-08-07 | 2017-09-05 |  |  |  |  |  | 03 | 03.02.02 | Hazard Analysis | Phase C |  |  |  | Joerg | IQS | 50-50 | 19190.23.220 |  | PH CD |  |  |
|  | 03 | **Parts Engineering** |  | 2016-10-03 | 2019-12-17 |  |  |  |  |  |  |  |  |  |  |  |  |  |  |  |  |  |  |  |  |  |  |  |  |  |
|  | 01 | **Sustained Parts Eng.** |  | 2016-10-03 | 2019-12-17 |  |  |  |  |  |  |  |  |  |  |  |  |  |  |  |  |  |  |  |  |  |  |  |  |  |
| JUICE-UVS 591600 |  | Parts Engineering FY 17 Phase C | 250d | 2016-10-03 A | 2017-09-29 A | JUICE-UVS 0011 | 100% |  |  |  |  |  |  | JT | 1.3.3 | 03 | 03.03.01 | Sustained Parts Eng. | Phase C | LOE |  | C | Joerg | IQS | LOE | 19190.23.310 | LOE | PH CD |  |  |
| JUICE-UVS 591603 |  | Parts Engineering FY 18 | 250d | 2017-10-02 A | 2018-09-28 A | JUICE-UVS 591600 | 100% |  |  |  |  |  |  | JT | 1.3.3 | 03 | 03.03.01 | Sustained Parts Eng. | Phase C | LOE |  | C | Joerg | IQS | LOE | 19190.23.310 | LOE | PH CD |  |  |
| JUICE-UVS 591606 |  | Parts Engineering FY 19 | 105d | 2018-10-01 A | 2019-12-17 | JUICE-UVS 591603 | 85% | 16d | 2018-10-01 | 2019-03-01 | 22d | 0d | 2019-12-17 | JT | 1.3.3 | 03 | 03.03.01 | Sustained Parts Eng. | Phase C | LOE |  | C | Joerg | IQS | LOE | 19190.23.310 | LOE | PH CD | Y |  |
|  | 02 | **Discrete Parts Eng.** |  | 2017-08-17 | 2017-08-30 |  |  |  |  |  |  |  |  |  |  |  |  |  |  |  |  |  |  |  |  |  |  |  |  |  |
| JUICE-UVS 593640 |  | Alerts & Warnings Status List PA - 01.04 | 10d | 2017-08-17 A | 2017-08-30 A | JUICE-UVS 0023 | 100% |  |  |  |  |  |  |  |  | 03 | 03.03.02 | Discrete Parts Eng. | Phase C | % C |  |  | Joerg | IQS | 0-100 | 19190.23.320 |  | PH CD |  | PM Directed SDRL Deliverable Start Date for CDR |

| ID | WBS | Activity | Type | Duration | Start | Finish | Predecessors | Complete | Remaining | Planned start | Planned finish | Total float | Free float | Expected finish | user_text8 | Work Package | CA | WP/PP | Work Package Name | JUICE UVS Phases | EVT | JUICE UVS Phase CD | NASA Phase | JUICE-UVS CAMs | OBS | P6 EVT | JUICE-UVS Charge #s | LOE | JUICE-UVS Phase CD | user_text4 | Justify | M/S |
| --- | --- | --- | --- | --- | --- | --- | --- | --- | --- | --- | --- | --- | --- | --- | --- | --- | --- | --- | --- | --- | --- | --- | --- | --- | --- | --- | --- | --- | --- | --- | --- | --- |
|  | 04 | **Materials & Process** |  |  | 2016-10-03 | 2019-12-17 |  |  |  |  |  |  |  |  |  |  |  |  |  |  |  |  |  |  |  |  |  |  |  |  |  |  |
| JUICE-UVS 592287 |  | Materials & Process Support FY 17 Phase C |  | 250d | 2016-10-03 A | 2017-09-29 A | JUICE-UVS 0011 | 100% |  |  |  |  |  |  | RA | 1.3.4 | 03 | 03.04 | Materials & Process | Phase C | LOE | PH CD | C | Joerg | IQS | LOE | 19190.23.410 | LOE | PH CD |  |  |  |
| JUICE-UVS 592293 |  | Materials & Process Support FY 18 |  | 250d | 2017-10-02 A | 2018-09-28 A | JUICE-UVS 592287 | 100% |  |  |  |  |  |  | RA | 1.3.4 | 03 | 03.04 | Materials & Process | Phase C | LOE |  | C | Joerg | IQS | LOE | 19190.23.410 | LOE | PH CD |  |  |  |
| JUICE-UVS 592296 |  | Materials & Process Support FY 19 |  | 105d | 2018-10-01 A | 2019-12-17 | JUICE-UVS 592293 | 85% | 16d | 2018-10-01 | 2019-03-01 | 22d | 0d | 2019-12-17 | RA | 1.3.4 | 03 | 03.04 | Materials & Process | Phase C | LOE |  | C | Joerg | IQS | LOE | 19190.23.410 | LOE | PH CD |  |  |  |
|  | 05 | **Hardware QA Support** |  |  | 2016-10-03 | 2019-12-17 |  |  |  |  |  |  |  |  |  |  |  |  |  |  |  |  |  |  |  |  |  |  |  |  |  |  |
| JUICE-UVS 2219 |  | QA FY 17 Phase C |  | 250d | 2016-10-03 A | 2017-09-29 A | JUICE-UVS 0011 | 100% |  |  |  |  |  |  | RA | 1.3.5 | 03 | 03.05 | Hardware QA Support | Phase C | LOE |  | C | Joerg | IQS | LOE | 19190.23.510 | LOE | PH CD |  |  |  |
| JUICE-UVS 2222 |  | QA FY 18 |  | 250d | 2017-10-02 A | 2018-09-28 A | JUICE-UVS 2219 | 100% |  |  |  |  |  |  | RA | 1.3.5 | 03 | 03.05 | Hardware QA Support | Phase C | LOE |  | C | Joerg | IQS | LOE | 19190.23.510 | LOE | PH CD |  |  |  |
| JUICE-UVS 2225 |  | QA FY 19 |  | 105d | 2018-10-01 A | 2019-12-17 | JUICE-UVS 2222 | 85% | 16d | 2018-10-01 | 2019-03-01 | 22d | 0d | 2019-12-17 | RA | 1.3.5 | 03 | 03.05 | Hardware QA Support | Phase C | LOE |  | C | Joerg | IQS | LOE | 19190.23.510 | LOE | PH CD |  |  |  |
|  | 06 | **Software QA Support** |  |  | 2016-10-03 | 2019-12-17 |  |  |  |  |  |  |  |  |  |  |  |  |  |  |  |  |  |  |  |  |  |  |  |  |  |  |
|  | 01 | **Sustained SQA** |  |  | 2016-10-03 | 2019-12-17 |  |  |  |  |  |  |  |  |  |  |  |  |  |  |  |  |  |  |  |  |  |  |  |  |  |  |
| JUICE-UVS 592338 |  | QA FY 17 Phase C |  | 250d | 2016-10-03 A | 2017-09-28 A | JUICE-UVS 0011 | 100% |  | 2016-10-03 | 2017-09-29 |  |  |  | PB | 1.3.6 | 03 | 03.06.01 | Sustained SQA | Phase C | LOE |  | C | Joerg | IQS | LOE | 19190.23.610 | LOE | PH CD | Mod |  |  |
| JUICE-UVS 592341 |  | QA FY 18 |  | 250d | 2017-10-02 A | 2018-09-28 A | JUICE-UVS 592338 | 100% |  |  |  |  |  |  | PB | 1.3.6 | 03 | 03.06.01 | Sustained SQA | Phase C | LOE |  | C | Joerg | IQS | LOE | 19190.23.610 | LOE | PH CD |  |  |  |
| JUICE-UVS 592344 |  | QA FY 19 |  | 105d | 2018-10-01 A | 2019-12-17 | JUICE-UVS 592341 | 85% | 16d | 2018-10-01 | 2019-03-01 | 22d | 0d | 2019-12-17 | PB | 1.3.6 | 03 | 03.06.01 | Sustained SQA | Phase C | LOE |  | C | Joerg | IQS | LOE | 19190.23.610 | LOE | PH CD |  |  |  |
|  | 02 | **Discrete SCA** |  |  | 2017-08-17 | 2017-08-30 |  |  |  |  |  |  |  |  |  |  |  |  |  |  |  |  |  |  |  |  |  |  |  |  |  |  |
| JUICE-UVS 593652 |  | Software Product Assurance Milestone Report PA - 09.02 |  | 10d | 2017-08-17 A | 2017-08-30 A | JUICE-UVS 0023 | 100% |  |  |  |  |  |  |  |  | 03 | 03.06.02 | Discrete SQA | Phase C | % C |  |  | Joerg | IQS | 0-100 | 19190.23.620 |  | PH CD |  | PM Directed SDRL Deliverable Start Date for CDR |  |
| JUICE-UVS 593961 |  | Software Product Assurance Plan PA - 09.01 |  | 10d | 2017-08-17 A | 2017-08-30 A | JUICE-UVS 0023 | 100% |  |  |  |  |  |  |  |  | 03 | 03.06.02 | Discrete SQA | Phase C | % C |  |  | Joerg | IQS | 0-100 | 19190.23.620 |  | PH CD |  | PM Directed SDRL Deliverable Start Date for CDR |  |
|  | 08 | **SMA SDRLs** |  |  | 2017-03-10 | 2017-08-30 |  |  |  |  |  |  |  |  |  |  |  |  |  |  |  |  |  |  |  |  |  |  |  |  |  |  |
| JUICE-UVS 593964 |  | Hazard Analysis PA - 04.01 Update per RIDS | milestone | 0d | 2017-03-10 A | 2017-03-10 A | JUICE-UVS 593649 | 100% |  |  |  |  |  |  |  |  | 03 | 03.08 | SMA SDRLs | Phase C | % C |  |  | Joerg | IQS | 0-100 |  |  | PH CD |  |  | D |
| JUICE-UVS 593556 |  | Derating Analysis PA - 07.04 | milestone | 0d | 2017-08-07 A | 2017-08-07 A | JUICE-UVS 592351, JUICE-UVS 592366, JUICE-UVS 592354, JUICE-UVS 592356, JUICE-UVS 592362 | 100% |  |  |  |  |  |  |  |  | 03 | 03.08 | SMA SDRLs | Phase C | % C |  |  | Joerg | IQS | 0-100 |  |  | PH CD |  |  | D |
| JUICE-UVS 593559 |  | Declared Components List PA - 07.05 | milestone | 0d | 2017-08-07 A | 2017-08-07 A | JUICE-UVS 3217, JUICE-UVS 3277, JUICE-UVS 592740 | 100% |  |  |  |  |  |  |  |  | 03 | 03.08 | SMA SDRLs | Phase C | % C |  |  | Joerg | IQS | 0-100 |  |  | PH CD |  |  | D |
| JUICE-UVS 593967 |  | Declared Materials List PA - 07.01 |  | 10d | 2017-08-17 A | 2017-08-30 A | JUICE-UVS 592740, JUICE-UVS 3277, JUICE-UVS 3217, JUICE-UVS 2581 | 100% |  |  |  |  |  |  |  |  | 03 | 03.08 | SMA SDRLs | Phase C | % C |  |  | Joerg | IQS | 0-100 |  |  | PH CD |  | PM Directed SDRL Deliverable Start Date for CDR |  |
| JUICE-UVS 593970 |  | Declared Mechanical Parts List PA - 07.02 |  | 10d | 2017-08-17 A | 2017-08-30 A | JUICE-UVS 2581 | 100% |  |  |  |  |  |  |  |  | 03 | 03.08 | SMA SDRLs | Phase C | % C |  |  | Joerg | IQS | 0-100 |  |  | PH CD |  | PM Directed SDRL Deliverable Start Date for CDR |  |
| JUICE-UVS 593973 |  | Declared Processes List PA - 07.03 |  | 10d | 2017-08-17 A | 2017-08-30 A | JUICE-UVS 2581 | 100% |  |  |  |  |  |  |  |  | 03 | 03.08 | SMA SDRLs | Phase C | % C |  |  | Joerg | IQS | 0-100 |  |  | PH CD |  | PM Directed SDRL Deliverable Start Date for CDR |  |
| JUICE-UVS 593496 |  | Instrument Product Assurance & Safety Plan PA - 01.04 | milestone | 0d | 2017-08-30 A | 2017-08-30 A | JUICE-UVS 593637 FF | 100% |  |  |  |  |  |  |  |  | 03 | 03.08 | SMA SDRLs | Phase C | % C |  |  | Joerg | IQS | 0-100 |  |  | PH CD |  |  | D |
| JUICE-UVS 593502 |  | Alerts & Warnings Status List PA - 01.04 | milestone | 0d | 2017-08-30 A | 2017-08-30 A | JUICE-UVS 593640 | 100% |  |  |  |  |  |  |  |  | 03 | 03.08 | SMA SDRLs | Phase C | % C |  |  | Joerg | IQS | 0-100 |  |  | PH CD |  |  | D |
| JUICE-UVS 593505 |  | Non-Conformance Report (NCR) PA - 01.05 | milestone | 0d | 2017-08-30 A | 2017-08-30 A | JUICE-UVS 593643 FF | 100% |  |  |  |  |  |  |  |  | 03 | 03.08 | SMA SDRLs | Phase C | % C |  |  | Joerg | IQS | 0-100 |  |  | PH CD |  |  | D |
| JUICE-UVS 593508 |  | NCRs Status List PA - 01.06 | milestone | 0d | 2017-08-30 A | 2017-08-30 A | JUICE-UVS 593646 FF | 100% |  |  |  |  |  |  |  |  | 03 | 03.08 | SMA SDRLs | Phase C | % C |  |  | Joerg | IQS | 0-100 |  |  | PH CD |  |  | D |
| JUICE-UVS 593541 |  | Hazard Analysis PA - 04.01 for CDR | milestone | 0d | 2017-08-30 A | 2017-08-30 A | JUICE-UVS 593706 | 100% |  |  |  |  |  |  |  |  | 03 | 03.08 | SMA SDRLs | Phase C | % C |  |  | Joerg | IQS | 0-100 |  |  | PH CD |  |  | D |
| JUICE-UVS 593568 |  | Software Product Assurance Plan PA - 09.01 | milestone | 0d | 2017-08-30 A | 2017-08-30 A | JUICE-UVS 593961, JUICE-UVS 593376 | 100% |  |  |  |  |  |  |  |  | 03 | 03.08 | SMA SDRLs | Phase C | % C |  |  | Joerg | IQS | 0-100 |  |  | PH CD |  |  | D |
| JUICE-UVS 593571 |  | Software Product Assurance Milestone Report PA - 09.02 | milestone | 0d | 2017-08-30 A | 2017-08-30 A | JUICE-UVS 593652 | 100% |  |  |  |  |  |  |  |  | 03 | 03.08 | SMA SDRLs | Phase C | % C |  |  | Joerg | IQS | 0-100 |  |  | PH CD |  |  | D |
| JUICE-UVS 593976 |  | Declared Materials List PA - 07.01 | milestone | 0d | 2017-08-30 A | 2017-08-30 A | JUICE-UVS 593967 | 100% |  |  |  |  |  |  |  |  | 03 | 03.08 | SMA SDRLs | Phase C | % C |  |  | Joerg | IQS | 0-100 |  |  | PH CD |  |  | D |
| JUICE-UVS 593979 |  | Declared Mechanical Parts List PA - 07.02 | milestone | 0d | 2017-08-30 A | 2017-08-30 A | JUICE-UVS 593970 | 100% |  |  |  |  |  |  |  |  | 03 | 03.08 | SMA SDRLs | Phase C | % C |  |  | Joerg | IQS | 0-100 |  |  | PH CD |  |  | D |
| JUICE-UVS 593982 |  | Declared Processes List PA - 07.03 | milestone | 0d | 2017-08-30 A | 2017-08-30 A | JUICE-UVS 593973 | 100% |  |  |  |  |  |  |  |  | 03 | 03.08 | SMA SDRLs | Phase C | % C |  |  | Joerg | IQS | 0-100 |  |  | PH CD |  |  | D |

| ID | WBS | Activity | Duration | Start | Finish | Predecessors | Complete | Remaining | Planned start | Planned finish | Total float | Expected finish | user_text8 | Work Package | CA | WP/PP | Work Package Name | JUICE UVS Phases | EVT | NASA Phase | JUICE-UVS CAMs | OBS | P6 EVT | JUICE-UVS Charge #s | LOE | JUICE-UVS Phase CD | Justify |
| --- | --- | --- | --- | --- | --- | --- | --- | --- | --- | --- | --- | --- | --- | --- | --- | --- | --- | --- | --- | --- | --- | --- | --- | --- | --- | --- | --- |
|  | 04 | **Science** |  | 2016-10-03 | 2022-09-21 |  |  |  |  |  |  |  |  |  |  |  |  |  |  |  |  |  |  |  |  |  |  |
|  | 01 | **Science Oversight & Support - PI** |  | 2016-10-03 | 2022-09-21 |  |  |  |  |  |  |  |  |  |  |  |  |  |  |  |  |  |  |  |  |  |  |
|  | 01 | **SwRI PI/DPI** |  | 2016-10-03 | 2022-09-21 |  |  |  |  |  |  |  |  |  |  |  |  |  |  |  |  |  |  |  |  |  |  |
|  | 01 | **SwRI PI/DPI Phase C/D** |  | 2016-10-03 | 2022-09-21 |  |  |  |  |  |  |  |  |  |  |  |  |  |  |  |  |  |  |  |  |  |  |
|  | 01 | **Science Oversight & Support - PI** |  | 2016-10-03 | 2022-09-21 |  |  |  |  |  |  |  |  |  |  |  |  |  |  |  |  |  |  |  |  |  |  |
| JUICE-UVS 11443 |  | PI/DPI Oversight - FY 17 Phase C Start | 250d | 2016-10-03 A | 2017-09-29 A | JUICE-UVS 0011 | 100% |  |  |  |  |  | CK | 4.1.1 | 04 | 04.01.01.01.01 | Science Oversight & Support PI | Phase C | LOE | C | Cyndi | SSED | LOE | 19190.24.110 | LOE | PH CD |  |
| JUICE-UVS 11446 |  | PI/DPI Oversight - FY 18 | 250d | 2017-10-02 A | 2018-09-28 A | JUICE-UVS 11443 | 100% |  |  |  |  |  | CK | 4.1.1 | 04 | 04.01.01.01.01 | Science Oversight & Support PI | Phase C | LOE | C | Cyndi | SSED | LOE | 19190.24.110 | LOE | PH CD |  |
| JUICE-UVS 11449 |  | PI/DPI Oversight - FY 19 | 251d | 2018-10-01 A | 2019-09-27 A | JUICE-UVS 11446 | 100% |  |  |  |  |  | CK | 4.1.1 | 04 | 04.01.01.01.01 | Science Oversight & Support PI | Phase C | LOE | C | Cyndi | SSED | LOE | 19190.24.110 | LOE | PH CD |  |
| JUICE-UVS 11452 |  | PI/DPI Oversight - FY 20 | 252d | 2019-09-30 A | 2020-09-30 | JUICE-UVS 11449 | 15% | 214d | 2019-10-01 | 2020-09-30 | 0d | 2020-09-30 | CK | 4.1.1 | 04 | 04.01.01.01.01 | Science Oversight & Support PI | Phase C | LOE | C | Cyndi | SSED | LOE | 19190.24.110 | LOE | PH CD |  |
| JUICE-UVS 11506 |  | PI/DPI Oversight - FY 21 End of Phase C | 32d | 2020-10-01 | 2020-11-13 | JUICE-UVS 11452 |  |  |  |  | 0d |  | CK | 4.1.1 | 04 | 04.01.01.01.01 | Science Oversight & Support PI | Phase C | LOE | C | Cyndi | SSED | LOE | 19190.24.110 | LOE | PH CD |  |
| JUICE-UVS 11455 |  | PI/DPI Oversight - FY 21 Start of Phase D | 218d | 2020-11-16 | 2021-09-30 | JUICE-UVS 11506 |  |  |  |  | 0d |  | CK | 4.1.1 | 04 | 04.01.01.01.01 | Science Oversight & Support PI | Phase D | LOE | D | Cyndi | SSED | LOE | 19190.24.110 | LOE | PH CD |  |
| JUICE-UVS 11509 |  | PI/DPI Oversight - FY 22 End of Phase D | 243d | 2021-10-01 | 2022-09-21 | JUICE-UVS 11455 |  |  |  |  | 0d |  | CK | 4.1.1 | 04 | 04.01.01.01.01 | Science Oversight & Support PI | Phase D | LOE | D | Cyndi | SSED | LOE | 19190.24.110 | LOE | PH CD |  |
|  | 02 | **Science Oversight & Support - DPI** |  | 2016-10-03 | 2022-09-21 |  |  |  |  |  |  |  |  |  |  |  |  |  |  |  |  |  |  |  |  |  |  |
| JUICE-UVS 593676 |  | PI/DPI Oversight - FY 17 Phase C Start | 250d | 2016-10-03 A | 2017-09-29 A | JUICE-UVS 0011 | 100% |  |  |  |  |  | CK | 4.1.1 | 04 | 04.01.01.01.02 | Science Oversight & Support DPI | Phase C | LOE | C | Cyndi | SSED | LOE | 19190.24.120 | LOE | PH CD |  |
| JUICE-UVS 593679 |  | PI/DPI Oversight - FY 18 | 250d | 2017-10-02 A | 2018-09-28 A | JUICE-UVS 593676 | 100% |  |  |  |  |  | CK | 4.1.1 | 04 | 04.01.01.01.02 | Science Oversight & Support DPI | Phase C | LOE | C | Cyndi | SSED | LOE | 19190.24.120 | LOE | PH CD |  |
| JUICE-UVS 593683 |  | PI/DPI Oversight - FY 19 | 251d | 2018-10-01 A | 2019-09-27 A | JUICE-UVS 593679 | 100% |  |  |  |  |  | CK | 4.1.1 | 04 | 04.01.01.01.02 | Science Oversight & Support DPI | Phase C | LOE | C | Cyndi | SSED | LOE | 19190.24.120 | LOE | PH CD |  |
| JUICE-UVS 593685 |  | PI/DPI Oversight - FY 20 | 252d | 2019-09-30 A | 2020-09-30 | JUICE-UVS 593683 | 15% | 214d | 2019-10-01 | 2020-09-30 | 0d | 2020-09-30 | CK | 4.1.1 | 04 | 04.01.01.01.02 | Science Oversight & Support DPI | Phase C | LOE | C | Cyndi | SSED | LOE | 19190.24.120 | LOE | PH CD |  |
| JUICE-UVS 593688 |  | PI/DPI Oversight - FY 21 End of Phase C | 32d | 2020-10-01 | 2020-11-13 | JUICE-UVS 593685 |  |  |  |  | 0d |  | CK | 4.1.1 | 04 | 04.01.01.01.02 | Science Oversight & Support DPI | Phase C | LOE | C | Cyndi | SSED | LOE | 19190.24.120 | LOE | PH CD |  |
| JUICE-UVS 593691 |  | PI/DPI Oversight - FY 21 Start of Phase D | 218d | 2020-11-16 | 2021-09-30 | JUICE-UVS 593688 |  |  |  |  | 0d |  | CK | 4.1.1 | 04 | 04.01.01.01.02 | Science Oversight & Support DPI | Phase D | LOE | D | Cyndi | SSED | LOE | 19190.24.120 | LOE | PH CD |  |
| JUICE-UVS 593694 |  | PI/DPI Oversight - FY 22 End of Phase D | 243d | 2021-10-01 | 2022-09-21 | JUICE-UVS 593691 |  |  |  |  | 0d |  | CK | 4.1.1 | 04 | 04.01.01.01.02 | Science Oversight & Support DPI | Phase D | LOE | D | Cyndi | SSED | LOE | 19190.24.120 | LOE | PH CD |  |
|  | 03 | **Discrete Science - PI/DPI** |  | 2017-08-01 | 2017-08-14 |  |  |  |  |  |  |  |  |  |  |  |  |  |  |  |  |  |  |  |  |  |  |
| JUICE-UVS 593631 |  | Instrument Science Performance Report SE - 120 | 10d | 2017-08-01 A | 2017-08-14 A | JUICE-UVS 0023 | 100% |  |  |  |  |  |  |  | 04 | 04.01.01.01.03 | Discrete Science - PI | Phase C | % C |  | Cyndi | SSED | 50-50 | 19190.24.130 |  | PH CD | PM Directed SDRL Deliverable Start Date for CDR |
| JUICE-UVS 593634 |  | Instrument Science Implementation Plan SE - 121 | 10d | 2017-08-01 A | 2017-08-14 A | JUICE-UVS 0023 | 100% |  |  |  |  |  |  |  | 04 | 04.01.01.01.03 | Discrete Science - PI | Phase C | % C |  | Cyndi | SSED | 50-50 | 19190.24.130 |  | PH CD | PM Directed SDRL Deliverable Start Date for CDR |
|  | 02 | **SwRI CO-I** |  | 2016-10-03 | 2022-09-21 |  |  |  |  |  |  |  |  |  |  |  |  |  |  |  |  |  |  |  |  |  |  |
|  | 01 | **SwRI CO-I Phase C/D** |  | 2016-10-03 | 2022-09-21 |  |  |  |  |  |  |  |  |  |  |  |  |  |  |  |  |  |  |  |  |  |  |
| JUICE-UVS 11311 |  | PS Support - FY 17 Phase C Start | 250d | 2016-10-03 A | 2017-09-29 A | JUICE-UVS 0011 | 100% |  |  |  |  |  | CK |  | 04 | 04.01.02.01 | Science Oversight & Support CO-I | Phase C | LOE | C | Cyndi | SSED | LOE | 19190.24.140 | LOE | PH CD |  |
| JUICE-UVS 8170 |  | Co-I Support - FY17 Phase C Start | 250d | 2016-10-03 A | 2017-09-29 A | JUICE-UVS 0011 | 100% |  |  |  |  |  | CK |  | 04 | 04.01.02.01 | Science Oversight & Support CO-I | Phase C | LOE | C | Cyndi | SSED | LOE | 19190.24.140 | LOE | PH CD |  |
| JUICE-UVS 10849 |  | PS Support - FY 18 | 250d | 2017-10-02 A | 2018-09-28 A | JUICE-UVS 11311 | 100% |  |  |  |  |  |  |  | 04 | 04.01.02.01 |  | Phase C | LOE | C | Cyndi | SSED | LOE | 19190.24.140 | LOE | PH CD |  |
| JUICE-UVS 1400 |  | CO-I Support - FY 18 | 250d | 2017-10-02 A | 2018-09-28 A | JUICE-UVS 8170 | 100% |  |  |  |  |  |  |  |  |  |  |  | LOE |  | Cyndi | SSED | LOE |  | LOE |  |  |
| JUICE-UVS 10852 |  | PS Support - FY 19 | 251d | 2018-10-01 A | 2019-09-27 A | JUICE-UVS 10849 | 100% |  |  |  |  |  | CK |  | 04 | 04.01.02.01 | Science Oversight & Support CO-I | Phase C | LOE | C | Cyndi | SSED | LOE | 19190.24.140 | LOE | PH CD |  |
| JUICE-UVS 8173 |  | Co-I Support - FY 19 | 251d | 2018-10-01 A | 2019-09-27 A | JUICE-UVS 1400 | 100% |  |  |  |  |  | CK |  | 04 | 04.01.02.01 | Science Oversight & Support CO-I | Phase C | LOE | C | Cyndi | SSED | LOE | 19190.24.140 | LOE | PH CD |  |
| JUICE-UVS 10855 |  | PS Support - FY 20 | 252d | 2019-09-30 A | 2020-09-30 | JUICE-UVS 10852 | 15% | 214d | 2019-10-01 | 2020-09-30 | 0d | 2020-09-30 | CK |  | 04 | 04.01.02.01 | Science Oversight & Support CO-I | Phase C | LOE | C | Cyndi | SSED | LOE | 19190.24.140 | LOE | PH CD |  |
| JUICE-UVS 8176 |  | Co-I Support - FY 20 | 252d | 2019-09-30 A | 2020-09-30 | JUICE-UVS 8173 | 15% | 214d | 2019-10-01 | 2020-09-30 | 0d | 2020-09-30 | CK |  | 04 | 04.01.02.01 | Science Oversight & Support CO-I | Phase C | LOE | C | Cyndi | SSED | LOE | 19190.24.140 | LOE | PH CD |  |
| JUICE-UVS 8182 |  | PS Support - FY 21 End of Phase C | 32d | 2020-10-01 | 2020-11-13 | JUICE-UVS 10855 |  |  |  |  | 0d |  | CK |  | 04 | 04.01.02.01 | Science Oversight & Support CO-I | Phase C | LOE | C | Cyndi | SSED | LOE | 19190.24.140 | LOE | PH CD |  |
| JUICE-UVS 8185 |  | Co-I Support - FY 21 End of Phase C | 32d | 2020-10-01 | 2020-11-13 | JUICE-UVS 8176 |  |  |  |  | 0d |  | CK |  | 04 | 04.01.02.01 | Science Oversight & Support CO-I | Phase C | LOE | C | Cyndi | SSED | LOE | 19190.24.140 | LOE | PH CD |  |
| JUICE-UVS 10858 |  | PS Support - FY 21 Start of Phase D | 218d | 2020-11-16 | 2021-09-30 | JUICE-UVS 8182 |  |  |  |  | 0d |  | CK |  | 04 | 04.01.02.01 | Science Oversight & Support CO-I | Phase D | LOE | D | Cyndi | SSED | LOE | 19190.24.140 | LOE | PH CD |  |
| JUICE-UVS 8179 |  | Co-I Support - FY 21 Start of Phase D | 218d | 2020-11-16 | 2021-09-30 | JUICE-UVS 8185 |  |  |  |  | 0d |  | CK |  | 04 | 04.01.02.01 | Science Oversight & Support CO-I | Phase D | LOE | D | Cyndi | SSED | LOE | 19190.24.140 | LOE | PH CD |  |
| JUICE-UVS 10909 |  | PS Support - FY 22 End of Phase D | 243d | 2021-10-01 | 2022-09-21 | JUICE-UVS 10858 |  |  |  |  | 0d |  | CK |  | 04 | 04.01.02.01 | Science Oversight & Support CO-I | Phase D | LOE | D | Cyndi | SSED | LOE | 19190.24.140 | LOE | PH CD |  |
| JUICE-UVS 8188 |  | Co-I Support - FY 22 End of Phase D | 243d | 2021-10-01 | 2022-09-21 | JUICE-UVS 8179 |  |  |  |  | 0d |  | CK |  | 04 | 04.01.02.01 | Science Oversight & Support CO-I | Phase D | LOE | D | Cyndi | SSED | LOE | 19190.24.140 | LOE | PH CD |  |

| ID | WBS | Activity | Duration | Start | Finish | Predecessors | Complete | Planned start | Planned finish | Total float | Free float | Constraint | user_text8 | Work Package | CA | WP/PP | Work Package Name | JUICE UVS Phases | EVT | NASA Phase | JUICE-UVS CAMs | OBS | P6 EVT | JUICE-UVS Charge #s | SubC | LOE | JUICE-UVS Phase CD |
| --- | --- | --- | --- | --- | --- | --- | --- | --- | --- | --- | --- | --- | --- | --- | --- | --- | --- | --- | --- | --- | --- | --- | --- | --- | --- | --- | --- |
|  | 02 | **Non-Hardware Science CO-Is** |  | 2016-10-03 | 2022-09-21 |  |  |  |  |  |  |  |  |  |  |  |  |  |  |  |  |  |  |  |  |  |  |
|  | 01 | **University of Colorado** |  | 2016-10-03 | 2022-09-21 |  |  |  |  |  |  |  |  |  |  |  |  |  |  |  |  |  |  |  |  |  |  |
|  | 01 | **University of Colorado Phase C/D** |  | 2016-10-03 | 2022-09-21 |  |  |  |  |  |  |  |  |  |  |  |  |  |  |  |  |  |  |  |  |  |  |
| JUICE-UVS 11317 |  | University of Colorado Support - FY 17 Phase C Start | 250d | 2016-10-03 A | 2017-09-29 A | JUICE-UVS 0011 | 100% |  |  |  |  |  | CK | 4.2.1 | 04 | 04.02.01.01 | CO-I CU | Phase C | LOE | C | Cyndi | SSED | LOE | 19190.24.210 | CU | LOE | PH CD |
| JUICE-UVS594231 |  | University of Colorado Support - Oct FY 18 | 1d | 2017-10-26 A | 2017-10-26 A | JUICE-UVS 11317 | 100% |  |  |  |  |  |  |  | 04 | 04.02.01.01 |  | Phase C | LOE | C | Cyndi | SSED | LOE | 19190.24.210 |  | LOE | PH CD |
| JUICE-UVS594234 |  | University of Colorado Support - Nov FY 18 | 1d | 2017-11-22 A | 2017-11-22 A | JUICE-UVS594231 | 100% |  |  |  |  |  |  |  | 04 | 04.02.01.01 |  | Phase C | LOE | C | Cyndi | SSED | LOE | 19190.24.210 |  | LOE | PH CD |
| JUICE-UVS594237 |  | University of Colorado Support - Dec FY 18 | 1d | 2017-12-21 A | 2017-12-21 A | JUICE-UVS594234 | 100% |  |  |  |  |  |  |  | 04 | 04.02.01.01 |  | Phase C | LOE | C | Cyndi | SSED | LOE | 19190.24.210 |  | LOE | PH CD |
| JUICE-UVS594240 |  | University of Colorado Support - Jan FY 18 | 1d | 2018-02-01 A | 2018-02-01 A | JUICE-UVS594237 | 100% |  |  |  |  |  |  |  | 04 | 04.02.01.01 |  | Phase C | LOE | C | Cyndi | SSED | LOE | 19190.24.210 |  | LOE | PH CD |
| JUICE-UVS594243 |  | University of Colorado Support - Feb FY 18 | 1d | 2018-03-01 A | 2018-03-01 A | JUICE-UVS594240 | 100% |  |  |  |  |  |  |  | 04 | 04.02.01.01 |  | Phase C | LOE | C | Cyndi | SSED | LOE | 19190.24.210 |  | LOE | PH CD |
| JUICE-UVS594246 |  | University of Colorado Support - Mar FY 18 | 1d | 2018-03-29 A | 2018-03-29 A | JUICE-UVS594243 | 100% |  |  |  |  |  |  |  | 04 | 04.02.01.01 |  | Phase C | LOE | C | Cyndi | SSED | LOE | 19190.24.210 |  | LOE | PH CD |
| JUICE-UVS594249 |  | University of Colorado Support - Apr FY 18 | 1d | 2018-04-26 A | 2018-04-26 A | JUICE-UVS594246 | 100% |  |  |  |  |  |  |  | 04 | 04.02.01.01 |  | Phase C | LOE | C | Cyndi | SSED | LOE | 19190.24.210 |  | LOE | PH CD |
| JUICE-UVS594252 |  | University of Colorado Support - May FY 18 | 1d | 2018-05-24 A | 2018-06-21 A | JUICE-UVS594249 | 100% | 2018-06-21 | 2018-06-21 |  |  |  |  |  | 04 | 04.02.01.01 |  | Phase C | LOE | C | Cyndi | SSED | LOE | 19190.24.210 |  | LOE | PH CD |
| JUICE-UVS594255 |  | University of Colorado Support - Jun FY 18 | 1d | 2018-06-21 A | 2018-06-21 A | JUICE-UVS594252 | 100% |  |  |  |  |  |  |  | 04 | 04.02.01.01 |  | Phase C | LOE | C | Cyndi | SSED | LOE | 19190.24.210 |  | LOE | PH CD |
| JUICE-UVS594258 |  | University of Colorado Support - Jul FY 18 | 1d | 2018-08-02 A | 2018-08-02 A | JUICE-UVS594255 | 100% |  |  |  |  |  |  |  | 04 | 04.02.01.01 |  | Phase C | LOE | C | Cyndi | SSED | LOE | 19190.24.210 |  | LOE | PH CD |
| JUICE-UVS594261 |  | University of Colorado Support - Aug FY 18 | 1d | 2018-08-30 A | 2018-08-30 A | JUICE-UVS594258 | 100% |  |  |  |  |  |  |  | 04 | 04.02.01.01 |  | Phase C | LOE | C | Cyndi | SSED | LOE | 19190.24.210 |  | LOE | PH CD |
| JUICE-UVS594264 |  | University of Colorado Support - Sep FY 18 | 1d | 2018-09-27 A | 2018-09-27 A | JUICE-UVS594261 | 100% |  |  |  |  |  |  |  | 04 | 04.02.01.01 |  | Phase C | LOE | C | Cyndi | SSED | LOE | 19190.24.210 |  | LOE | PH CD |
| JUICE-UVS594267 |  | University of Colorado Support - Oct FY 19 | 1d | 2018-10-25 A | 2018-10-25 A | JUICE-UVS594264 | 100% |  |  |  |  |  |  |  | 04 | 04.02.01.01 |  | Phase C | LOE | C | Cyndi | SSED | LOE | 19190.24.210 |  | LOE | PH CD |
| JUICE-UVS594270 |  | University of Colorado Support - Nov FY 19 | 1d | 2018-11-21 A | 2018-11-21 A | JUICE-UVS594267 | 100% |  |  |  |  |  |  |  | 04 | 04.02.01.01 |  | Phase C | LOE | C | Cyndi | SSED | LOE | 19190.24.210 |  | LOE | PH CD |
| JUICE-UVS594273 |  | University of Colorado Support - Dec FY 19 | 1d | 2019-01-02 A | 2019-01-02 A | JUICE-UVS594270 | 100% |  |  |  |  |  |  |  | 04 | 04.02.01.01 |  | Phase C | LOE | C | Cyndi | SSED | LOE | 19190.24.210 |  | LOE | PH CD |
| JUICE-UVS594276 |  | University of Colorado Support - Jan FY 19 | 1d | 2019-01-31 A | 2019-01-31 A | JUICE-UVS594273 | 100% |  |  |  |  |  |  |  | 04 | 04.02.01.01 |  | Phase C | LOE | C | Cyndi | SSED | LOE | 19190.24.210 |  | LOE | PH CD |
| JUICE-UVS594279 |  | University of Colorado Support - Feb FY 19 | 1d | 2019-02-28 A | 2019-02-28 A | JUICE-UVS594276 | 100% |  |  |  |  | start on or after 2019-02-28 |  |  | 04 | 04.02.01.01 |  | Phase C | LOE | C | Cyndi | SSED | LOE | 19190.24.210 |  | LOE | PH CD |
| JUICE-UVS594282 |  | University of Colorado Support - Mar FY 19 | 1d | 2019-03-28 A | 2019-03-28 A | JUICE-UVS594279 | 100% |  |  |  |  | start on or after 2019-03-28 |  |  | 04 | 04.02.01.01 |  | Phase C | LOE | C | Cyndi | SSED | LOE | 19190.24.210 |  | LOE | PH CD |
| JUICE-UVS594285 |  | University of Colorado Support - Apr FY 19 | 1d | 2019-04-25 A | 2019-04-25 A | JUICE-UVS594282 | 100% |  |  |  |  | start on or after 2019-04-25 |  |  | 04 | 04.02.01.01 |  | Phase C | LOE | C | Cyndi | SSED | LOE | 19190.24.210 |  | LOE | PH CD |
| JUICE-UVS594288 |  | University of Colorado Support - May FY 19 | 1d | 2019-05-23 A | 2019-05-23 A | JUICE-UVS594285 | 100% |  |  |  |  | start on or after 2019-05-23 |  |  | 04 | 04.02.01.01 |  | Phase C | LOE | C | Cyndi | SSED | LOE | 19190.24.210 |  | LOE | PH CD |
| JUICE-UVS594291 |  | University of Colorado Support - Jun FY 19 | 1d | 2019-07-03 A | 2019-07-03 A | JUICE-UVS594288 | 100% |  |  |  |  | start on or after 2019-07-03 |  |  | 04 | 04.02.01.01 |  | Phase C | LOE | C | Cyndi | SSED | LOE | 19190.24.210 |  | LOE | PH CD |
| JUICE-UVS594294 |  | University of Colorado Support - Jul FY 19 | 1d | 2019-08-01 A | 2019-08-01 A | JUICE-UVS594291 | 100% |  |  |  |  | start on or after 2019-08-01 |  |  | 04 | 04.02.01.01 |  | Phase C | LOE | C | Cyndi | SSED | LOE | 19190.24.210 |  | LOE | PH CD |
| JUICE-UVS594297 |  | University of Colorado Support - Aug FY 19 | 1d | 2019-08-29 A | 2019-08-29 A | JUICE-UVS594294 | 100% |  |  |  |  | start on or after 2019-08-29 |  |  | 04 | 04.02.01.01 |  | Phase C | LOE | C | Cyndi | SSED | LOE | 19190.24.210 |  | LOE | PH CD |
| JUICE-UVS594300 |  | University of Colorado Support - Sep FY 19 | 1d | 2019-09-26 A | 2019-09-26 A | JUICE-UVS594297 | 100% |  |  |  |  | start on or after 2019-09-26 |  |  | 04 | 04.02.01.01 |  | Phase C | LOE | C | Cyndi | SSED | LOE | 19190.24.210 |  | LOE | PH CD |
| JUICE-UVS594303 |  | University of Colorado Support - Oct FY 20 | 1d | 2019-10-24 A | 2019-10-24 A | JUICE-UVS594300 | 100% |  |  |  |  | start on or after 2019-10-24 |  |  | 04 | 04.02.01.01 |  | Phase C | LOE | C | Cyndi | SSED | LOE | 19190.24.210 |  | LOE | PH CD |
| JUICE-UVS594306 |  | University of Colorado Support - Nov FY 20 | 1d | 2019-11-20 A | 2019-11-20 A | JUICE-UVS594303 | 100% |  |  |  |  | start on or after 2019-11-20 |  |  | 04 | 04.02.01.01 |  | Phase C | LOE | C | Cyndi | SSED | LOE | 19190.24.210 |  | LOE | PH CD |
| JUICE-UVS594309 |  | University of Colorado Support - Dec FY 20 | 1d | 2020-01-02 | 2020-01-02 | JUICE-UVS594306 |  |  |  | 649d | 19d | start on or after 2020-01-02 |  |  | 04 | 04.02.01.01 |  | Phase C | LOE | C | Cyndi | SSED | LOE | 19190.24.210 |  | LOE | PH CD |
| JUICE-UVS594312 |  | University of Colorado Support - Jan FY 20 | 1d | 2020-01-30 | 2020-01-30 | JUICE-UVS594309 |  |  |  | 630d | 19d | start on or after 2020-01-30 |  |  | 04 | 04.02.01.01 |  | Phase C | LOE | C | Cyndi | SSED | LOE | 19190.24.210 |  | LOE | PH CD |
| JUICE-UVS594315 |  | University of Colorado Support - Feb FY 20 | 1d | 2020-02-27 | 2020-02-27 | JUICE-UVS594312 |  |  |  | 611d | 19d | start on or after 2020-02-27 |  |  | 04 | 04.02.01.01 |  | Phase C | LOE | C | Cyndi | SSED | LOE | 19190.24.210 |  | LOE | PH CD |
| JUICE-UVS594318 |  | University of Colorado Support - Mar FY 20 | 1d | 2020-03-26 | 2020-03-26 | JUICE-UVS594315 |  |  |  | 592d | 19d | start on or after 2020-03-26 |  |  | 04 | 04.02.01.01 |  | Phase C | LOE | C | Cyndi | SSED | LOE | 19190.24.210 |  | LOE | PH CD |
| JUICE-UVS594321 |  | University of Colorado Support - Apr FY 20 | 1d | 2020-04-23 | 2020-04-23 | JUICE-UVS594318 |  |  |  | 573d | 19d | start on or after 2020-04-23 |  |  | 04 | 04.02.01.01 |  | Phase C | LOE | C | Cyndi | SSED | LOE | 19190.24.210 |  | LOE | PH CD |
| JUICE-UVS594324 |  | University of Colorado Support - May FY 20 | 1d | 2020-05-21 | 2020-05-21 | JUICE-UVS594321 |  |  |  | 554d | 27d | start on or after 2020-05-21 |  |  | 04 | 04.02.01.01 |  | Phase C | LOE | C | Cyndi | SSED | LOE | 19190.24.210 |  | LOE | PH CD |
| JUICE-UVS594327 |  | University of Colorado Support - Jun FY 20 | 1d | 2020-07-02 | 2020-07-02 | JUICE-UVS594324 |  |  |  | 527d | 18d | start on or after 2020-07-02 |  |  | 04 | 04.02.01.01 |  | Phase C | LOE | C | Cyndi | SSED | LOE | 19190.24.210 |  | LOE | PH CD |
| JUICE-UVS594330 |  | University of Colorado Support - Jul FY 20 | 1d | 2020-07-30 | 2020-07-30 | JUICE-UVS594327 |  |  |  | 509d | 19d | start on or after 2020-07-30 |  |  | 04 | 04.02.01.01 |  | Phase C | LOE | C | Cyndi | SSED | LOE | 19190.24.210 |  | LOE | PH CD |
| JUICE-UVS594333 |  | University of Colorado Support - Aug FY 20 | 1d | 2020-08-27 | 2020-08-27 | JUICE-UVS594330 |  |  |  | 490d | 17d | start on or after 2020-08-27 |  |  | 04 | 04.02.01.01 |  | Phase C | LOE | C | Cyndi | SSED | LOE | 19190.24.210 |  | LOE | PH CD |
| JUICE-UVS594336 |  | University of Colorado Support - Sep FY 20 | 1d | 2020-09-24 | 2020-09-24 | JUICE-UVS594333 |  |  |  | 473d | 19d | start on or after 2020-09-24 |  |  | 04 | 04.02.01.01 |  | Phase C | LOE | C | Cyndi | SSED | LOE | 19190.24.210 |  | LOE | PH CD |
| JUICE-UVS594339 |  | University of Colorado Support - Oct FY 21 | 1d | 2020-10-22 | 2020-10-22 | JUICE-UVS594336 |  |  |  | 454d | 27d | start on or after 2020-10-22 |  |  | 04 | 04.02.01.01 |  | Phase C | LOE | C | Cyndi | SSED | LOE | 19190.24.210 |  | LOE | PH CD |
| JUICE-UVS594342 |  | University of Colorado Support - Nov FY 21 | 1d | 2020-12-03 | 2020-12-03 | JUICE-UVS594339 |  |  |  | 427d | 17d | start on or after 2020-12-03 |  |  | 04 | 04.02.01.01 |  | Phase C | LOE | C | Cyndi | SSED | LOE | 19190.24.210 |  | LOE | PH CD |
| JUICE-UVS594345 |  | University of Colorado Support - Dec FY 21 | 1d | 2020-12-31 | 2020-12-31 | JUICE-UVS594342 |  |  |  | 410d | 18d | start on or after 2020-12-31 |  |  | 04 | 04.02.01.01 |  | Phase C | LOE | C | Cyndi | SSED | LOE | 19190.24.210 |  | LOE | PH CD |
| JUICE-UVS594348 |  | University of Colorado Support - Jan FY 21 | 1d | 2021-01-28 | 2021-01-28 | JUICE-UVS594345 |  |  |  | 392d | 19d | start on or after 2021-01-28 |  |  | 04 | 04.02.01.01 |  | Phase C | LOE | C | Cyndi | SSED | LOE | 19190.24.210 |  | LOE | PH CD |
| JUICE-UVS594351 |  | University of Colorado Support - Feb FY 21 | 1d | 2021-02-25 | 2021-02-25 | JUICE-UVS594348 |  |  |  | 373d | 19d | start on or after 2021-02-25 |  |  | 04 | 04.02.01.01 |  | Phase C | LOE | C | Cyndi | SSED | LOE | 19190.24.210 |  | LOE | PH CD |
| JUICE-UVS594354 |  | University of Colorado Support - Mar FY 21 | 1d | 2021-03-25 | 2021-03-25 | JUICE-UVS594351 |  |  |  | 354d | 19d | start on or after 2021-03-25 |  |  | 04 | 04.02.01.01 |  | Phase C | LOE | C | Cyndi | SSED | LOE | 19190.24.210 |  | LOE | PH CD |
| JUICE-UVS594357 |  | University of Colorado Support - Apr FY 21 | 1d | 2021-04-22 | 2021-04-22 | JUICE-UVS594354 |  |  |  | 335d | 27d | start on or after 2021-04-22 |  |  | 04 | 04.02.01.01 |  | Phase C | LOE | C | Cyndi | SSED | LOE | 19190.24.210 |  | LOE | PH CD |
| JUICE-UVS594360 |  | University of Colorado Support - May FY 21 | 1d | 2021-06-03 | 2021-06-03 | JUICE-UVS594357 |  |  |  | 308d | 19d | start on or after 2021-06-03 |  |  | 04 | 04.02.01.01 |  | Phase C | LOE | C | Cyndi | SSED | LOE | 19190.24.210 |  | LOE | PH CD |
| JUICE-UVS594363 |  | University of Colorado Support - Jun FY 21 | 1d | 2021-07-01 | 2021-07-01 | JUICE-UVS594360 |  |  |  | 289d | 17d | start on or after 2021-07-01 |  |  | 04 | 04.02.01.01 |  | Phase C | LOE | C | Cyndi | SSED | LOE | 19190.24.210 |  | LOE | PH CD |
| JUICE-UVS594366 |  | University of Colorado Support - Jul FY 21 | 1d | 2021-07-29 | 2021-07-29 | JUICE-UVS594363 |  |  |  | 272d | 19d | start on or after 2021-07-29 |  |  | 04 | 04.02.01.01 |  | Phase C | LOE | C | Cyndi | SSED | LOE | 19190.24.210 |  | LOE | PH CD |
| JUICE-UVS594369 |  | University of Colorado Support - Aug FY 21 | 1d | 2021-08-26 | 2021-08-26 | JUICE-UVS594366 |  |  |  | 253d | 17d | start on or after 2021-08-26 |  |  | 04 | 04.02.01.01 |  | Phase C | LOE | C | Cyndi | SSED | LOE | 19190.24.210 |  | LOE | PH CD |
| JUICE-UVS594372 |  | University of Colorado Support - Sep FY 21 | 1d | 2021-09-23 | 2021-09-23 | JUICE-UVS594369 |  |  |  | 236d | 19d | start on or after 2021-09-23 |  |  | 04 | 04.02.01.01 |  | Phase C | LOE | C | Cyndi | SSED | LOE | 19190.24.210 |  | LOE | PH CD |
| JUICE-UVS594375 |  | University of Colorado Support - Oct FY 22 | 1d | 2021-10-21 | 2021-10-21 | JUICE-UVS594372 |  |  |  | 217d | 27d | start on or after 2021-10-21 |  |  | 04 | 04.02.01.01 |  | Phase C | LOE | C | Cyndi | SSED | LOE | 19190.24.210 |  | LOE | PH CD |
| JUICE-UVS594378 |  | University of Colorado Support - Nov FY 22 | 1d | 2021-12-02 | 2021-12-02 | JUICE-UVS594375 |  |  |  | 190d | 17d | start on or after 2021-12-02 |  |  | 04 | 04.02.01.01 |  | Phase C | LOE | C | Cyndi | SSED | LOE | 19190.24.210 |  | LOE | PH CD |
| JUICE-UVS594381 |  | University of Colorado Support - Dec FY 22 | 1d | 2021-12-30 | 2021-12-30 | JUICE-UVS594378 |  |  |  | 173d | 23d | start on or after 2021-12-30 |  |  | 04 | 04.02.01.01 |  | Phase C | LOE | C | Cyndi | SSED | LOE | 19190.24.210 |  | LOE | PH CD |
| JUICE-UVS594384 |  | University of Colorado Support - Jan FY 22 | 1d | 2022-02-03 | 2022-02-03 | JUICE-UVS594381 |  |  |  | 150d | 19d | start on or after 2022-02-03 |  |  | 04 | 04.02.01.01 |  | Phase C | LOE | C | Cyndi | SSED | LOE | 19190.24.210 |  | LOE | PH CD |
| JUICE-UVS594387 |  | University of Colorado Support - Feb FY 22 | 1d | 2022-03-03 | 2022-03-03 | JUICE-UVS594384 |  |  |  | 131d | 19d | start on or after 2022-03-03 |  |  | 04 | 04.02.01.01 |  | Phase C | LOE | C | Cyndi | SSED | LOE | 19190.24.210 |  | LOE | PH CD |
| JUICE-UVS594390 |  | University of Colorado Support - Mar FY 22 | 1d | 2022-03-31 | 2022-03-31 | JUICE-UVS594387 |  |  |  | 112d | 19d | start on or after 2022-03-31 |  |  | 04 | 04.02.01.01 |  | Phase C | LOE | C | Cyndi | SSED | LOE | 19190.24.210 |  | LOE | PH CD |
| JUICE-UVS594393 |  | University of Colorado Support - Apr FY 22 | 1d | 2022-04-28 | 2022-04-28 | JUICE-UVS594390 |  |  |  | 93d | 19d | start on or after 2022-04-28 |  |  | 04 | 04.02.01.01 |  | Phase C | LOE | C | Cyndi | SSED | LOE | 19190.24.210 |  | LOE | PH CD |
| JUICE-UVS594396 |  | University of Colorado Support - May FY 22 | 1d | 2022-05-26 | 2022-05-26 | JUICE-UVS594393 |  |  |  | 74d | 17d | start on or after 2022-05-26 |  |  | 04 | 04.02.01.01 |  | Phase C | LOE | C | Cyndi | SSED | LOE | 19190.24.210 |  | LOE | PH CD |
| JUICE-UVS594399 |  | University of Colorado Support - Jun FY 22 | 1d | 2022-06-23 | 2022-06-23 | JUICE-UVS594396 |  |  |  | 57d | 17d | start on or after 2022-06-23 |  |  | 04 | 04.02.01.01 |  | Phase C | LOE | C | Cyndi | SSED | LOE | 19190.24.210 |  | LOE | PH CD |
| JUICE-UVS594402 |  | University of Colorado Support - Jul FY 22 | 1d | 2022-07-21 | 2022-07-21 | JUICE-UVS594399 |  |  |  | 40d | 29d | start on or after 2022-07-21 |  |  | 04 | 04.02.01.01 |  | Phase C | LOE | C | Cyndi | SSED | LOE | 19190.24.210 |  | LOE | PH CD |
| JUICE-UVS594405 |  | University of Colorado Support - Aug FY 22 | 1d | 2022-09-01 | 2022-09-01 | JUICE-UVS594402 |  |  |  | 11d |  | start on or after 2022-09-01 |  |  | 04 | 04.02.01.01 |  | Phase C | LOE | C | Cyndi | SSED | LOE | 19190.24.210 |  | LOE | PH CD |
| JUICE-UVS594408 |  | University of Colorado Support - Sep FY 22 | 1d | 2022-09-21 | 2022-09-21 | JUICE-UVS594405 |  |  |  | 0d |  | start on or after 2022-09-21 |  |  | 04 | 04.02.01.01 |  | Phase C | LOE | C | Cyndi | SSED | LOE | 19190.24.210 |  | LOE | PH CD |

Notes:
- JUICE-UVS594261: Justify: Changed from LOE to Task Dependant for more accurate EVM Cost Reporting
- JUICE-UVS594264: Justify: Changed from LOE to Task Dependant for more accurate EVM Cost Reporting
- JUICE-UVS594267: Justify: Changed from LOE to Task Dependant for more accurate EVM Cost Reporting
- JUICE-UVS594270: Justify: Changed from LOE to Task Dependant for more accurate EVM Cost Reporting
- JUICE-UVS594273: Justify: Changed from LOE to Task Dependant for more accurate EVM Cost Reporting
- JUICE-UVS594276: Justify: Changed from LOE to Task Dependant for more accurate EVM Cost Reporting
- JUICE-UVS594279: Justify: Changed from LOE to Task Dependant for more accurate EVM Cost Reporting
- JUICE-UVS594282: Justify: Changed from LOE to Task Dependant for more accurate EVM Cost Reporting
- JUICE-UVS594285: Justify: Changed from LOE to Task Dependant for more accurate EVM Cost Reporting
- JUICE-UVS594288: Justify: Changed from LOE to Task Dependant for more accurate EVM Cost Reporting
- JUICE-UVS594291: Justify: Changed from LOE to Task Dependant for more accurate EVM Cost Reporting
- JUICE-UVS594294: Justify: Changed from LOE to Task Dependant for more accurate EVM Cost Reporting
- JUICE-UVS594297: Justify: Changed from LOE to Task Dependant for more accurate EVM Cost Reporting
- JUICE-UVS594300: Justify: Changed from LOE to Task Dependant for more accurate EVM Cost Reporting
- JUICE-UVS594303: Justify: Changed from LOE to Task Dependant for more accurate EVM Cost Reporting
- JUICE-UVS594306: Justify: Changed from LOE to Task Dependant for more accurate EVM Cost Reporting
- JUICE-UVS594309: Justify: Changed from LOE to Task Dependant for more accurate EVM Cost Reporting
- JUICE-UVS594312: Justify: Changed from LOE to Task Dependant for more accurate EVM Cost Reporting
- JUICE-UVS594315: Justify: Changed from LOE to Task Dependant for more accurate EVM Cost Reporting
- JUICE-UVS594318: Justify: Changed from LOE to Task Dependant for more accurate EVM Cost Reporting
- JUICE-UVS594321: Justify: Changed from LOE to Task Dependant for more accurate EVM Cost Reporting
- JUICE-UVS594324: Justify: Changed from LOE to Task Dependant for more accurate EVM Cost Reporting
- JUICE-UVS594327: Justify: Changed from LOE to Task Dependant for more accurate EVM Cost Reporting
- JUICE-UVS594330: Justify: Changed from LOE to Task Dependant for more accurate EVM Cost Reporting
- JUICE-UVS594333: Justify: Changed from LOE to Task Dependant for more accurate EVM Cost Reporting
- JUICE-UVS594336: Justify: Changed from LOE to Task Dependant for more accurate EVM Cost Reporting
- JUICE-UVS594339: Justify: Changed from LOE to Task Dependant for more accurate EVM Cost Reporting
- JUICE-UVS594342: Justify: Changed from LOE to Task Dependant for more accurate EVM Cost Reporting
- JUICE-UVS594345: Justify: Changed from LOE to Task Dependant for more accurate EVM Cost Reporting
- JUICE-UVS594348: Justify: Changed from LOE to Task Dependant for more accurate EVM Cost Reporting
- JUICE-UVS594351: Justify: Changed from LOE to Task Dependant for more accurate EVM Cost Reporting
- JUICE-UVS594354: Justify: Changed from LOE to Task Dependant for more accurate EVM Cost Reporting
- JUICE-UVS594357: Justify: Changed from LOE to Task Dependant for more accurate EVM Cost Reporting
- JUICE-UVS594360: Justify: Changed from LOE to Task Dependant for more accurate EVM Cost Reporting
- JUICE-UVS594363: Justify: Changed from LOE to Task Dependant for more accurate EVM Cost Reporting
- JUICE-UVS594366: Justify: Changed from LOE to Task Dependant for more accurate EVM Cost Reporting
- JUICE-UVS594369: Justify: Changed from LOE to Task Dependant for more accurate EVM Cost Reporting
- JUICE-UVS594372: Justify: Changed from LOE to Task Dependant for more accurate EVM Cost Reporting
- JUICE-UVS594375: Justify: Changed from LOE to Task Dependant for more accurate EVM Cost Reporting
- JUICE-UVS594378: Justify: Changed from LOE to Task Dependant for more accurate EVM Cost Reporting
- JUICE-UVS594381: Justify: Changed from LOE to Task Dependant for more accurate EVM Cost Reporting
- JUICE-UVS594384: Justify: Changed from LOE to Task Dependant for more accurate EVM Cost Reporting
- JUICE-UVS594387: Justify: Changed from LOE to Task Dependant for more accurate EVM Cost Reporting
- JUICE-UVS594390: Justify: Changed from LOE to Task Dependant for more accurate EVM Cost Reporting
- JUICE-UVS594393: Justify: Changed from LOE to Task Dependant for more accurate EVM Cost Reporting
- JUICE-UVS594396: Justify: Changed from LOE to Task Dependant for more accurate EVM Cost Reporting
- JUICE-UVS594399: Justify: Changed from LOE to Task Dependant for more accurate EVM Cost Reporting
- JUICE-UVS594402: Justify: Changed from LOE to Task Dependant for more accurate EVM Cost Reporting
- JUICE-UVS594405: Justify: Changed from LOE to Task Dependant for more accurate EVM Cost Reporting
- JUICE-UVS594408: Justify: Changed from LOE to Task Dependant for more accurate EVM Cost Reporting

| ID | WBS | Activity | Duration | Start | Finish | Predecessors | Complete | Total float | Free float | Constraint | user_text8 | CA | WP/PP | Work Package Name | JUICE UVS Phases | EVT | NASA Phase | JUICE-UVS CAMs | OBS | P6 EVT | JUICE-UVS Charge #s | SubC | LOE | JUICE-UVS Phase CD |
| --- | --- | --- | --- | --- | --- | --- | --- | --- | --- | --- | --- | --- | --- | --- | --- | --- | --- | --- | --- | --- | --- | --- | --- | --- |
|  | 02 | **Johns Hopkins University Phase C/D** |  | 2016-10-03 | 2022-09-21 |  |  |  |  |  |  |  |  |  |  |  |  |  |  |  |  |  |  |  |
| JUICE-UVS 592387 |  | Johns Hopkins Support - FY 17 Phase C Start | 250d | 2016-10-03 A | 2017-09-29 A | JUICE-UVS 0011 | 100% |  |  |  | CK | 04 | 04.02.02 | CO-I JHU | Phase C | LOE | C | Cyndi | SSED | LOE | 19190.24.220 | APL | LOE | PH CD |
| JUICE-UVS594411 |  | Johns Hopkins Support - Oct FY 18 | 1d | 2017-10-26 A | 2017-10-26 A | JUICE-UVS 592387 | 100% |  |  |  |  | 04 | 04.02.02 |  | Phase C | LOE | C | Cyndi | SSED | LOE | 19190.24.220 |  | LOE | PH CD |
| JUICE-UVS594414 |  | Johns Hopkins Support - Nov FY 18 | 1d | 2017-11-22 A | 2017-11-22 A | JUICE-UVS594411 | 100% |  |  |  |  | 04 | 04.02.02 |  | Phase C | LOE | C | Cyndi | SSED | LOE | 19190.24.220 |  | LOE | PH CD |
| JUICE-UVS594417 |  | Johns Hopkins Support - Dec FY 18 | 1d | 2017-12-21 A | 2017-12-21 A | JUICE-UVS594414 | 100% |  |  |  |  | 04 | 04.02.02 |  | Phase C | LOE | C | Cyndi | SSED | LOE | 19190.24.220 |  | LOE | PH CD |
| JUICE-UVS594420 |  | Johns Hopkins Support - Jan FY 18 | 1d | 2018-02-01 A | 2018-02-01 A | JUICE-UVS594417 | 100% |  |  |  |  | 04 | 04.02.02 |  | Phase C | LOE | C | Cyndi | SSED | LOE | 19190.24.220 |  | LOE | PH CD |
| JUICE-UVS594423 |  | Johns Hopkins Support - Feb FY 18 | 1d | 2018-03-01 A | 2018-03-01 A | JUICE-UVS594420 | 100% |  |  |  |  | 04 | 04.02.02 |  | Phase C | LOE | C | Cyndi | SSED | LOE | 19190.24.220 |  | LOE | PH CD |
| JUICE-UVS594426 |  | Johns Hopkins Support - Mar FY 18 | 1d | 2018-03-29 A | 2018-03-29 A | JUICE-UVS594423 | 100% |  |  |  |  | 04 | 04.02.02 |  | Phase C | LOE | C | Cyndi | SSED | LOE | 19190.24.220 |  | LOE | PH CD |
| JUICE-UVS594429 |  | Johns Hopkins Support - Apr FY 18 | 1d | 2018-04-26 A | 2018-04-26 A | JUICE-UVS594426 | 100% |  |  |  |  | 04 | 04.02.02 |  | Phase C | LOE | C | Cyndi | SSED | LOE | 19190.24.220 |  | LOE | PH CD |
| JUICE-UVS594432 |  | Johns Hopkins Support - May FY 18 | 1d | 2018-05-24 A | 2018-05-24 A | JUICE-UVS594429 | 100% |  |  |  |  | 04 | 04.02.02 |  | Phase C | LOE | C | Cyndi | SSED | LOE | 19190.24.220 |  | LOE | PH CD |
| JUICE-UVS594435 |  | Johns Hopkins Support - Jun FY 18 | 1d | 2018-06-21 A | 2018-06-21 A | JUICE-UVS594432 | 100% |  |  |  |  | 04 | 04.02.02 |  | Phase C | LOE | C | Cyndi | SSED | LOE | 19190.24.220 |  | LOE | PH CD |
| JUICE-UVS594438 |  | Johns Hopkins Support - Jul FY 18 | 1d | 2018-08-02 A | 2018-08-02 A | JUICE-UVS594435 | 100% |  |  |  |  | 04 | 04.02.02 |  | Phase C | LOE | C | Cyndi | SSED | LOE | 19190.24.220 |  | LOE | PH CD |
| JUICE-UVS594441 |  | Johns Hopkins Support - Aug FY 18 | 1d | 2018-08-30 A | 2018-08-30 A | JUICE-UVS594438 | 100% |  |  |  |  | 04 | 04.02.02 |  | Phase C | LOE | C | Cyndi | SSED | LOE | 19190.24.220 |  | LOE | PH CD |
| JUICE-UVS594444 |  | Johns Hopkins Support - Sep FY 18 | 1d | 2018-09-26 A | 2018-09-26 A | JUICE-UVS594441 | 100% |  |  |  |  | 04 | 04.02.02 |  | Phase C | LOE | C | Cyndi | SSED | LOE | 19190.24.220 |  | LOE | PH CD |
| JUICE-UVS594447 |  | Johns Hopkins Support - Oct FY 19 | 1d | 2018-10-25 A | 2018-10-25 A | JUICE-UVS594444 | 100% |  |  |  |  | 04 | 04.02.02 |  | Phase C | LOE | C | Cyndi | SSED | LOE | 19190.24.220 |  | LOE | PH CD |
| JUICE-UVS594450 |  | Johns Hopkins Support - Nov FY 19 | 1d | 2018-11-21 A | 2018-11-21 A | JUICE-UVS594447 | 100% |  |  |  |  | 04 | 04.02.02 |  | Phase C | LOE | C | Cyndi | SSED | LOE | 19190.24.220 |  | LOE | PH CD |
| JUICE-UVS594453 |  | Johns Hopkins Support - Dec FY 19 | 1d | 2019-01-02 A | 2019-01-02 A | JUICE-UVS594450 | 100% |  |  |  |  | 04 | 04.02.02 |  | Phase C | LOE | C | Cyndi | SSED | LOE | 19190.24.220 |  | LOE | PH CD |
| JUICE-UVS594456 |  | Johns Hopkins Support - Jan FY 19 | 1d | 2019-01-31 A | 2019-01-31 A | JUICE-UVS594453 | 100% |  |  |  |  | 04 | 04.02.02 |  | Phase C | LOE | C | Cyndi | SSED | LOE | 19190.24.220 |  | LOE | PH CD |
| JUICE-UVS594459 |  | Johns Hopkins Support - Feb FY 19 | 1d | 2019-02-28 A | 2019-02-28 A | JUICE-UVS594456 | 100% |  |  | start on or after 2019-02-28 |  | 04 | 04.02.02 |  | Phase C | LOE | C | Cyndi | SSED | LOE | 19190.24.220 |  | LOE | PH CD |
| JUICE-UVS594462 |  | Johns Hopkins Support - Mar FY 19 | 1d | 2019-03-28 A | 2019-03-28 A | JUICE-UVS594459 | 100% |  |  | start on or after 2019-03-28 |  | 04 | 04.02.02 |  | Phase C | LOE | C | Cyndi | SSED | LOE | 19190.24.220 |  | LOE | PH CD |
| JUICE-UVS594465 |  | Johns Hopkins Support - Apr FY 19 | 1d | 2019-04-25 A | 2019-04-25 A | JUICE-UVS594462 | 100% |  |  | start on or after 2019-04-25 |  | 04 | 04.02.02 |  | Phase C | LOE | C | Cyndi | SSED | LOE | 19190.24.220 |  | LOE | PH CD |
| JUICE-UVS594468 |  | Johns Hopkins Support - May FY 19 | 1d | 2019-05-23 A | 2019-05-23 A | JUICE-UVS594465 | 100% |  |  | start on or after 2019-05-23 |  | 04 | 04.02.02 |  | Phase C | LOE | C | Cyndi | SSED | LOE | 19190.24.220 |  | LOE | PH CD |
| JUICE-UVS594471 |  | Johns Hopkins Support - Jun FY 19 | 1d | 2019-07-03 A | 2019-07-03 A | JUICE-UVS594468 | 100% |  |  | start on or after 2019-07-03 |  | 04 | 04.02.02 |  | Phase C | LOE | C | Cyndi | SSED | LOE | 19190.24.220 |  | LOE | PH CD |
| JUICE-UVS594474 |  | Johns Hopkins Support - Jul FY 19 | 1d | 2019-08-01 A | 2019-08-01 A | JUICE-UVS594471 | 100% |  |  | start on or after 2019-08-01 |  | 04 | 04.02.02 |  | Phase C | LOE | C | Cyndi | SSED | LOE | 19190.24.220 |  | LOE | PH CD |
| JUICE-UVS594477 |  | Johns Hopkins Support - Aug FY 19 | 1d | 2019-08-29 A | 2019-08-29 A | JUICE-UVS594474 | 100% |  |  | start on or after 2019-08-29 |  | 04 | 04.02.02 |  | Phase C | LOE | C | Cyndi | SSED | LOE | 19190.24.220 |  | LOE | PH CD |
| JUICE-UVS594480 |  | Johns Hopkins Support - Sep FY 19 | 1d | 2019-09-26 A | 2019-09-26 A | JUICE-UVS594477 | 100% |  |  | start on or after 2019-09-26 |  | 04 | 04.02.02 |  | Phase C | LOE | C | Cyndi | SSED | LOE | 19190.24.220 |  | LOE | PH CD |
| JUICE-UVS594483 |  | Johns Hopkins Support - Oct FY 20 | 1d | 2019-10-24 A | 2019-10-24 A | JUICE-UVS594480 | 100% |  |  | start on or after 2019-10-24 |  | 04 | 04.02.02 |  | Phase C | LOE | C | Cyndi | SSED | LOE | 19190.24.220 |  | LOE | PH CD |
| JUICE-UVS594486 |  | Johns Hopkins Support - Nov FY 20 | 1d | 2019-11-20 A | 2019-11-20 A | JUICE-UVS594483 | 100% |  |  | start on or after 2019-11-20 |  | 04 | 04.02.02 |  | Phase C | LOE | C | Cyndi | SSED | LOE | 19190.24.220 |  | LOE | PH CD |
| JUICE-UVS594489 |  | Johns Hopkins Support - Dec FY 20 | 1d | 2020-01-02 | 2020-01-02 | JUICE-UVS594486 |  | 649d | 19d | start on or after 2020-01-02 |  | 04 | 04.02.02 |  | Phase C | LOE | C | Cyndi | SSED | LOE | 19190.24.220 |  | LOE | PH CD |
| JUICE-UVS594492 |  | Johns Hopkins Support - Jan FY 20 | 1d | 2020-01-30 | 2020-01-30 | JUICE-UVS594489 |  | 630d | 19d | start on or after 2020-01-30 |  | 04 | 04.02.02 |  | Phase C | LOE | C | Cyndi | SSED | LOE | 19190.24.220 |  | LOE | PH CD |
| JUICE-UVS594495 |  | Johns Hopkins Support - Feb FY 20 | 1d | 2020-02-27 | 2020-02-27 | JUICE-UVS594492 |  | 611d | 19d | start on or after 2020-02-27 |  | 04 | 04.02.02 |  | Phase C | LOE | C | Cyndi | SSED | LOE | 19190.24.220 |  | LOE | PH CD |
| JUICE-UVS594498 |  | Johns Hopkins Support - Mar FY 20 | 1d | 2020-03-26 | 2020-03-26 | JUICE-UVS594495 |  | 592d | 19d | start on or after 2020-03-26 |  | 04 | 04.02.02 |  | Phase C | LOE | C | Cyndi | SSED | LOE | 19190.24.220 |  | LOE | PH CD |
| JUICE-UVS594501 |  | Johns Hopkins Support - Apr FY 20 | 1d | 2020-04-23 | 2020-04-23 | JUICE-UVS594498 |  | 573d | 19d | start on or after 2020-04-23 |  | 04 | 04.02.02 |  | Phase C | LOE | C | Cyndi | SSED | LOE | 19190.24.220 |  | LOE | PH CD |
| JUICE-UVS594504 |  | Johns Hopkins Support - May FY 20 | 1d | 2020-05-21 | 2020-05-21 | JUICE-UVS594501 |  | 554d | 27d | start on or after 2020-05-21 |  | 04 | 04.02.02 |  | Phase C | LOE | C | Cyndi | SSED | LOE | 19190.24.220 |  | LOE | PH CD |
| JUICE-UVS594507 |  | Johns Hopkins Support - Jun FY 20 | 1d | 2020-07-02 | 2020-07-02 | JUICE-UVS594504 |  | 527d | 18d | start on or after 2020-07-02 |  | 04 | 04.02.02 |  | Phase C | LOE | C | Cyndi | SSED | LOE | 19190.24.220 |  | LOE | PH CD |
| JUICE-UVS594510 |  | Johns Hopkins Support - Jul FY 20 | 1d | 2020-07-30 | 2020-07-30 | JUICE-UVS594507 |  | 509d | 19d | start on or after 2020-07-30 |  | 04 | 04.02.02 |  | Phase C | LOE | C | Cyndi | SSED | LOE | 19190.24.220 |  | LOE | PH CD |
| JUICE-UVS594513 |  | Johns Hopkins Support - Aug FY 20 | 1d | 2020-08-27 | 2020-08-27 | JUICE-UVS594510 |  | 490d | 17d | start on or after 2020-08-27 |  | 04 | 04.02.02 |  | Phase C | LOE | C | Cyndi | SSED | LOE | 19190.24.220 |  | LOE | PH CD |
| JUICE-UVS594516 |  | Johns Hopkins Support - Sep FY 20 | 1d | 2020-09-24 | 2020-09-24 | JUICE-UVS594513 |  | 473d | 19d | start on or after 2020-09-24 |  | 04 | 04.02.02 |  | Phase C | LOE | C | Cyndi | SSED | LOE | 19190.24.220 |  | LOE | PH CD |
| JUICE-UVS594519 |  | Johns Hopkins Support - Oct FY 21 | 1d | 2020-10-22 | 2020-10-22 | JUICE-UVS594516 |  | 454d | 27d | start on or after 2020-10-22 |  | 04 | 04.02.02 |  | Phase C | LOE | C | Cyndi | SSED | LOE | 19190.24.220 |  | LOE | PH CD |
| JUICE-UVS594522 |  | Johns Hopkins Support - Nov FY 21 | 1d | 2020-12-03 | 2020-12-03 | JUICE-UVS594519 |  | 427d | 17d | start on or after 2020-12-03 |  | 04 | 04.02.02 |  | Phase C | LOE | C | Cyndi | SSED | LOE | 19190.24.220 |  | LOE | PH CD |
| JUICE-UVS594525 |  | Johns Hopkins Support - Dec FY 21 | 1d | 2020-12-31 | 2020-12-31 | JUICE-UVS594522 |  | 410d | 18d | start on or after 2020-12-31 |  | 04 | 04.02.02 |  | Phase C | LOE | C | Cyndi | SSED | LOE | 19190.24.220 |  | LOE | PH CD |
| JUICE-UVS594528 |  | Johns Hopkins Support - Jan FY 21 | 1d | 2021-01-28 | 2021-01-28 | JUICE-UVS594525 |  | 392d | 19d | start on or after 2021-01-28 |  | 04 | 04.02.02 |  | Phase C | LOE | C | Cyndi | SSED | LOE | 19190.24.220 |  | LOE | PH CD |
| JUICE-UVS594531 |  | Johns Hopkins Support - Feb FY 21 | 1d | 2021-02-25 | 2021-02-25 | JUICE-UVS594528 |  | 373d | 19d | start on or after 2021-02-25 |  | 04 | 04.02.02 |  | Phase C | LOE | C | Cyndi | SSED | LOE | 19190.24.220 |  | LOE | PH CD |
| JUICE-UVS594534 |  | Johns Hopkins Support - Mar FY 21 | 1d | 2021-03-25 | 2021-03-25 | JUICE-UVS594531 |  | 354d | 19d | start on or after 2021-03-25 |  | 04 | 04.02.02 |  | Phase C | LOE | C | Cyndi | SSED | LOE | 19190.24.220 |  | LOE | PH CD |
| JUICE-UVS594537 |  | Johns Hopkins Support - Apr FY 21 | 1d | 2021-04-22 | 2021-04-22 | JUICE-UVS594534 |  | 335d | 27d | start on or after 2021-04-22 |  | 04 | 04.02.02 |  | Phase C | LOE | C | Cyndi | SSED | LOE | 19190.24.220 |  | LOE | PH CD |
| JUICE-UVS594540 |  | Johns Hopkins Support - May FY 21 | 1d | 2021-06-03 | 2021-06-03 | JUICE-UVS594537 |  | 308d | 19d | start on or after 2021-06-03 |  | 04 | 04.02.02 |  | Phase C | LOE | C | Cyndi | SSED | LOE | 19190.24.220 |  | LOE | PH CD |
| JUICE-UVS594543 |  | Johns Hopkins Support - Jun FY 21 | 1d | 2021-07-01 | 2021-07-01 | JUICE-UVS594540 |  | 289d | 17d | start on or after 2021-07-01 |  | 04 | 04.02.02 |  | Phase C | LOE | C | Cyndi | SSED | LOE | 19190.24.220 |  | LOE | PH CD |
| JUICE-UVS594546 |  | Johns Hopkins Support - Jul FY 21 | 1d | 2021-07-29 | 2021-07-29 | JUICE-UVS594543 |  | 272d | 19d | start on or after 2021-07-29 |  | 04 | 04.02.02 |  | Phase C | LOE | C | Cyndi | SSED | LOE | 19190.24.220 |  | LOE | PH CD |
| JUICE-UVS594549 |  | Johns Hopkins Support - Aug FY 21 | 1d | 2021-08-26 | 2021-08-26 | JUICE-UVS594546 |  | 253d | 17d | start on or after 2021-08-26 |  | 04 | 04.02.02 |  | Phase C | LOE | C | Cyndi | SSED | LOE | 19190.24.220 |  | LOE | PH CD |
| JUICE-UVS594552 |  | Johns Hopkins Support - Sep FY 21 | 1d | 2021-09-23 | 2021-09-23 | JUICE-UVS594549 |  | 236d | 19d | start on or after 2021-09-23 |  | 04 | 04.02.02 |  | Phase C | LOE | C | Cyndi | SSED | LOE | 19190.24.220 |  | LOE | PH CD |
| JUICE-UVS594555 |  | Johns Hopkins Support - Oct FY 22 | 1d | 2021-10-21 | 2021-10-21 | JUICE-UVS594552 |  | 217d | 27d | start on or after 2021-10-21 |  | 04 | 04.02.02 |  | Phase C | LOE | C | Cyndi | SSED | LOE | 19190.24.220 |  | LOE | PH CD |
| JUICE-UVS594558 |  | Johns Hopkins Support - Nov FY 22 | 1d | 2021-12-02 | 2021-12-02 | JUICE-UVS594555 |  | 190d | 17d | start on or after 2021-12-02 |  | 04 | 04.02.02 |  | Phase C | LOE | C | Cyndi | SSED | LOE | 19190.24.220 |  | LOE | PH CD |
| JUICE-UVS594561 |  | Johns Hopkins Support - Dec FY 22 | 1d | 2021-12-30 | 2021-12-30 | JUICE-UVS594558 |  | 173d | 23d | start on or after 2021-12-30 |  | 04 | 04.02.02 |  | Phase C | LOE | C | Cyndi | SSED | LOE | 19190.24.220 |  | LOE | PH CD |
| JUICE-UVS594564 |  | Johns Hopkins Support - Jan FY 22 | 1d | 2022-02-03 | 2022-02-03 | JUICE-UVS594561 |  | 150d | 19d | start on or after 2022-02-03 |  | 04 | 04.02.02 |  | Phase C | LOE | C | Cyndi | SSED | LOE | 19190.24.220 |  | LOE | PH CD |
| JUICE-UVS594567 |  | Johns Hopkins Support - Feb FY 22 | 1d | 2022-03-03 | 2022-03-03 | JUICE-UVS594564 |  | 131d | 19d | start on or after 2022-03-03 |  | 04 | 04.02.02 |  | Phase C | LOE | C | Cyndi | SSED | LOE | 19190.24.220 |  | LOE | PH CD |
| JUICE-UVS594570 |  | Johns Hopkins Support - Mar FY 22 | 1d | 2022-03-31 | 2022-03-31 | JUICE-UVS594567 |  | 112d | 19d | start on or after 2022-03-31 |  | 04 | 04.02.02 |  | Phase C | LOE | C | Cyndi | SSED | LOE | 19190.24.220 |  | LOE | PH CD |
| JUICE-UVS594573 |  | Johns Hopkins Support - Apr FY 22 | 1d | 2022-04-28 | 2022-04-28 | JUICE-UVS594570 |  | 93d | 19d | start on or after 2022-04-28 |  | 04 | 04.02.02 |  | Phase C | LOE | C | Cyndi | SSED | LOE | 19190.24.220 |  | LOE | PH CD |
| JUICE-UVS594576 |  | Johns Hopkins Support - May FY 22 | 1d | 2022-05-26 | 2022-05-26 | JUICE-UVS594573 |  | 74d | 17d | start on or after 2022-05-26 |  | 04 | 04.02.02 |  | Phase C | LOE | C | Cyndi | SSED | LOE | 19190.24.220 |  | LOE | PH CD |
| JUICE-UVS594579 |  | Johns Hopkins Support - Jun FY 22 | 1d | 2022-06-23 | 2022-06-23 | JUICE-UVS594576 |  | 57d | 17d | start on or after 2022-06-23 |  | 04 | 04.02.02 |  | Phase C | LOE | C | Cyndi | SSED | LOE | 19190.24.220 |  | LOE | PH CD |
| JUICE-UVS594582 |  | Johns Hopkins Support - Jul FY 22 | 1d | 2022-07-21 | 2022-07-21 | JUICE-UVS594579 |  | 40d | 29d | start on or after 2022-07-21 |  | 04 | 04.02.02 |  | Phase C | LOE | C | Cyndi | SSED | LOE | 19190.24.220 |  | LOE | PH CD |
| JUICE-UVS594585 |  | Johns Hopkins Support - Aug FY 22 | 1d | 2022-09-01 | 2022-09-01 | JUICE-UVS594582 |  | 11d |  | start on or after 2022-09-01 |  | 04 | 04.02.02 |  | Phase C | LOE | C | Cyndi | SSED | LOE | 19190.24.220 |  | LOE | PH CD |
| JUICE-UVS594588 |  | Johns Hopkins Support - Sep FY 22 | 1d | 2022-09-21 | 2022-09-21 | JUICE-UVS594585 |  | 0d |  | start on or after 2022-09-21 |  | 04 | 04.02.02 |  | Phase C | LOE | C | Cyndi | SSED | LOE | 19190.24.220 |  | LOE | PH CD |

Notes:
- JUICE-UVS594441: Justify: Changed from LOE to Task Dependant for more accurate EVM Cost Reporting
- JUICE-UVS594444: Justify: Changed from LOE to Task Dependant for more accurate EVM Cost Reporting
- JUICE-UVS594447: Justify: Changed from LOE to Task Dependant for more accurate EVM Cost Reporting
- JUICE-UVS594450: Justify: Changed from LOE to Task Dependant for more accurate EVM Cost Reporting
- JUICE-UVS594453: Justify: Changed from LOE to Task Dependant for more accurate EVM Cost Reporting
- JUICE-UVS594456: Justify: Changed from LOE to Task Dependant for more accurate EVM Cost Reporting
- JUICE-UVS594459: Justify: Changed from LOE to Task Dependant for more accurate EVM Cost Reporting
- JUICE-UVS594462: Justify: Changed from LOE to Task Dependant for more accurate EVM Cost Reporting
- JUICE-UVS594465: Justify: Changed from LOE to Task Dependant for more accurate EVM Cost Reporting
- JUICE-UVS594468: Justify: Changed from LOE to Task Dependant for more accurate EVM Cost Reporting
- JUICE-UVS594471: Justify: Changed from LOE to Task Dependant for more accurate EVM Cost Reporting
- JUICE-UVS594474: Justify: Changed from LOE to Task Dependant for more accurate EVM Cost Reporting
- JUICE-UVS594477: Justify: Changed from LOE to Task Dependant for more accurate EVM Cost Reporting
- JUICE-UVS594480: Justify: Changed from LOE to Task Dependant for more accurate EVM Cost Reporting
- JUICE-UVS594483: Justify: Changed from LOE to Task Dependant for more accurate EVM Cost Reporting
- JUICE-UVS594486: Justify: Changed from LOE to Task Dependant for more accurate EVM Cost Reporting
- JUICE-UVS594489: Justify: Changed from LOE to Task Dependant for more accurate EVM Cost Reporting
- JUICE-UVS594492: Justify: Changed from LOE to Task Dependant for more accurate EVM Cost Reporting
- JUICE-UVS594495: Justify: Changed from LOE to Task Dependant for more accurate EVM Cost Reporting
- JUICE-UVS594498: Justify: Changed from LOE to Task Dependant for more accurate EVM Cost Reporting
- JUICE-UVS594501: Justify: Changed from LOE to Task Dependant for more accurate EVM Cost Reporting
- JUICE-UVS594504: Justify: Changed from LOE to Task Dependant for more accurate EVM Cost Reporting
- JUICE-UVS594507: Justify: Changed from LOE to Task Dependant for more accurate EVM Cost Reporting
- JUICE-UVS594510: Justify: Changed from LOE to Task Dependant for more accurate EVM Cost Reporting
- JUICE-UVS594513: Justify: Changed from LOE to Task Dependant for more accurate EVM Cost Reporting
- JUICE-UVS594516: Justify: Changed from LOE to Task Dependant for more accurate EVM Cost Reporting
- JUICE-UVS594519: Justify: Changed from LOE to Task Dependant for more accurate EVM Cost Reporting
- JUICE-UVS594522: Justify: Changed from LOE to Task Dependant for more accurate EVM Cost Reporting
- JUICE-UVS594525: Justify: Changed from LOE to Task Dependant for more accurate EVM Cost Reporting
- JUICE-UVS594528: Justify: Changed from LOE to Task Dependant for more accurate EVM Cost Reporting
- JUICE-UVS594531: Justify: Changed from LOE to Task Dependant for more accurate EVM Cost Reporting
- JUICE-UVS594534: Justify: Changed from LOE to Task Dependant for more accurate EVM Cost Reporting
- JUICE-UVS594537: Justify: Changed from LOE to Task Dependant for more accurate EVM Cost Reporting
- JUICE-UVS594540: Justify: Changed from LOE to Task Dependant for more accurate EVM Cost Reporting
- JUICE-UVS594543: Justify: Changed from LOE to Task Dependant for more accurate EVM Cost Reporting
- JUICE-UVS594546: Justify: Changed from LOE to Task Dependant for more accurate EVM Cost Reporting
- JUICE-UVS594549: Justify: Changed from LOE to Task Dependant for more accurate EVM Cost Reporting
- JUICE-UVS594552: Justify: Changed from LOE to Task Dependant for more accurate EVM Cost Reporting
- JUICE-UVS594555: Justify: Changed from LOE to Task Dependant for more accurate EVM Cost Reporting
- JUICE-UVS594558: Justify: Changed from LOE to Task Dependant for more accurate EVM Cost Reporting
- JUICE-UVS594561: Justify: Changed from LOE to Task Dependant for more accurate EVM Cost Reporting
- JUICE-UVS594564: Justify: Changed from LOE to Task Dependant for more accurate EVM Cost Reporting
- JUICE-UVS594567: Justify: Changed from LOE to Task Dependant for more accurate EVM Cost Reporting
- JUICE-UVS594570: Justify: Changed from LOE to Task Dependant for more accurate EVM Cost Reporting
- JUICE-UVS594573: Justify: Changed from LOE to Task Dependant for more accurate EVM Cost Reporting
- JUICE-UVS594576: Justify: Changed from LOE to Task Dependant for more accurate EVM Cost Reporting
- JUICE-UVS594579: Justify: Changed from LOE to Task Dependant for more accurate EVM Cost Reporting
- JUICE-UVS594582: Justify: Changed from LOE to Task Dependant for more accurate EVM Cost Reporting
- JUICE-UVS594585: Justify: Changed from LOE to Task Dependant for more accurate EVM Cost Reporting
- JUICE-UVS594588: Justify: Changed from LOE to Task Dependant for more accurate EVM Cost Reporting

| ID | WBS | Activity | Duration | Start | Finish | Predecessors | Complete | Planned start | Planned finish | Total float | Free float | Constraint | user_text8 | CA | WP/PP | Work Package Name | JUICE UVS Phases | EVT | NASA Phase | JUICE-UVS CAMs | OBS | P6 EVT | JUICE-UVS Charge #s | SubC | LOE | JUICE-UVS Phase CD |
| --- | --- | --- | --- | --- | --- | --- | --- | --- | --- | --- | --- | --- | --- | --- | --- | --- | --- | --- | --- | --- | --- | --- | --- | --- | --- | --- |
|  | 03 | **SETI** |  | 2016-10-03 | 2022-09-21 |  |  |  |  |  |  |  |  |  |  |  |  |  |  |  |  |  |  |  |  |  |
|  | 01 | **SETI Phase C/D** |  | 2016-10-03 | 2022-09-21 |  |  |  |  |  |  |  |  |  |  |  |  |  |  |  |  |  |  |  |  |  |
| JUICE-UVS 11586 |  | SETI Support FY 17 Phase C Start | 250d | 2016-10-03 A | 2017-09-29 A | JUICE-UVS 0011 | 100% |  |  |  |  |  | CK | 04 | 04.02.03.01 | CO-I SETI | Phase C | LOE | C | Cyndi | SSED | LOE | 19190.24.230 | SETI | LOE | PH CD |
| JUICE-UVS594591 |  | SETI Support - Oct FY 18 | 1d | 2017-10-26 A | 2017-10-26 A | JUICE-UVS 11586 | 100% |  |  |  |  |  |  | 04 | 04.02.03.01 |  | Phase C | LOE | C | Cyndi | SSED | LOE | 19190.24.230 |  | LOE | PH CD |
| JUICE-UVS594594 |  | SETI Support - Nov FY 18 | 1d | 2017-11-22 A | 2017-11-22 A | JUICE-UVS594591 | 100% |  |  |  |  |  |  | 04 | 04.02.03.01 |  | Phase C | LOE | C | Cyndi | SSED | LOE | 19190.24.230 |  | LOE | PH CD |
| JUICE-UVS594597 |  | SETI Support - Dec FY 18 | 1d | 2017-12-21 A | 2017-12-21 A | JUICE-UVS594594 | 100% |  |  |  |  |  |  | 04 | 04.02.03.01 |  | Phase C | LOE | C | Cyndi | SSED | LOE | 19190.24.230 |  | LOE | PH CD |
| JUICE-UVS594600 |  | SETI Support - Jan FY 18 | 1d | 2018-02-01 A | 2018-02-01 A | JUICE-UVS594597 | 100% |  |  |  |  |  |  | 04 | 04.02.03.01 |  | Phase C | LOE | C | Cyndi | SSED | LOE | 19190.24.230 |  | LOE | PH CD |
| JUICE-UVS594603 |  | SETI Support - Feb FY 18 | 1d | 2018-03-01 A | 2018-03-01 A | JUICE-UVS594600 | 100% |  |  |  |  |  |  | 04 | 04.02.03.01 |  | Phase C | LOE | C | Cyndi | SSED | LOE | 19190.24.230 |  | LOE | PH CD |
| JUICE-UVS594606 |  | SETI Support - Mar FY 18 | 1d | 2018-03-29 A | 2018-03-29 A | JUICE-UVS594603 | 100% |  |  |  |  |  |  | 04 | 04.02.03.01 |  | Phase C | LOE | C | Cyndi | SSED | LOE | 19190.24.230 |  | LOE | PH CD |
| JUICE-UVS594609 |  | SETI Support - Apr FY 18 | 1d | 2018-04-26 A | 2018-04-26 A | JUICE-UVS594606 | 100% |  |  |  |  |  |  | 04 | 04.02.03.01 |  | Phase C | LOE | C | Cyndi | SSED | LOE | 19190.24.230 |  | LOE | PH CD |
| JUICE-UVS594612 |  | SETI Support - May FY 18 | 1d | 2018-05-24 A | 2018-05-24 A | JUICE-UVS594609 | 100% | 2018-06-25 | 2018-06-25 |  |  |  |  | 04 | 04.02.03.01 |  | Phase C | LOE | C | Cyndi | SSED | LOE | 19190.24.230 |  | LOE | PH CD |
| JUICE-UVS594615 |  | SETI Support - Jun FY 18 | 1d | 2018-06-21 A | 2018-06-21 A | JUICE-UVS594612 | 100% |  |  |  |  |  |  | 04 | 04.02.03.01 |  | Phase C | LOE | C | Cyndi | SSED | LOE | 19190.24.230 |  | LOE | PH CD |
| JUICE-UVS594618 |  | SETI Support - Jul FY 18 | 1d | 2018-08-02 A | 2018-08-02 A | JUICE-UVS594615 | 100% |  |  |  |  |  |  | 04 | 04.02.03.01 |  | Phase C | LOE | C | Cyndi | SSED | LOE | 19190.24.230 |  | LOE | PH CD |
| JUICE-UVS594621 |  | SETI Support - Aug FY 18 | 1d | 2018-08-30 A | 2018-08-30 A | JUICE-UVS594618 | 100% |  |  |  |  |  |  | 04 | 04.02.03.01 |  | Phase C | LOE | C | Cyndi | SSED | LOE | 19190.24.230 |  | LOE | PH CD |
| JUICE-UVS594624 |  | SETI Support - Sep FY 18 | 1d | 2018-09-27 A | 2018-09-27 A | JUICE-UVS594621 | 100% |  |  |  |  |  |  | 04 | 04.02.03.01 |  | Phase C | LOE | C | Cyndi | SSED | LOE | 19190.24.230 |  | LOE | PH CD |
| JUICE-UVS594627 |  | SETI Support - Oct FY 19 | 1d | 2018-10-25 A | 2018-10-25 A | JUICE-UVS594624 | 100% |  |  |  |  |  |  | 04 | 04.02.03.01 |  | Phase C | LOE | C | Cyndi | SSED | LOE | 19190.24.230 |  | LOE | PH CD |
| JUICE-UVS594630 |  | SETI Support - Nov FY 19 | 1d | 2018-11-21 A | 2018-11-21 A | JUICE-UVS594627 | 100% |  |  |  |  |  |  | 04 | 04.02.03.01 |  | Phase C | LOE | C | Cyndi | SSED | LOE | 19190.24.230 |  | LOE | PH CD |
| JUICE-UVS594633 |  | SETI Support - Dec FY 19 | 1d | 2019-01-02 A | 2019-01-02 A | JUICE-UVS594630 | 100% |  |  |  |  |  |  | 04 | 04.02.03.01 |  | Phase C | LOE | C | Cyndi | SSED | LOE | 19190.24.230 |  | LOE | PH CD |
| JUICE-UVS594636 |  | SETI Support - Jan FY 19 | 1d | 2019-01-31 A | 2019-01-31 A | JUICE-UVS594633 | 100% |  |  |  |  |  |  | 04 | 04.02.03.01 |  | Phase C | LOE | C | Cyndi | SSED | LOE | 19190.24.230 |  | LOE | PH CD |
| JUICE-UVS594639 |  | SETI Support - Feb FY 19 | 1d | 2019-02-28 A | 2019-02-28 A | JUICE-UVS594636 | 100% |  |  |  |  | start on or after 2019-02-28 |  | 04 | 04.02.03.01 |  | Phase C | LOE | C | Cyndi | SSED | LOE | 19190.24.230 |  | LOE | PH CD |
| JUICE-UVS594642 |  | SETI Support - Mar FY 19 | 1d | 2019-03-28 A | 2019-03-28 A | JUICE-UVS594639 | 100% |  |  |  |  | start on or after 2019-03-28 |  | 04 | 04.02.03.01 |  | Phase C | LOE | C | Cyndi | SSED | LOE | 19190.24.230 |  | LOE | PH CD |
| JUICE-UVS594645 |  | SETI Support - Apr FY 19 | 1d | 2019-04-25 A | 2019-04-25 A | JUICE-UVS594642 | 100% |  |  |  |  | start on or after 2019-04-25 |  | 04 | 04.02.03.01 |  | Phase C | LOE | C | Cyndi | SSED | LOE | 19190.24.230 |  | LOE | PH CD |
| JUICE-UVS594648 |  | SETI Support - May FY 19 | 1d | 2019-05-23 A | 2019-05-23 A | JUICE-UVS594645 | 100% |  |  |  |  | start on or after 2019-05-23 |  | 04 | 04.02.03.01 |  | Phase C | LOE | C | Cyndi | SSED | LOE | 19190.24.230 |  | LOE | PH CD |
| JUICE-UVS594651 |  | SETI Support - Jun FY 19 | 1d | 2019-07-03 A | 2019-07-03 A | JUICE-UVS594648 | 100% |  |  |  |  | start on or after 2019-07-03 |  | 04 | 04.02.03.01 |  | Phase C | LOE | C | Cyndi | SSED | LOE | 19190.24.230 |  | LOE | PH CD |
| JUICE-UVS594654 |  | SETI Support - Jul FY 19 | 1d | 2019-08-01 A | 2019-08-01 A | JUICE-UVS594651 | 100% |  |  |  |  | start on or after 2019-08-01 |  | 04 | 04.02.03.01 |  | Phase C | LOE | C | Cyndi | SSED | LOE | 19190.24.230 |  | LOE | PH CD |
| JUICE-UVS594657 |  | SETI Support - Aug FY 19 | 1d | 2019-08-29 A | 2019-08-29 A | JUICE-UVS594654 | 100% |  |  |  |  | start on or after 2019-08-29 |  | 04 | 04.02.03.01 |  | Phase C | LOE | C | Cyndi | SSED | LOE | 19190.24.230 |  | LOE | PH CD |
| JUICE-UVS594660 |  | SETI Support - Sep FY 19 | 1d | 2019-09-26 A | 2019-09-26 A | JUICE-UVS594657 | 100% |  |  |  |  | start on or after 2019-09-26 |  | 04 | 04.02.03.01 |  | Phase C | LOE | C | Cyndi | SSED | LOE | 19190.24.230 |  | LOE | PH CD |
| JUICE-UVS594663 |  | SETI Support - Oct FY 20 | 1d | 2019-10-24 A | 2019-10-24 A | JUICE-UVS594660 | 100% |  |  |  |  | start on or after 2019-10-24 |  | 04 | 04.02.03.01 |  | Phase C | LOE | C | Cyndi | SSED | LOE | 19190.24.230 |  | LOE | PH CD |
| JUICE-UVS594666 |  | SETI Support - Nov FY 20 | 1d | 2019-11-20 A | 2019-11-20 A | JUICE-UVS594663 | 100% |  |  |  |  | start on or after 2019-11-20 |  | 04 | 04.02.03.01 |  | Phase C | LOE | C | Cyndi | SSED | LOE | 19190.24.230 |  | LOE | PH CD |
| JUICE-UVS594669 |  | SETI Support - Dec FY 20 | 1d | 2020-01-02 | 2020-01-02 | JUICE-UVS594666 |  |  |  | 649d | 19d | start on or after 2020-01-02 |  | 04 | 04.02.03.01 |  | Phase C | LOE | C | Cyndi | SSED | LOE | 19190.24.230 |  | LOE | PH CD |
| JUICE-UVS594672 |  | SETI Support - Jan FY 20 | 1d | 2020-01-30 | 2020-01-30 | JUICE-UVS594669 |  |  |  | 630d | 19d | start on or after 2020-01-30 |  | 04 | 04.02.03.01 |  | Phase C | LOE | C | Cyndi | SSED | LOE | 19190.24.230 |  | LOE | PH CD |
| JUICE-UVS594675 |  | SETI Support - Feb FY 20 | 1d | 2020-02-27 | 2020-02-27 | JUICE-UVS594672 |  |  |  | 611d | 19d | start on or after 2020-02-27 |  | 04 | 04.02.03.01 |  | Phase C | LOE | C | Cyndi | SSED | LOE | 19190.24.230 |  | LOE | PH CD |
| JUICE-UVS594678 |  | SETI Support - Mar FY 20 | 1d | 2020-03-26 | 2020-03-26 | JUICE-UVS594675 |  |  |  | 592d | 19d | start on or after 2020-03-26 |  | 04 | 04.02.03.01 |  | Phase C | LOE | C | Cyndi | SSED | LOE | 19190.24.230 |  | LOE | PH CD |
| JUICE-UVS594681 |  | SETI Support - Apr FY 20 | 1d | 2020-04-23 | 2020-04-23 | JUICE-UVS594678 |  |  |  | 573d | 19d | start on or after 2020-04-23 |  | 04 | 04.02.03.01 |  | Phase C | LOE | C | Cyndi | SSED | LOE | 19190.24.230 |  | LOE | PH CD |
| JUICE-UVS594684 |  | SETI Support - May FY 20 | 1d | 2020-05-21 | 2020-05-21 | JUICE-UVS594681 |  |  |  | 554d | 27d | start on or after 2020-05-21 |  | 04 | 04.02.03.01 |  | Phase C | LOE | C | Cyndi | SSED | LOE | 19190.24.230 |  | LOE | PH CD |
| JUICE-UVS594687 |  | SETI Support - Jun FY 20 | 1d | 2020-07-02 | 2020-07-02 | JUICE-UVS594684 |  |  |  | 527d | 18d | start on or after 2020-07-02 |  | 04 | 04.02.03.01 |  | Phase C | LOE | C | Cyndi | SSED | LOE | 19190.24.230 |  | LOE | PH CD |
| JUICE-UVS594690 |  | SETI Support - Jul FY 20 | 1d | 2020-07-30 | 2020-07-30 | JUICE-UVS594687 |  |  |  | 509d | 19d | start on or after 2020-07-30 |  | 04 | 04.02.03.01 |  | Phase C | LOE | C | Cyndi | SSED | LOE | 19190.24.230 |  | LOE | PH CD |
| JUICE-UVS594693 |  | SETI Support - Aug FY 20 | 1d | 2020-08-27 | 2020-08-27 | JUICE-UVS594690 |  |  |  | 490d | 17d | start on or after 2020-08-27 |  | 04 | 04.02.03.01 |  | Phase C | LOE | C | Cyndi | SSED | LOE | 19190.24.230 |  | LOE | PH CD |
| JUICE-UVS594696 |  | SETI Support - Sep FY 20 | 1d | 2020-09-24 | 2020-09-24 | JUICE-UVS594693 |  |  |  | 473d | 19d | start on or after 2020-09-24 |  | 04 | 04.02.03.01 |  | Phase C | LOE | C | Cyndi | SSED | LOE | 19190.24.230 |  | LOE | PH CD |
| JUICE-UVS594699 |  | SETI Support - Oct FY 21 | 1d | 2020-10-22 | 2020-10-22 | JUICE-UVS594696 |  |  |  | 454d | 27d | start on or after 2020-10-22 |  | 04 | 04.02.03.01 |  | Phase C | LOE | C | Cyndi | SSED | LOE | 19190.24.230 |  | LOE | PH CD |
| JUICE-UVS594702 |  | SETI Support - Nov FY 21 | 1d | 2020-12-03 | 2020-12-03 | JUICE-UVS594699 |  |  |  | 427d | 17d | start on or after 2020-12-03 |  | 04 | 04.02.03.01 |  | Phase C | LOE | C | Cyndi | SSED | LOE | 19190.24.230 |  | LOE | PH CD |
| JUICE-UVS594705 |  | SETI Support - Dec FY 21 | 1d | 2020-12-31 | 2020-12-31 | JUICE-UVS594702 |  |  |  | 410d | 18d | start on or after 2020-12-31 |  | 04 | 04.02.03.01 |  | Phase C | LOE | C | Cyndi | SSED | LOE | 19190.24.230 |  | LOE | PH CD |
| JUICE-UVS594708 |  | SETI Support - Jan FY 21 | 1d | 2021-01-28 | 2021-01-28 | JUICE-UVS594705 |  |  |  | 392d | 19d | start on or after 2021-01-28 |  | 04 | 04.02.03.01 |  | Phase C | LOE | C | Cyndi | SSED | LOE | 19190.24.230 |  | LOE | PH CD |
| JUICE-UVS594711 |  | SETI Support - Feb FY 21 | 1d | 2021-02-25 | 2021-02-25 | JUICE-UVS594708 |  |  |  | 373d | 19d | start on or after 2021-02-25 |  | 04 | 04.02.03.01 |  | Phase C | LOE | C | Cyndi | SSED | LOE | 19190.24.230 |  | LOE | PH CD |
| JUICE-UVS594714 |  | SETI Support - Mar FY 21 | 1d | 2021-03-25 | 2021-03-25 | JUICE-UVS594711 |  |  |  | 354d | 19d | start on or after 2021-03-25 |  | 04 | 04.02.03.01 |  | Phase C | LOE | C | Cyndi | SSED | LOE | 19190.24.230 |  | LOE | PH CD |
| JUICE-UVS594717 |  | SETI Support - Apr FY 21 | 1d | 2021-04-22 | 2021-04-22 | JUICE-UVS594714 |  |  |  | 335d | 27d | start on or after 2021-04-22 |  | 04 | 04.02.03.01 |  | Phase C | LOE | C | Cyndi | SSED | LOE | 19190.24.230 |  | LOE | PH CD |
| JUICE-UVS594720 |  | SETI Support - May FY 21 | 1d | 2021-06-03 | 2021-06-03 | JUICE-UVS594717 |  |  |  | 308d | 19d | start on or after 2021-06-03 |  | 04 | 04.02.03.01 |  | Phase C | LOE | C | Cyndi | SSED | LOE | 19190.24.230 |  | LOE | PH CD |
| JUICE-UVS594723 |  | SETI Support - Jun FY 21 | 1d | 2021-07-01 | 2021-07-01 | JUICE-UVS594720 |  |  |  | 289d | 17d | start on or after 2021-07-01 |  | 04 | 04.02.03.01 |  | Phase C | LOE | C | Cyndi | SSED | LOE | 19190.24.230 |  | LOE | PH CD |
| JUICE-UVS594726 |  | SETI Support - Jul FY 21 | 1d | 2021-07-29 | 2021-07-29 | JUICE-UVS594723 |  |  |  | 272d | 19d | start on or after 2021-07-29 |  | 04 | 04.02.03.01 |  | Phase C | LOE | C | Cyndi | SSED | LOE | 19190.24.230 |  | LOE | PH CD |
| JUICE-UVS594729 |  | SETI Support - Aug FY 21 | 1d | 2021-08-26 | 2021-08-26 | JUICE-UVS594726 |  |  |  | 253d | 17d | start on or after 2021-08-26 |  | 04 | 04.02.03.01 |  | Phase C | LOE | C | Cyndi | SSED | LOE | 19190.24.230 |  | LOE | PH CD |
| JUICE-UVS594732 |  | SETI Support - Sep FY 21 | 1d | 2021-09-23 | 2021-09-23 | JUICE-UVS594729 |  |  |  | 236d | 19d | start on or after 2021-09-23 |  | 04 | 04.02.03.01 |  | Phase C | LOE | C | Cyndi | SSED | LOE | 19190.24.230 |  | LOE | PH CD |
| JUICE-UVS594735 |  | SETI Support - Oct FY 22 | 1d | 2021-10-21 | 2021-10-21 | JUICE-UVS594732 |  |  |  | 217d | 27d | start on or after 2021-10-21 |  | 04 | 04.02.03.01 |  | Phase C | LOE | C | Cyndi | SSED | LOE | 19190.24.230 |  | LOE | PH CD |
| JUICE-UVS594738 |  | SETI Support - Nov FY 22 | 1d | 2021-12-02 | 2021-12-02 | JUICE-UVS594735 |  |  |  | 190d | 17d | start on or after 2021-12-02 |  | 04 | 04.02.03.01 |  | Phase C | LOE | C | Cyndi | SSED | LOE | 19190.24.230 |  | LOE | PH CD |
| JUICE-UVS594741 |  | SETI Support - Dec FY 22 | 1d | 2021-12-30 | 2021-12-30 | JUICE-UVS594738 |  |  |  | 173d | 23d | start on or after 2021-12-30 |  | 04 | 04.02.03.01 |  | Phase C | LOE | C | Cyndi | SSED | LOE | 19190.24.230 |  | LOE | PH CD |
| JUICE-UVS594744 |  | SETI Support - Jan FY 22 | 1d | 2022-02-03 | 2022-02-03 | JUICE-UVS594741 |  |  |  | 150d | 19d | start on or after 2022-02-03 |  | 04 | 04.02.03.01 |  | Phase C | LOE | C | Cyndi | SSED | LOE | 19190.24.230 |  | LOE | PH CD |
| JUICE-UVS594747 |  | SETI Support - Feb FY 22 | 1d | 2022-03-03 | 2022-03-03 | JUICE-UVS594744 |  |  |  | 131d | 19d | start on or after 2022-03-03 |  | 04 | 04.02.03.01 |  | Phase C | LOE | C | Cyndi | SSED | LOE | 19190.24.230 |  | LOE | PH CD |
| JUICE-UVS594750 |  | SETI Support - Mar FY 22 | 1d | 2022-03-31 | 2022-03-31 | JUICE-UVS594747 |  |  |  | 112d | 19d | start on or after 2022-03-31 |  | 04 | 04.02.03.01 |  | Phase C | LOE | C | Cyndi | SSED | LOE | 19190.24.230 |  | LOE | PH CD |
| JUICE-UVS594753 |  | SETI Support - Apr FY 22 | 1d | 2022-04-28 | 2022-04-28 | JUICE-UVS594750 |  |  |  | 93d | 19d | start on or after 2022-04-28 |  | 04 | 04.02.03.01 |  | Phase C | LOE | C | Cyndi | SSED | LOE | 19190.24.230 |  | LOE | PH CD |
| JUICE-UVS594756 |  | SETI Support - May FY 22 | 1d | 2022-05-26 | 2022-05-26 | JUICE-UVS594753 |  |  |  | 74d | 17d | start on or after 2022-05-26 |  | 04 | 04.02.03.01 |  | Phase C | LOE | C | Cyndi | SSED | LOE | 19190.24.230 |  | LOE | PH CD |
| JUICE-UVS594759 |  | SETI Support - Jun FY 22 | 1d | 2022-06-23 | 2022-06-23 | JUICE-UVS594756 |  |  |  | 57d | 17d | start on or after 2022-06-23 |  | 04 | 04.02.03.01 |  | Phase C | LOE | C | Cyndi | SSED | LOE | 19190.24.230 |  | LOE | PH CD |
| JUICE-UVS594762 |  | SETI Support - Jul FY 22 | 1d | 2022-07-21 | 2022-07-21 | JUICE-UVS594759 |  |  |  | 40d | 29d | start on or after 2022-07-21 |  | 04 | 04.02.03.01 |  | Phase C | LOE | C | Cyndi | SSED | LOE | 19190.24.230 |  | LOE | PH CD |
| JUICE-UVS594765 |  | SETI Support - Aug FY 22 | 1d | 2022-09-01 | 2022-09-01 | JUICE-UVS594762 |  |  |  | 11d |  | start on or after 2022-09-01 |  | 04 | 04.02.03.01 |  | Phase C | LOE | C | Cyndi | SSED | LOE | 19190.24.230 |  | LOE | PH CD |
| JUICE-UVS594768 |  | SETI Support - Sep FY 22 | 1d | 2022-09-21 | 2022-09-21 | JUICE-UVS594765 |  |  |  | 0d |  | start on or after 2022-09-21 |  | 04 | 04.02.03.01 |  | Phase C | LOE | C | Cyndi | SSED | LOE | 19190.24.230 |  | LOE | PH CD |

Notes:
- JUICE-UVS594621: Justify: Changed from LOE to Task Dependant for more accurate EVM Cost Reporting
- JUICE-UVS594624: Justify: Changed from LOE to Task Dependant for more accurate EVM Cost Reporting
- JUICE-UVS594627: Justify: Changed from LOE to Task Dependant for more accurate EVM Cost Reporting
- JUICE-UVS594630: Justify: Changed from LOE to Task Dependant for more accurate EVM Cost Reporting
- JUICE-UVS594633: Justify: Changed from LOE to Task Dependant for more accurate EVM Cost Reporting
- JUICE-UVS594636: Justify: Changed from LOE to Task Dependant for more accurate EVM Cost Reporting
- JUICE-UVS594639: Justify: Changed from LOE to Task Dependant for more accurate EVM Cost Reporting
- JUICE-UVS594642: Justify: Changed from LOE to Task Dependant for more accurate EVM Cost Reporting
- JUICE-UVS594645: Justify: Changed from LOE to Task Dependant for more accurate EVM Cost Reporting
- JUICE-UVS594648: Justify: Changed from LOE to Task Dependant for more accurate EVM Cost Reporting
- JUICE-UVS594651: Justify: Changed from LOE to Task Dependant for more accurate EVM Cost Reporting
- JUICE-UVS594654: Justify: Changed from LOE to Task Dependant for more accurate EVM Cost Reporting
- JUICE-UVS594657: Justify: Changed from LOE to Task Dependant for more accurate EVM Cost Reporting
- JUICE-UVS594660: Justify: Changed from LOE to Task Dependant for more accurate EVM Cost Reporting
- JUICE-UVS594663: Justify: Changed from LOE to Task Dependant for more accurate EVM Cost Reporting
- JUICE-UVS594666: Justify: Changed from LOE to Task Dependant for more accurate EVM Cost Reporting
- JUICE-UVS594669: Justify: Changed from LOE to Task Dependant for more accurate EVM Cost Reporting
- JUICE-UVS594672: Justify: Changed from LOE to Task Dependant for more accurate EVM Cost Reporting
- JUICE-UVS594675: Justify: Changed from LOE to Task Dependant for more accurate EVM Cost Reporting
- JUICE-UVS594678: Justify: Changed from LOE to Task Dependant for more accurate EVM Cost Reporting
- JUICE-UVS594681: Justify: Changed from LOE to Task Dependant for more accurate EVM Cost Reporting
- JUICE-UVS594684: Justify: Changed from LOE to Task Dependant for more accurate EVM Cost Reporting
- JUICE-UVS594687: Justify: Changed from LOE to Task Dependant for more accurate EVM Cost Reporting
- JUICE-UVS594690: Justify: Changed from LOE to Task Dependant for more accurate EVM Cost Reporting
- JUICE-UVS594693: Justify: Changed from LOE to Task Dependant for more accurate EVM Cost Reporting
- JUICE-UVS594696: Justify: Changed from LOE to Task Dependant for more accurate EVM Cost Reporting
- JUICE-UVS594699: Justify: Changed from LOE to Task Dependant for more accurate EVM Cost Reporting
- JUICE-UVS594702: Justify: Changed from LOE to Task Dependant for more accurate EVM Cost Reporting
- JUICE-UVS594705: Justify: Changed from LOE to Task Dependant for more accurate EVM Cost Reporting
- JUICE-UVS594708: Justify: Changed from LOE to Task Dependant for more accurate EVM Cost Reporting
- JUICE-UVS594711: Justify: Changed from LOE to Task Dependant for more accurate EVM Cost Reporting
- JUICE-UVS594714: Justify: Changed from LOE to Task Dependant for more accurate EVM Cost Reporting
- JUICE-UVS594717: Justify: Changed from LOE to Task Dependant for more accurate EVM Cost Reporting
- JUICE-UVS594720: Justify: Changed from LOE to Task Dependant for more accurate EVM Cost Reporting
- JUICE-UVS594723: Justify: Changed from LOE to Task Dependant for more accurate EVM Cost Reporting
- JUICE-UVS594726: Justify: Changed from LOE to Task Dependant for more accurate EVM Cost Reporting
- JUICE-UVS594729: Justify: Changed from LOE to Task Dependant for more accurate EVM Cost Reporting
- JUICE-UVS594732: Justify: Changed from LOE to Task Dependant for more accurate EVM Cost Reporting
- JUICE-UVS594735: Justify: Changed from LOE to Task Dependant for more accurate EVM Cost Reporting
- JUICE-UVS594738: Justify: Changed from LOE to Task Dependant for more accurate EVM Cost Reporting
- JUICE-UVS594741: Justify: Changed from LOE to Task Dependant for more accurate EVM Cost Reporting
- JUICE-UVS594744: Justify: Changed from LOE to Task Dependant for more accurate EVM Cost Reporting
- JUICE-UVS594747: Justify: Changed from LOE to Task Dependant for more accurate EVM Cost Reporting
- JUICE-UVS594750: Justify: Changed from LOE to Task Dependant for more accurate EVM Cost Reporting
- JUICE-UVS594753: Justify: Changed from LOE to Task Dependant for more accurate EVM Cost Reporting
- JUICE-UVS594756: Justify: Changed from LOE to Task Dependant for more accurate EVM Cost Reporting
- JUICE-UVS594759: Justify: Changed from LOE to Task Dependant for more accurate EVM Cost Reporting
- JUICE-UVS594762: Justify: Changed from LOE to Task Dependant for more accurate EVM Cost Reporting
- JUICE-UVS594765: Justify: Changed from LOE to Task Dependant for more accurate EVM Cost Reporting
- JUICE-UVS594768: Justify: Changed from LOE to Task Dependant for more accurate EVM Cost Reporting

| ID | WBS | Activity | Type | Duration | Start | Finish | Predecessors | Complete | Planned start | Planned finish | CA | WP/PP | Work Package Name | Justify | JUICE UVS Phases | EVT | JUICE-UVS CAMs | OBS | P6 EVT | JUICE-UVS Charge #s | JUICE-UVS Phase CD | user_text2 | user_text8 | NASA Phase | user_text6 | BUDG - Budget Phase | SORT - Item Sort | JUICE UVS Phase CD | PHAS - Alice (Old) | PERT - Pert Select | Work Package | user_text1 JUICE-UVS Risk ID | M/S | JUICE-UVS Resources | Forecast Chg | JUICE-UVS FM CP | JUICE-UVS CP | user_text4 |
| --- | --- | --- | --- | --- | --- | --- | --- | --- | --- | --- | --- | --- | --- | --- | --- | --- | --- | --- | --- | --- | --- | --- | --- | --- | --- | --- | --- | --- | --- | --- | --- | --- | --- | --- | --- | --- | --- | --- |
|  | 03 | **Mission Design & Analysis** |  |  | 2017-08-01 | 2017-08-14 |  |  |  |  |  |  |  |  |  |  |  |  |  |  |  |  |  |  |  |  |  |  |  |  |  |  |  |  |  |  |  |  |
| JUICE-UVS 593622 |  | Instrument Operations Concept Document (IOCD) SE - 19 |  | 10d | 2017-08-01 A | 2017-08-14 A | JUICE-UVS 0023 | 100% |  |  | 04 | 04.03 | Mission Design & Analysis | PM Directed SDRL Deliverable Start Date for CDR | Phase C | % C | Cyndi | SSED | 50-50 | 19190.24.310 | PH CD |  |  |  |  |  |  |  |  |  |  |  |  |  |  |  |  |  |
|  | 05 | **UVS Instrument Development** |  |  | 2016-10-03 | 2020-03-23 |  |  |  |  |  |  |  |  |  |  |  |  |  |  |  |  |  |  |  |  |  |  |  |  |  |  |  |  |  |  |  |  |
|  | 01 | **Mechanical** |  |  | 2016-10-03 | 2020-03-23 |  |  |  |  |  |  |  |  |  |  |  |  |  |  |  |  |  |  |  |  |  |  |  |  |  |  |  |  |  |  |  |  |
|  | 01 | **Structure/Housing** |  |  | 2016-11-28 | 2020-03-23 |  |  |  |  |  |  |  |  |  |  |  |  |  |  |  |  |  |  |  |  |  |  |  |  |  |  |  |  |  |  |  |  |
|  | 01 | **EM Structure/Housing** |  |  | 2017-04-17 | 2017-09-05 |  |  |  |  |  |  |  |  |  |  |  |  |  |  |  |  |  |  |  |  |  |  |  |  |  |  |  |  |  |  |  |  |
| JUICE-UVS 593271 |  | EM 2 Housing Plating |  | 15d | 2017-04-17 A | 2017-05-05 A | JUICE-UVS 0023 | 100% |  |  | 05.01 | 05.01.01.01 | EM Structural Housing Fab C/D |  | Phase C | % C | Brandon | DSI | 0-100 | 19190.25.110 | PH CD | DS1 |  |  |  |  |  |  |  |  |  |  |  |  |  |  |  |  |
| JUICE-UVS 591783 |  | EM 2 Mechanical Part Kitting |  | 1d | 2017-05-10 A | 2017-05-10 A | JUICE-UVS 593373, JUICE-UVS 593271 | 100% |  |  | 05.01 | 05.01.01.01 | EM Structural Housing Fab C/D |  | Phase C | % C | Brandon | DSI | 0-100 | 19190.25.110 | PH CD | DS1 | BW | C |  |  |  |  |  |  |  |  |  |  |  |  |  |  |
| JUICE-UVS 591780 |  | EM 2 Mechanical Assembly |  | 79d | 2017-05-11 A | 2017-09-05 A | JUICE-UVS 591783, JUICE-UVS 592047 FF, JUICE-UVS 592065 FF, JUICE-UVS 593280 | 100% |  |  | 05.01 | 05.01.01.01 | EM Structural Housing Fab C/D |  | Phase C | % C | Brandon | DSI | 50-50 | 19190.25.110 | PH CD | DS1 | BW | C |  |  |  |  |  |  |  |  |  |  |  |  |  |  |
|  | 02 | **FM Final Design** |  |  | 2017-02-03 | 2018-10-19 |  |  |  |  |  |  |  |  |  |  |  |  |  |  |  |  |  |  |  |  |  |  |  |  |  |  |  |  |  |  |  |  |
| JUICE-UVS 2581 |  | FM Housing Design Update |  | 76d | 2017-02-03 A | 2017-05-19 A | JUICE-UVS 0023, JUICE-UVS 4022 SS | 100% |  |  | 05.01 | 05.01.01.02 | FM Final Design |  | Phase C | % C | Brandon | DSI | 50-50 | 19190.25.111 | PH CD |  | BW | C | Phase B | B | MECH | PH CD |  |  |  |  |  |  |  |  |  |  |
| JUICE-UVS 2582 |  | FM Housing Dwgs |  | 57d | 2017-04-17 A | 2017-07-07 A | JUICE-UVS 593271 SS | 100% |  |  | 05.01 | 05.01.01.02 | FM Final Design |  | Phase C | % C | Brandon | DSI | 50-50 | 19190.25.111 | PH CD |  | BW | C | Phase B | B | MECH | PH CD | 613 | Y |  |  |  |  |  |  |  |  |
| JUICE-UVS 2586 |  | FM Housing Assy Dwg Update (inc. Ta plates & cover) |  | 62d | 2017-04-17 A | 2017-07-14 A | JUICE-UVS 2582 SS | 100% |  |  | 05.01 | 05.01.01.02 | FM Final Design |  | Phase C | % C | Brandon | DSI | 50-50 | 19190.25.111 | PH CD |  | BW | C | Phase B | B | MECH | PH CD | 613 | Y |  |  |  |  |  |  |  |  |
| JUICE-UVS 2058 |  | UVS Instrument S/C Mechanical/Thermal ICD - Draft |  | 44d | 2017-05-22 A | 2017-07-25 A | JUICE-UVS 2581 | 100% |  |  | 05.01 | 05.01.01.02 | FM Final Design | Mandated Start Date to wait for CDR | Phase C | % C | Brandon | DSI | 50-50 | 19190.25.111 | PH CD |  | MFA | C |  | B+ | SYS ENG |  |  |  | 2.2.1 |  |  |  |  |  |  |  |
| JUICE-UVS 592488 |  | UVS Instrument S/C Mechanical/Thermal ICD - Final |  | 57d | 2017-05-22 A | 2017-08-11 A | JUICE-UVS 2058 SS | 100% |  |  | 05.01 | 05.01.01.02 | FM Final Design |  | Phase C | % C | Brandon | DSI | 50-50 | 19190.25.111 | PH CD |  | MFA | C |  | B+ | SYS ENG |  |  |  | 2.2.1 |  |  |  |  |  |  |  |
| JUICE-UVS 5235 |  | Receive Final Thermal Inputs from ESA/ADS | milestone | 0d | 2017-05-30 A | 2017-05-30 A |  | 100% |  |  | 05.01 | 05.01.01.02 | FM Final Design |  | Phase C | % C | Brandon | DSI | 0-100 | 19190.25.111 | PH CD |  | BW |  |  |  |  |  |  |  |  | Risk ID 20 | R | 0Budget |  |  |  |  |
| JUICE-UVS 5232 |  | Full Peer Review and update of all Housing Dwgs. |  | 37d | 2017-06-26 A | 2017-08-16 A | JUICE-UVS 2586 | 100% |  |  | 05.01 | 05.01.01.02 | FM Final Design |  | Phase C | % C | Brandon | DSI | 0-100 | 19190.25.111 | PH CD |  | BW | C |  |  |  |  |  |  |  |  |  |  |  |  |  |  |
| JUICE-UVS 592536 |  | Heater Design - Final |  | 5d | 2018-02-19 A | 2018-02-23 A | JUICE-UVS 592533 | 100% |  |  | 05.01 | 05.01.01.02 | FM Final Design |  | Phase C | % C | Brandon | DSI | 0-100 | 19190.25.111 | PH CD |  | BW |  |  |  |  |  |  |  |  | Risk ID 20 |  |  |  |  |  |  |
| JUICE-UVS 592686 |  | Design & Drawings Heater Harness |  | 164d | 2018-03-01 A | 2018-10-19 A | JUICE-UVS 592536 | 100% | 2018-03-01 | 2018-10-23 | 05.01 | 05.01.01.02 | FM Final Design |  | Phase C | % C | Brandon | DSI | 50-50 | 19190.25.111 | PH CD |  |  |  |  |  |  |  |  |  |  |  |  |  | Y | FM CP |  |  |
|  | 03 | **FM Structure/Housing** |  |  | 2016-11-28 | 2019-03-22 |  |  |  |  |  |  |  |  |  |  |  |  |  |  |  |  |  |  |  |  |  |  |  |  |  |  |  |  |  |  |  |  |
|  | 01 | **FM Housing Fab** |  |  | 2017-09-28 | 2019-03-22 |  |  |  |  |  |  |  |  |  |  |  |  |  |  |  |  |  |  |  |  |  |  |  |  |  |  |  |  |  |  |  |  |
| JUICE-UVS 2606 |  | FM Housing Fab |  | 157d | 2017-09-28 A | 2018-05-11 A | JUICE-UVS 5232 | 100% |  |  | 05.01 | 05.01.01.03.01 | FM Housing Fab | Mandated Start Date to wait for CDR | Phase C | % C | Brandon | DSI | 50-50 | 19190.25.112 | PH CD |  | BW | C |  | C/D | MECH |  |  |  |  |  |  |  |  | FM CP | CP |  |
| JUICE-UVS 592569 |  | FS Housing Fab |  | 126d | 2017-11-17 A | 2018-05-18 A | JUICE-UVS 2606 SS | 100% |  |  | 05.01 | 05.01.01.03.01 | FM Housing Fab |  | Phase C | % C | Brandon | DSI | 50-50 | 19190.25.112 | PH CD |  | BW | C |  | C/D | MECH |  |  |  |  |  |  |  |  | FM CP |  |  |
| JUICE-UVS 592476 |  | FM Housing Bead Blast |  | 3d | 2018-05-14 A | 2018-05-16 A | JUICE-UVS 2606 | 100% |  |  | 05.01 | 05.01.01.03.01 | FM Housing Fab |  | Phase C | % C | Brandon | DSI | 0-100 | 19190.25.112 | PH CD |  | BW | C |  | C/D | MECH |  |  |  |  |  |  |  |  | FM CP | CP |  |
| JUICE-UVS 2620 |  | FM Housing Thermal Conditioning |  | 1d | 2018-05-17 A | 2018-05-17 A | JUICE-UVS 592476 | 100% |  |  | 05.01 | 05.01.01.03.01 | FM Housing Fab |  | Phase C | % C | Brandon | DSI | 0-100 | 19190.25.112 | PH CD |  | BW | C |  |  |  |  |  |  |  |  |  |  |  | FM CP | CP |  |
| JUICE-UVS 2622 |  | FM Housing Plating |  | 3d | 2018-05-18 A | 2018-05-22 A | JUICE-UVS 2620 | 100% |  |  | 05.01 | 05.01.01.03.01 | FM Housing Fab |  | Phase C | % C | Brandon | DSI | 50-50 | 19190.25.112 | PH CD |  | BW | C |  | C/D | MECH |  | 633 | Y |  |  |  |  |  | FM CP | CP | Mod |
| JUICE-UVS 592572 |  | FS Housing Bead Blast |  | 3d | 2018-05-21 A | 2018-05-23 A | JUICE-UVS 592569 | 100% |  |  | 05.01 | 05.01.01.03.01 | FM Housing Fab |  | Phase C | % C | Brandon | DSI | 0-100 | 19190.25.112 | PH CD |  | BW | C |  | C/D | MECH |  |  |  |  |  |  |  |  | FM CP |  |  |
| JUICE-UVS 592575 |  | FS Housing Thermal Conditioning |  | 1d | 2018-05-24 A | 2018-05-24 A | JUICE-UVS 592572 | 100% |  |  | 05.01 | 05.01.01.03.01 | FM Housing Fab |  | Phase C | % C | Brandon | DSI | 0-100 | 19190.25.112 | PH CD |  | BW | C |  |  |  |  |  |  |  |  |  |  |  | FM CP |  |  |
| JUICE-UVS 592578 |  | FS Housing Plating |  | 3d | 2018-05-29 A | 2018-05-31 A | JUICE-UVS 592575 | 100% |  |  | 05.01 | 05.01.01.03.01 | FM Housing Fab |  | Phase C | % C | Brandon | DSI | 50-50 | 19190.25.112 | PH CD |  | BW | C |  | C/D | MECH |  | 633 | Y |  |  |  |  |  | FM CP |  | Mod |
| JUICE-UVS 592545 |  | Fab Heater Harness |  | 10d | 2019-03-11 A | 2019-03-22 A | JUICE-UVS 592686 | 100% |  |  | 05.01 | 05.01.01.03.01 | FM Housing Fab |  | Phase C | % C | Brandon | DSI | 0-100 | 19190.25.112 | PH CD |  | BW |  |  |  |  |  |  |  |  |  |  |  | Y | FM CP |  |  |

Notes:
- JUICE-UVS 2622: Status Report: ?? Dur. chg from 10 to 3 / (09/08/09)
- JUICE-UVS 592578: Status Report: ?? Dur. chg from 10 to 3 / (09/08/09)

| ID | WBS | Activity | Duration | Start | Finish | Predecessors | Complete | Planned start | Planned finish | user_text6 | user_text8 | CA | WP/PP | Work Package Name | PHAS - Alice (Old) | BUDG - Budget Phase | SORT - Item Sort | PERT - Pert Select | JUICE UVS Phases | EVT | NASA Phase | JUICE-UVS CAMs | OBS | P6 EVT | JUICE-UVS Charge #s | JUICE-UVS FM CP | JUICE-UVS Phase CD | Justify | Forecast Chg |
| --- | --- | --- | --- | --- | --- | --- | --- | --- | --- | --- | --- | --- | --- | --- | --- | --- | --- | --- | --- | --- | --- | --- | --- | --- | --- | --- | --- | --- | --- |
|  | 02 | **FM Ta Plates** |  | 2017-05-30 | 2018-08-17 |  |  |  |  |  |  |  |  |  |  |  |  |  |  |  |  |  |  |  |  |  |  |  |  |
| JUICE-UVS 2650 |  | FM Ta Plates Design | 20d | 2017-05-30 A | 2017-06-26 A | JUICE-UVS 2581 | 100% |  |  | Phase B | BW | 05.01 | 05.01.01.03.02 | FM TA Plates | 613 | C/D | MECH | Y | Phase C | % C | C | Brandon | DSI | 50-50 | 19190.25.113 | FM CP | PH CD |  |  |
| JUICE-UVS 2652 |  | FM Ta Plates Detail Dwgs | 28d | 2017-06-27 A | 2017-08-04 A | JUICE-UVS 2650 | 100% |  |  | Phase B | BW | 05.01 | 05.01.01.03.02 | FM TA Plates | 613 | C/D | MECH | Y | Phase C | % C | C | Brandon | DSI | 50-50 | 19190.25.113 | FM CP | PH CD |  |  |
| JUICE-UVS 2658 |  | FM Ta Plates MPS | 3d | 2017-09-29 A | 2017-10-03 A | JUICE-UVS 2652 SS+10d | 100% |  |  |  |  | 05.01 | 05.01.01.03.02 | FM TA Plates |  |  |  |  | Phase C | % C |  | Brandon | DSI | 0-100 | 19190.25.113 | FM CP | PH CD | Mandated Start Date to wait for CDR |  |
| JUICE-UVS 2655 |  | FM Ta Plates Fab | 146d | 2017-10-26 A | 2018-05-24 A | JUICE-UVS593937, JUICE-UVS593934, JUICE-UVS 2658 | 100% | 2017-10-31 | 2018-05-31 |  | BW | 05.01 | 05.01.01.03.02 | FM TA Plates |  |  |  |  | Phase C | % C | C | Brandon | DSI | 50-50 | 19190.25.113 | FM CP | PH CD |  |  |
| JUICE-UVS 2656 |  | Bead Blast FM Ta Plates | 40d | 2018-06-22 A | 2018-08-17 A | JUICE-UVS 2655 | 100% |  |  |  | BW | 05.01 | 05.01.01.03.02 | FM TA Plates | 633 | C/D | MECH | Y | Phase C | % C | C | Brandon | DSI | 50-50 | 19190.25.113 | FM CP | PH CD | Activity has started | Y |
|  | 03 | **FM Housing Cover** |  | 2017-05-30 | 2018-11-27 |  |  |  |  |  |  |  |  |  |  |  |  |  |  |  |  |  |  |  |  |  |  |  |  |
| JUICE-UVS 592809 |  | FM Housing Cover DWG | 44d | 2017-05-30 A | 2017-07-31 A | JUICE-UVS 2581 | 100% |  |  |  |  | 05.01 | 05.01.01.03.03 | FM Housing Cover |  |  |  |  | Phase C | % C |  | Brandon | DSI | 0-100 | 19190.25.114 | FM CP | PH CD |  |  |
| JUICE-UVS 592812 |  | FM Housing Cover MPS | 44d | 2017-09-29 A | 2017-12-04 A | JUICE-UVS 592809 | 100% | 2017-09-29 | 2017-12-01 |  |  | 05.01 | 05.01.01.03.03 | FM Housing Cover |  |  |  |  | Phase C | % C |  | Brandon | DSI | 0-100 | 19190.25.114 | FM CP | PH CD | Mandated Start Date to wait for CDR |  |
| JUICE-UVS 2686 |  | Machine FM Housing Cover | 53d | 2018-01-18 A | 2018-04-02 A | JUICE-UVS 5232, JUICE-UVS 592812 | 100% |  |  |  | BW | 05.01 | 05.01.01.03.03 | FM Housing Cover | 633 | C/D | MECH | Y | Phase C | % C | C | Brandon | DSI | 50-50 | 19190.25.114 | FM CP | PH CD |  |  |
| JUICE-UVS 2688 |  | Plate FM Housing Cover | 15d | 2018-04-16 A | 2018-05-04 A | JUICE-UVS 2686 | 100% |  |  |  | BW | 05.01 | 05.01.01.03.03 | FM Housing Cover | 633 | C/D | MECH |  | Phase C | % C | C | Brandon | DSI | 50-50 | 19190.25.114 | FM CP | PH CD |  |  |
| JUICE-UVS 593148 |  | Install FM Radiator Coating | 108d | 2018-06-22 A | 2018-11-27 A | JUICE-UVS593940 | 100% |  |  |  |  | 05.01 | 05.01.01.03.03 | FM Housing Cover |  |  |  |  | Phase C | % C |  | Brandon | DSI | 50-50 | 19190.25.114 | FM CP | PH CD | Activity has started | Y |
|  | 04 | **FM Mechanical Pump Out Tube** |  | 2017-06-26 | 2018-05-11 |  |  |  |  |  |  |  |  |  |  |  |  |  |  |  |  |  |  |  |  |  |  |  |  |
| JUICE-UVS 592815 |  | FM POT DWG | 5d | 2017-06-26 A | 2017-06-30 A | JUICE-UVS 2581 | 100% |  |  |  |  | 05.01 | 05.01.01.03.04 | FM Pump Out Tube |  |  |  |  | Phase C | % C |  | Brandon | DSI | 0-100 | 19190.25.115 | FM CP | PH CD |  |  |
| JUICE-UVS 592818 |  | FM POT MPS | 3d | 2017-09-28 A | 2017-10-02 A | JUICE-UVS 592815 | 100% |  |  |  |  | 05.01 | 05.01.01.03.04 | FM Pump Out Tube |  |  |  |  | Phase C | % C |  | Brandon | DSI | 0-100 | 19190.25.115 | FM CP | PH CD | Mandated Start Date to wait for CDR |  |
| JUICE-UVS 2644 |  | Machine FM Pump Out Tube | 42d | 2017-10-03 A | 2017-12-04 A | JUICE-UVS 592818 | 100% | 2017-10-03 | 2017-12-01 |  | BW | 05.01 | 05.01.01.03.04 | FM Pump Out Tube | 633 | C/D | MECH | Y | Phase C | % C | C | Brandon | DSI | 50-50 | 19190.25.115 | FM CP | PH CD |  |  |
| JUICE-UVS 2660 |  | Plate FM Pump Out Tube | 5d | 2018-05-07 A | 2018-05-11 A | JUICE-UVS 2661, JUICE-UVS593943 | 100% |  |  |  | BW | 05.01 | 05.01.01.03.04 | FM Pump Out Tube | 633 | C/D | MECH |  | Phase C | % C | C | Brandon | DSI | 50-50 | 19190.25.115 | FM CP | PH CD | Project level Mandatory Finish Date |  |
|  | 05 | **FM Mechanical Mechanisms** |  | 2016-11-28 | 2018-08-24 |  |  |  |  |  |  |  |  |  |  |  |  |  |  |  |  |  |  |  |  |  |  |  |  |
| JUICE-UVS 5226 |  | Review & Approve Mechanisms SubContract Dcuments | 27d | 2016-11-28 A | 2017-01-06 A | JUICE-UVS 0023 | 100% |  |  |  | BW | 05.01 | 05.01.01.03.05 | FM Mechanisms |  |  |  |  | Phase C | % C | B | Brandon | DSI | 0-100 | 19190.25.116 | FM CP | PH CD |  |  |
| JUICE-UVS 2672 |  | FM Mechanisms Dwgs Update | 21d | 2017-05-30 A | 2017-06-27 A | JUICE-UVS 5226, JUICE-UVS 2581 | 100% |  |  |  | BW | 05.01 | 05.01.01.03.05 | FM Mechanisms | 613 | C/D | MECH | Y | Phase C | % C | C | Brandon | DSI | 50-50 | 19190.25.116 | FM CP | PH CD |  |  |
| JUICE-UVS 592821 |  | FM Mechanicism MPS | 44d | 2017-09-28 A | 2017-10-27 A | JUICE-UVS 2672 | 100% | 2017-09-28 | 2017-11-30 |  |  | 05.01 | 05.01.01.03.05 | FM Mechanisms |  |  |  |  | Phase C | % C |  | Brandon | DSI | 0-100 | 19190.25.116 | FM CP | PH CD | Mandated Start Date to wait for CDR |  |
| JUICE-UVS 2674 |  | Fab FM Mechanisms | 133d | 2018-02-16 A | 2018-08-24 A | JUICE-UVS593928, JUICE-UVS593925, JUICE-UVS593922, JUICE-UVS593919, JUICE-UVS 3571, JUICE-UVS 3514, JUICE-UVS 11676, JUICE-UVS 592375, JUICE-UVS 3579, JUICE-UVS 592821 | 100% |  |  |  | BW | 05.01 | 05.01.01.03.05 | FM Mechanisms | 633 | C/D | MECH | Y | Phase C | % C | C | Brandon | DSI | 50-50 | 19190.25.116 | FM CP | PH CD | Activity has started | Y |
|  | 06 | **FM Sensor Mechanical Piece Parts** |  | 2017-06-26 | 2019-01-07 |  |  |  |  |  |  |  |  |  |  |  |  |  |  |  |  |  |  |  |  |  |  |  |  |
| JUICE-UVS 5217 |  | Design Sensor Mech. piece parts | 15d | 2017-06-26 A | 2017-07-17 A | JUICE-UVS 5226, JUICE-UVS 2581 | 100% |  |  |  | BW | 05.01 | 05.01.01.03.06 | FM Mech Piece Parts |  |  |  |  | Phase C | % C | C | Brandon | DSI | 50-50 | 19190.25.910 | FM CP | PH CD |  |  |
| JUICE-UVS 592827 |  | FM Sensor Mechanical Parts DWG | 20d | 2017-09-15 A | 2017-10-12 A | JUICE-UVS 5217 | 100% |  |  |  |  | 05.01 | 05.01.01.03.06 | FM Mech Piece Parts |  |  |  |  | Phase C | % C |  | Brandon | DSI | 50-50 | 19190.25.910 | FM CP | PH CD | Mandated Start Date to wait for CDR |  |
| JUICE-UVS 592830 |  | FM Sensor Mechanical Parts MPS | 24d | 2017-10-13 A | 2017-11-15 A | JUICE-UVS 592827 | 100% |  |  |  |  | 05.01 | 05.01.01.03.06 | FM Mech Piece Parts |  |  |  |  | Phase C | % C |  | Brandon | DSI | 0-100 | 19190.25.910 | FM CP | PH CD |  |  |
| JUICE-UVS 5223 |  | Fab Sensor Mech. piece parts | 256d | 2017-11-16 A | 2019-01-07 A | JUICE-UVS 592830 | 100% | 2017-11-16 | 2018-11-26 |  | BW | 05.01 | 05.01.01.03.06 | FM Mech Piece Parts |  |  |  |  | Phase C | % C | C | Brandon | DSI | 50-50 | 19190.25.910 | FM CP | PH CD |  | Y |

Notes:
- JUICE-UVS 2656: Estimation: ?? Changed Dur from 15 to 5 per Steve / 8/5/09.
- JUICE-UVS 2660: Problem: ?? Changed logic; to FF Assemble Optic / Housing UVS2660

| ID | WBS | Activity | Duration | Start | Finish | Predecessors | Complete | Remaining | Planned start | Planned finish | Total float | Free float | Constraint | Expected finish | user_text2 | user_text8 | CA | WP/PP | Work Package Name | Justify | JUICE Mission Phases | JUICE UVS Phases | EVT | JUICE UVS Phase CD | NASA Phase | JUICE-UVS CAMs | OBS | P6 EVT | JUICE-UVS Charge #s | JUICE-UVS STM CP | JUICE-UVS Phase CD | user_text4 | Forecast Chg |
| --- | --- | --- | --- | --- | --- | --- | --- | --- | --- | --- | --- | --- | --- | --- | --- | --- | --- | --- | --- | --- | --- | --- | --- | --- | --- | --- | --- | --- | --- | --- | --- | --- | --- |
|  | 04 | **Structure/Thermal Model (STM)** |  | 2019-10-01 | 2020-03-23 |  |  |  |  |  |  |  |  |  |  |  |  |  |  |  |  |  |  |  |  |  |  |  |  |  |  |  |  |
|  | 01 | **STM Design** |  | 2019-10-01 | 2019-10-14 |  |  |  |  |  |  |  |  |  |  |  |  |  |  |  |  |  |  |  |  |  |  |  |  |  |  |  |  |
| JUICE-UVS 51112 |  | STM Housing & Plates Design | 5d | 2019-10-01 A | 2019-10-07 A | JUICE-UVS 2581 | 100% |  |  |  |  |  | start on or after 2019-10-01 |  | DS2 | BW | 05.01 | 05.01.01.04.01 | STM Design | Project Level Mandated Start Date | End B | Phase C | % C | PH CD | C | Brandon | DSI | 50-50 | 19190.25.140 | STM CP | PH CD |  |  |
| JUICE-UVS 593154 |  | STM Detector Elec Bd Design | 5d | 2019-10-01 A | 2019-10-07 A | JUICE-UVS 2581 | 100% |  |  |  |  |  | start on or after 2019-10-01 |  | DS2 |  | 05.01 | 05.01.01.04.01 | STM Design | Project Level Mandated Start Date |  | Phase C | % C |  |  | Brandon | DSI | 50-50 | 19190.25.140 | STM CP | PH CD | Mod |  |
| JUICE-UVS 593157 |  | STM Optics & Detector Design | 5d | 2019-10-01 A | 2019-10-07 A | JUICE-UVS 2581 | 100% |  |  |  |  |  | start on or after 2019-10-01 |  | DS2 |  | 05.01 | 05.01.01.04.01 | STM Design | Project Level Mandated Start Date |  | Phase C | % C |  |  | Brandon | DSI | 50-50 | 19190.25.140 | STM CP | PH CD | Mod |  |
| JUICE-UVS 593160 |  | STM Instrument Elec Bd Design | 5d | 2019-10-01 A | 2019-10-07 A | JUICE-UVS 2581 | 100% |  |  |  |  |  | start on or after 2019-10-01 |  | DS2 |  | 05.01 | 05.01.01.04.01 | STM Design | Project Level Mandated Start Date |  | Phase C | % C |  |  | Brandon | DSI | 50-50 | 19190.25.140 |  | PH CD | Mod |  |
| JUICE-UVS 591282 |  | STM Housing, Parts & Assy Drwgs | 5d | 2019-10-08 A | 2019-10-14 A | JUICE-UVS 593154, JUICE-UVS 593157, JUICE-UVS 51112, JUICE-UVS 593160 | 100% |  |  |  |  |  |  |  | DS2 | BW | 05.01 | 05.01.01.04.01 | STM Design |  |  | Phase C | % C |  | C | Brandon | DSI | 50-50 | 19190.25.140 | STM CP | PH CD | Mod |  |
|  | 02 | **STM Board Mass Models** |  | 2019-10-15 | 2019-10-15 |  |  |  |  |  |  |  |  |  |  |  |  |  |  |  |  |  |  |  |  |  |  |  |  |  |  |  |  |
|  | 01 | **STM Mass Model Elec Bds** |  | 2019-10-15 | 2019-10-15 |  |  |  |  |  |  |  |  |  |  |  |  |  |  |  |  |  |  |  |  |  |  |  |  |  |  |  |  |
| JUICE-UVS 51001 |  | STM Elec Bds Assy | 0d | 2019-10-15 A | 2019-10-15 A | JUICE-UVS 591282 | 100% |  |  |  |  |  |  |  | DS2 | BW | 05.01 | 05.01.01.04.02.01 | STM Elec Bd MMs |  |  | Phase C | % C |  | C | Brandon | DSI | 50-50 | 19190.25.141 | STM CP | PH CD | Mod | Y |
|  | 02 | **STM Mass Model Detector Electronic Boards** |  | 2019-10-15 | 2019-10-15 |  |  |  |  |  |  |  |  |  |  |  |  |  |  |  |  |  |  |  |  |  |  |  |  |  |  |  |  |
| JUICE-UVS 51109 |  | STM Detector Electronic Bd Fab | 0d | 2019-10-15 A | 2019-10-15 A | JUICE-UVS 591282 | 100% |  |  |  |  |  |  |  | DS2 | BW | 05.01 | 05.01.01.04.02.02 | STM Det MM |  |  | Phase C | % C |  | C | Brandon | DSI | 50-50 | 19190.25.142 | STM CP | PH CD |  | Y |
|  | 03 | **STM Optics & Detector Mass Models** |  | 2019-10-15 | 2020-01-28 |  |  |  |  |  |  |  |  |  |  |  |  |  |  |  |  |  |  |  |  |  |  |  |  |  |  |  |  |
|  | 01 | **STM Mass Model Grating** |  | 2019-10-15 | 2019-10-21 |  |  |  |  |  |  |  |  |  |  |  |  |  |  |  |  |  |  |  |  |  |  |  |  |  |  |  |  |
| JUICE-UVS 591291 |  | STM MM Grating Fab | 5d | 2019-10-15 A | 2019-10-21 A | JUICE-UVS 591282 | 100% |  |  |  |  |  |  |  | DS2 | BW | 05.01 | 05.01.01.04.03.01 | STM Grating |  |  | Phase C | % C |  | C | Brandon | DSI | 50-50 | 19190.25.143 | STM CP | PH CD |  | Y |
|  | 02 | **STM Mass Model Mirror** |  | 2019-10-22 | 2019-10-25 |  |  |  |  |  |  |  |  |  |  |  |  |  |  |  |  |  |  |  |  |  |  |  |  |  |  |  |  |
| JUICE-UVS 591297 |  | STM Mirror Fab | 5d | 2019-10-22 A | 2019-10-25 A | JUICE-UVS 591291, JUICE-UVS 591282 | 100% |  | 2019-10-22 | 2019-10-28 |  |  |  |  | DS2 | BW | 05.01 | 05.01.01.04.03.02 | STM Mirror |  |  | Phase C | % C |  | C | Brandon | DSI | 50-50 | 19190.25.144 | STM CP | PH CD |  | Y |
|  | 03 | **STM Mass Model Detector** |  | 2019-10-29 | 2020-01-28 |  |  |  |  |  |  |  |  |  |  |  |  |  |  |  |  |  |  |  |  |  |  |  |  |  |  |  |  |
| JUICE-UVS 591303 |  | STM Detector Fab | 5d | 2019-10-29 A | 2020-01-28 | JUICE-UVS 591297, JUICE-UVS 591282 | 50% | 43d | 2019-10-29 | 2019-11-04 | 5d | 0d | start on or after 2020-01-02 |  | DS2 | BW | 05.01 | 05.01.01.04.03.03 | STM DET |  |  | Phase C | % C |  | C | Brandon | DSI | 50-50 | 19190.25.145 | STM CP | PH CD |  | Y |
|  | 04 | **STM Mass Model Housing** |  | 2019-10-15 | 2020-01-02 |  |  |  |  |  |  |  |  |  |  |  |  |  |  |  |  |  |  |  |  |  |  |  |  |  |  |  |  |
| JUICE-UVS 51115 |  | STM Housing Fab | 2d | 2019-10-15 A | 2020-01-02 | JUICE-UVS593931, JUICE-UVS 591282 |  | 25d | 2019-10-15 | 2019-10-16 | 23d | 0d |  | 2020-01-02 | DS2 | BW | 05.01 | 05.01.01.04.04 | STM Housing |  | End B | Phase C | % C |  | C | Brandon | DSI | 50-50 | 19190.25.146 | STM CP | PH CD | Mod |  |
| JUICE-UVS 51118 |  | STM Plate Fab | 10d | 2019-10-15 A | 2020-01-02 | JUICE-UVS593946, JUICE-UVS 591282 | 50% | 25d | 2019-10-15 | 2019-10-28 | 23d | 0d |  | 2020-01-02 | DS2 | BW | 05.01 | 05.01.01.04.04 | STM Housing |  |  | Phase C | % C |  |  | Brandon | DSI | 50-50 | 19190.25.146 | STM CP | PH CD | Mod |  |
|  | 05 | **STM Mass Model Assembly** |  | 2020-01-29 | 2020-02-04 |  |  |  |  |  |  |  |  |  |  |  |  |  |  |  |  |  |  |  |  |  |  |  |  |  |  |  |  |
| JUICE-UVS 591285 |  | STM Assy | 5d | 2020-01-29 | 2020-02-04 | JUICE-UVS593913, JUICE-UVS 591282, JUICE-UVS 591291, JUICE-UVS 591297, JUICE-UVS 591303, JUICE-UVS 51115, JUICE-UVS 51109, JUICE-UVS 51001, JUICE-UVS 51118, JUICE-UVS 11658 |  |  |  |  | 5d | 0d |  |  | DS2 | BW | 05.01 | 05.01.01.04.05 | STM Assembly |  |  | Phase C | % C |  | C | Brandon | DSI | 50-50 | 19190.25.147 | STM CP | PH CD |  |  |

| ID | WBS | Activity | Duration | Start | Finish | Predecessors | Total float | Free float | user_text2 | user_text5 | user_text6 | user_text8 | CA | WP/PP | Work Package Name | JUICE UVS Phases | EVT | NASA Phase | JUICE-UVS CAMs | OBS | P6 EVT | JUICE-UVS Charge #s | Forecast Chg | JUICE-UVS STM CP | JUICE-UVS Phase CD | Major Milestones |
| --- | --- | --- | --- | --- | --- | --- | --- | --- | --- | --- | --- | --- | --- | --- | --- | --- | --- | --- | --- | --- | --- | --- | --- | --- | --- | --- |
|  | 06 | **STM Mass Model Bench-Checkout/Test** |  | 2020-02-05 | 2020-02-06 |  |  |  |  |  |  |  |  |  |  |  |  |  |  |  |  |  |  |  |  |  |
| JUICE-UVS 51049 |  | STM Bench Check-Out | 1d | 2020-02-05 | 2020-02-05 | JUICE-UVS 591285 | 5d | 0d | DS2 | INMS4560 | TGE 5.03 INMS.5.4.1.5 | BW | 05.01 | 05.01.01.04.06 | STM Bench-Chk | Phase C | % C | C | Brandon | DSI | 0-100 | 19190.25.148 | Y | STM CP | PH CD |  |
| JUICE-UVS 51052 |  | Dis-assemble Test Config and Ready JUICE-UVS & GSE for Move to Vibe TF | 1d | 2020-02-06 | 2020-02-06 | JUICE-UVS 51049 | 5d | 0d | DS2 | INMS4565 | TGE 5.03 INMS.5.4.1.5 | BW | 05.01 | 05.01.01.04.06 | STM Bench-Chk | Phase C | % C | C | Brandon | DSI | 0-100 | 19190.25.148 |  | STM CP | PH CD |  |
|  | 07 | **STM Mass Model Testing** |  | 2020-02-07 | 2020-02-27 |  |  |  |  |  |  |  |  |  |  |  |  |  |  |  |  |  |  |  |  |  |
|  | 01 | **STM Mass Model Vibration Testing** |  | 2020-02-07 | 2020-02-14 |  |  |  |  |  |  |  |  |  |  |  |  |  |  |  |  |  |  |  |  |  |
| JUICE-UVS 4618 |  | STM Vibration Test Procedure | 2d | 2020-02-07 | 2020-02-10 | JUICE-UVS 51052, JUICE-UVS 51049 | 5d | 0d | DS2 | INMS4618 | TGE 5.03 INMS.5.4.3.3 | BW | 05.01 | 05.01.01.04.07.01 | STM Vibe Test | Phase C | % C | C | Brandon | DSI | 0-100 | 19190.25.149 | Y | STM CP | PH CD |  |
| JUICE-UVS 4624 |  | Move STM & GSE over to Vibration Test Facility & Setup | 0d | 2020-02-07 | 2020-02-07 | JUICE-UVS 51052, JUICE-UVS 4629 | 7d | 2d | DS2 | INMS4624 | TGE 5.03 INMS.5.4.3.3 | BW | 05.01 | 05.01.01.04.07.01 | STM Vibe Test | Phase C | % C | C | Brandon | DSI | 0-100 | 19190.25.149 | Y | STM CP | PH CD |  |
| JUICE-UVS 4620 |  | STM Vibration TRR | 0d | 2020-02-11 | 2020-02-11 | JUICE-UVS 4618, JUICE-UVS 4624 | 5d | 0d | DS2 | INMS4620 | TGE 5.03 INMS.5.4.3.3 | BW | 05.01 | 05.01.01.04.07.01 | STM Vibe Test | Phase C | % C | C | Brandon | DSI | 0-100 | 19190.25.149 |  | STM CP | PH CD |  |
| JUICE-UVS 4626 |  | Conduct STM Vibration Tests | 1d | 2020-02-11 | 2020-02-11 | JUICE-UVS 4620 | 5d | 0d | DS2 | INMS4626 | TGE 5.03 INMS.5.4.3.3 | BW | 05.01 | 05.01.01.04.07.01 | STM Vibe Test | Phase C | % C | C | Brandon | DSI | 0-100 | 19190.25.149 | Y | STM CP | PH CD | x |
| JUICE-UVS 4628 |  | Closeout STM Vibration "As-Run" TP/Report | 1d | 2020-02-12 | 2020-02-12 | JUICE-UVS 4626 | 5d | 0d | DS2 | INMS4628 | TGE 5.03 INMS.5.4.3.3 | BW | 05.01 | 05.01.01.04.07.01 | STM Vibe Test | Phase C | % C | C | Brandon | DSI | 0-100 | 19190.25.149 | Y | STM CP | PH CD |  |
| JUICE-UVS 4632 |  | Dis-assemble Vibration Test Configuration | 1d | 2020-02-13 | 2020-02-13 | JUICE-UVS 4628 | 5d | 0d | DS2 | INMS4632 | TGE 5.03 INMS.5.4.3.3 | BW | 05.01 | 05.01.01.04.07.01 | STM Vibe Test | Phase C | % C | C | Brandon | DSI | 0-100 | 19190.25.149 |  | STM CP | PH CD |  |
| JUICE-UVS 592437 |  | Reassemble Vibration Test Configuration | 1d | 2020-02-14 | 2020-02-14 | JUICE-UVS 4632 | 5d | 0d | DS2 | INMS4632 | TGE 5.03 INMS.5.4.3.3 | BW | 05.01 | 05.01.01.04.07.01 | STM Vibe Test | Phase C | % C | C | Brandon | DSI | 0-100 | 19190.25.149 |  | STM CP | PH CD |  |
|  | 02 | **STM Mass Model Thermal Balance Testing** |  | 2020-02-07 | 2020-02-26 |  |  |  |  |  |  |  |  |  |  |  |  |  |  |  |  |  |  |  |  |  |
| JUICE-UVS 4650 |  | STM Thermal Test Procedure | 2d | 2020-02-07 | 2020-02-10 | JUICE-UVS 51049, JUICE-UVS 51052 | 11d | 0d | DS2 | INMS4650 | TGE 5.03 INMS.5.4.3.4 | BW | 05.01 | 05.01.01.04.07.02 | STM Thermal Test | Phase C | % C | C | Brandon | DSI | 0-100 | 19190.25.150 |  | STM CP | PH CD |  |
| JUICE-UVS 4652 |  | STM TB TRR | 0d | 2020-02-17 | 2020-02-17 | JUICE-UVS 4656 | 5d | 0d | DS2 | INMS4652 | TGE 5.03 INMS.5.4.3.4 | BW | 05.01 | 05.01.01.04.07.02 | STM Thermal Test | Phase C | % C | C | Brandon | DSI | 0-100 | 19190.25.150 |  | STM CP | PH CD |  |
| JUICE-UVS 4656 |  | Move STM & GSE over to TB Test Facility | 0d | 2020-02-17 | 2020-02-17 | JUICE-UVS 592437, JUICE-UVS 4662 | 5d | 0d | DS2 | INMS4656 | TGE 5.03 INMS.5.4.3.4 | BW | 05.01 | 05.01.01.04.07.02 | STM Thermal Test | Phase C | % C | C | Brandon | DSI | 0-100 | 19190.25.150 |  | STM CP | PH CD |  |
| JUICE-UVS 4658 |  | Clean STM for TB & Install into Chamber | 1d | 2020-02-17 | 2020-02-17 | JUICE-UVS 4652, JUICE-UVS 4656 | 5d | 0d | DS2 | INMS4658 | TGE 5.03 INMS.5.4.3.4 | BW | 05.01 | 05.01.01.04.07.02 | STM Thermal Test | Phase C | % C | C | Brandon | DSI | 0-100 | 19190.25.150 |  | STM CP | PH CD |  |
| JUICE-UVS 51073 |  | Conduct STM TB Tests (1-cycle) | 5d | 2020-02-18 | 2020-02-24 | JUICE-UVS 4658 | 5d | 0d | DS2 | INMS4660 | TGE 5.03 INMS.5.4.3.4 | BW | 05.01 | 05.01.01.04.07.02 | STM Thermal Test | Phase C | % C | C | Brandon | DSI | 0-100 | 19190.25.150 |  | STM CP | PH CD | x |
| JUICE-UVS 4670 |  | Remove STM fm Chamber & Dbl Bag | 1d | 2020-02-25 | 2020-02-25 | JUICE-UVS 51073 | 5d | 0d | DS2 | INMS4670 | TGE 5.03 INMS.5.4.3.4 | BW | 05.01 | 05.01.01.04.07.02 | STM Thermal Test | Phase C | % C | C | Brandon | DSI | 0-100 | 19190.25.150 |  | STM CP | PH CD |  |
| JUICE-UVS 51076 |  | Closeout STM TB "As-Run" TP/Report | 1d | 2020-02-26 | 2020-02-26 | JUICE-UVS 4670 | 8d | 0d | DS2 | INMS4662 | TGE 5.03 INMS.5.4.3.4 | BW | 05.01 | 05.01.01.04.07.02 | STM Thermal Test | Phase C | % C | C | Brandon | DSI | 0-100 | 19190.25.150 |  | STM CP | PH CD |  |
|  | 03 | **STM Mass Model Properties Measurements** |  | 2020-02-26 | 2020-02-27 |  |  |  |  |  |  |  |  |  |  |  |  |  |  |  |  |  |  |  |  |  |
| JUICE-UVS 4678 |  | Move STM over to Mass Prop Test Stand | 0d | 2020-02-26 | 2020-02-26 | JUICE-UVS 4670 | 5d | 0d | DS2 | INMS4678 | TGE 5.03 INMS.5.4.3.5 | BW | 05.01 | 05.01.01.04.07.03 | STM Mass Props | Phase C | % C | C | Brandon | DSI | 0-100 | 19190.25.151 |  | STM CP | PH CD |  |
| JUICE-UVS 4680 |  | STM Mass Prop Test Preparation | 0d | 2020-02-26 | 2020-02-26 | JUICE-UVS 4678, JUICE-UVS 4670 | 5d | 0d | DS2 | INMS4680 | TGE 5.03 INMS.5.4.3.5 | BW | 05.01 | 05.01.01.04.07.03 | STM Mass Props | Phase C | % C | C | Brandon | DSI | 0-100 | 19190.25.151 |  | STM CP | PH CD |  |
| JUICE-UVS 4682 |  | Conduct STM Mass Prop Measurements | 1d | 2020-02-26 | 2020-02-26 | JUICE-UVS 4680 | 5d | 0d | DS2 | INMS4682 | TGE 5.03 INMS.5.4.3.5 | BW | 05.01 | 05.01.01.04.07.03 | STM Mass Props | Phase C | % C | C | Brandon | DSI | 0-100 | 19190.25.151 |  | STM CP | PH CD | x |
| JUICE-UVS 4684 |  | Closeout STM Mass Prop "As-Run" Proc/Report | 0d | 2020-02-27 | 2020-02-27 | JUICE-UVS 4682 | 5d | 0d | DS2 | INMS4684 | TGE 5.03 INMS.5.4.3.5 | BW | 05.01 | 05.01.01.04.07.03 | STM Mass Props | Phase C | % C | C | Brandon | DSI | 0-100 | 19190.25.151 |  | STM CP | PH CD |  |

| ID | WBS | Activity | Type | Duration | Start | Finish | Predecessors | Complete | Planned start | Planned finish | Total float | Free float | Constraint | user_text2 | user_text5 | user_text6 | user_text8 | CA | WP/PP | Work Package Name | JUICE UVS Phases | EVT | NASA Phase | JUICE-UVS CAMs | OBS | P6 EVT | JUICE-UVS Charge #s | JUICE-UVS STM CP | JUICE-UVS Phase CD | BCR # | Sch Margin | JUICE-UVS FM CP | Forecast Chg | JUICE-UVS SVT | SVT | JUICE-UVS Procurements | M/S | user_text7 | BUDG - Budget Phase | JUICE-UVS Resources | user_text4 |
| --- | --- | --- | --- | --- | --- | --- | --- | --- | --- | --- | --- | --- | --- | --- | --- | --- | --- | --- | --- | --- | --- | --- | --- | --- | --- | --- | --- | --- | --- | --- | --- | --- | --- | --- | --- | --- | --- | --- | --- | --- | --- |
|  | 08 | **STM Mass Model Final Closeout & Delivery to ESA** |  |  | 2020-02-27 | 2020-03-23 |  |  |  |  |  |  |  |  |  |  |  |  |  |  |  |  |  |  |  |  |  |  |  |  |  |  |  |  |  |  |  |  |  |  |  |
| JUICE-UVS 51055 |  | Move Clean/Bag'd STM into Hi-Bay Clean Cabin |  | 0.5d | 2020-02-27 | 2020-02-27 | JUICE-UVS 4684 |  |  |  | 5d | 0d |  | DS2 | INMS4700 | TGE 5.03 INMS.5.4.5 | BW | 05.01 | 05.01.01.04.08 | STM Final Closeout | Phase C | % C | C | Brandon | DSI | 0-100 | 19190.25.152 | STM CP | PH CD |  |  |  |  |  |  |  |  |  |  |  |  |
| JUICE-UVS 51058 |  | Inspect & Photograph STM |  | 0.5d | 2020-02-27 | 2020-02-27 | JUICE-UVS 51055 |  |  |  | 5d | 0d |  | DS2 | INMS4702 | TGE 5.03 INMS.5.4.5 | BW | 05.01 | 05.01.01.04.08 | STM Final Closeout | Phase C | % C | C | Brandon | DSI | 0-100 | 19190.25.152 | STM CP | PH CD |  |  |  |  |  |  |  |  |  |  |  |  |
| JUICE-UVS 51064 |  | STM Schedule Margin |  | 10d | 2020-02-28 | 2020-03-12 | JUICE-UVS 51058 |  |  |  | 5d |  |  | DS2 | INMS4706 | TGE 5.03 INMS.5.4.5 | BW | 05.01 | 05.01.01.04.08 | STM Final Closeout | Phase C | % C | C | Brandon | DSI | 50-50 | 19190.25.152 | STM CP | PH CD | 26 | Y |  |  |  |  |  |  |  |  |  |  |
| JUICE-UVS 51067 |  | Deliver STM JUICE-UVS Ready for Delivery |  | 2d | 2020-03-20 | 2020-03-23 | JUICE-UVS 51064 |  |  |  | 0d |  | as late as possible | DS2 | INMS4708 | TGE 5.03 INMS.5.4.5 | BW | 05.01 | 05.01.01.04.08 | STM Final Closeout | Phase C | % C | C | Brandon | DSI | 0-100 | 19190.25.152 | STM CP | PH CD |  |  |  |  |  |  |  |  |  |  |  |  |
|  | 02 | **MGSE** |  |  | 2018-01-18 | 2019-02-01 |  |  |  |  |  |  |  |  |  |  |  |  |  |  |  |  |  |  |  |  |  |  |  |  |  |  |  |  |  |  |  |  |  |  |  |
|  | 01 | **Fab Fixtures** |  |  | 2018-01-18 | 2019-02-01 |  |  |  |  |  |  |  |  |  |  |  |  |  |  |  |  |  |  |  |  |  |  |  |  |  |  |  |  |  |  |  |  |  |  |  |
| JUICE-UVS 4623 |  | GSE Vibration Design |  | 159d | 2018-01-18 A | 2018-09-04 A | JUICE-UVS 2686 SS | 100% |  |  |  |  |  |  |  |  | BW | 05.01 | 05.01.02.01 | Fab Fixtures | Phase C | % C | C | Brandon | DSI | 0-100 | 19190.25.120 |  | PH CD |  |  | FM CP |  |  |  |  |  |  |  |  |  |
| JUICE-UVS 4629 |  | GSE Vibration Fabrication/OGSE |  | 103d | 2018-09-04 A | 2019-01-31 A | JUICE-UVS 4623 | 100% |  |  |  |  |  |  |  |  | BW | 05.01 | 05.01.02.01 | Fab Fixtures | Phase C | % C | C | Brandon | DSI | 0-100 | 19190.25.120 |  | PH CD |  |  | FM CP | Y |  |  |  |  |  |  |  |  |
| JUICE-UVS 4659 |  | GSE TB Design |  | 5d | 2019-01-14 A | 2019-01-18 A | JUICE-UVS 4650 SS | 100% |  |  |  |  |  |  |  |  | BW | 05.01 | 05.01.02.01 | Fab Fixtures | Phase C | % C | C | Brandon | DSI | 0-100 | 19190.25.120 |  | PH CD |  |  | FM CP | Y |  |  |  |  |  |  |  |  |
| JUICE-UVS 4662 |  | GSE TB Fabrication |  | 10d | 2019-01-21 A | 2019-02-01 A | JUICE-UVS 4659 | 100% |  |  |  |  |  |  |  |  | BW | 05.01 | 05.01.02.01 | Fab Fixtures | Phase C | % C | C | Brandon | DSI | 0-100 | 19190.25.120 |  | PH CD |  |  | FM CP | Y |  |  |  |  |  |  |  |  |
|  | 02 | **Handling Fixtures** |  |  | 2018-09-27 | 2018-11-26 |  |  |  |  |  |  |  |  |  |  |  |  |  |  |  |  |  |  |  |  |  |  |  |  |  |  |  |  |  |  |  |  |  |  |  |
| JUICE-UVS 593166 |  | Lifting Handles Design |  | 2d | 2018-09-27 A | 2018-09-28 A | JUICE-UVS 2581 | 100% |  |  |  |  |  |  |  |  |  | 05.01 | 05.01.02.02 | Handling Fixtures | Phase C | % C |  | Brandon | DSI | 0-100 | 19190.25.122 |  | PH CD |  |  |  |  |  |  |  |  |  |  |  |  |
| JUICE-UVS 11658 |  | Lifting Handles Fab |  | 24d | 2018-10-22 A | 2018-11-26 A | JUICE-UVS 2030, JUICE-UVS 593166 | 100% |  |  |  |  |  |  |  |  | BW | 05.01 | 05.01.02.02 | Handling Fixtures | Phase C | % C | C | Brandon | DSI | 0-100 | 19190.25.122 |  | PH CD |  |  |  | Y |  |  |  |  |  |  |  |  |
|  | 03 | **Mechanical Procurements** |  |  | 2016-10-03 | 2019-11-25 |  |  |  |  |  |  |  |  |  |  |  |  |  |  |  |  |  |  |  |  |  |  |  |  |  |  |  |  |  |  |  |  |  |  |  |
| JUICE-UVS 11622 |  | SVT FM LAT Motor Procurement Lead Time |  | 271d | 2016-10-03 A | 2017-10-26 A | JUICE-UVS 593791 | 100% | 2016-10-03 | 2017-10-30 |  |  |  |  |  |  |  | 05.01 | 05.01.03 | Mechanical Procurements | Phase C | % C |  | Brandon | DSI | % C |  |  | PH CD |  |  |  |  | SVT | SVT | P |  |  |  |  |  |
| JUICE-UVS 3511 |  | SVT FM TiNi Latch Actuators Procurement Lead Time |  | 135d | 2016-10-03 A | 2017-04-14 A | JUICE-UVS 593791 | 100% |  |  |  |  |  |  |  |  |  | 05.01 | 05.01.03 | Mechanical Procurements | Phase C | % C |  | Brandon | DSI | % C |  |  | PH CD |  |  |  |  | SVT | SVT | P |  |  |  |  |  |
| JUICE-UVS 3555 |  | SVT Procure FM & STM Mechanical Parts May 17 Lead Time |  | 213d | 2016-10-03 A | 2017-08-07 A | JUICE-UVS 593791 | 100% |  |  |  |  |  |  |  |  |  | 05.01 | 05.01.03 | Mechanical Procurements | Phase C | % C |  | Brandon | DSI | % C |  |  | PH CD |  |  |  |  | SVT | SVT | P |  |  |  |  |  |
| JUICE-UVS 3558 |  | SVT Procure FM & STM Mechanical Parts June 17 Lead Time |  | 182d | 2016-10-03 A | 2017-06-22 A | JUICE-UVS 593791 | 100% |  |  |  |  |  |  |  |  |  | 05.01 | 05.01.03 | Mechanical Procurements | Phase C | % C |  | Brandon | DSI | % C |  |  | PH CD |  |  |  |  | SVT | SVT | P |  |  |  |  |  |
| JUICE-UVS 3559 |  | SVT Mechanical FM Optics - S/C Heaters Procurement Lead Time |  | 539d | 2016-10-03 A | 2019-01-07 A | JUICE-UVS 593791, JUICE-UVS593805 | 100% | 2016-10-03 | 2018-11-26 |  |  |  |  |  |  |  | 05.01 | 05.01.03 | Mechanical Procurements | Phase C | % C |  | Brandon | DSI | % C |  |  | PH CD |  |  |  |  | SVT | SVT | P |  |  |  |  |  |
| JUICE-UVS 3561 |  | SVT Procure FM & STM Mechanical Parts July 17 Lead Time |  | 376d | 2016-10-03 A | 2018-03-20 A | JUICE-UVS 593791 | 100% | 2016-10-03 | 2018-04-02 |  |  |  |  |  |  |  | 05.01 | 05.01.03 | Mechanical Procurements | Phase C | % C |  | Brandon | DSI | % C |  |  | PH CD |  |  |  |  | SVT | SVT | P |  |  |  |  |  |
| JUICE-UVS 3562 |  | SVT Procure FM Tantalum Plates July 17 Lead Time |  | 303d | 2016-10-03 A | 2017-12-14 A | JUICE-UVS 593791 | 100% | 2016-10-03 | 2017-12-15 |  |  |  |  |  |  |  | 05.01 | 05.01.03 | Mechanical Procurements | Phase C | % C |  | Brandon | DSI | % C |  |  | PH CD |  |  |  |  | SVT | SVT | P |  |  |  |  |  |
| JUICE-UVS 3564 |  | SVT Procure FM & STM Mechanical Parts Aug 17 Lead Time |  | 246d | 2016-10-03 A | 2017-09-25 A | JUICE-UVS 593791 | 100% |  |  |  |  |  |  |  |  |  | 05.01 | 05.01.03 | Mechanical Procurements | Phase C | % C |  | Brandon | DSI | % C |  |  | PH CD |  |  |  |  | SVT | SVT | P |  |  |  |  |  |
| JUICE-UVS 3565 |  | SVT Procure FM Tantalum Plates Aug 17 Lead Time |  | 315d | 2016-10-03 A | 2018-01-05 A | JUICE-UVS 593791 | 100% |  |  |  |  |  |  |  |  |  | 05.01 | 05.01.03 | Mechanical Procurements | Phase C | % C |  | Brandon | DSI | % C |  |  | PH CD |  |  |  |  | SVT | SVT | P |  |  |  |  |  |
| JUICE-UVS 3567 |  | SVT Procure FM & STM Mechanical Parts Sep 17 Lead Time |  | 415d | 2016-10-03 A | 2018-05-15 A | JUICE-UVS 593791, JUICE-UVS 593151 | 100% | 2016-10-03 | 2018-05-29 |  |  |  |  |  |  |  | 05.01 | 05.01.03 | Mechanical Procurements | Phase C | % C |  | Brandon | DSI | % C |  |  | PH CD |  |  |  |  | SVT | SVT | P |  |  |  |  |  |
| JUICE-UVS 592372 |  | SVT FM Detector WPA Actuator Procurement Lead Time |  | 174d | 2016-10-03 A | 2017-06-12 A | JUICE-UVS 593791 | 100% |  |  |  |  |  |  |  |  |  | 05.01 | 05.01.03 | Mechanical Procurements | Phase C | % C |  | Brandon | DSI | % C |  |  | PH CD |  |  |  |  | SVT | SVT | P |  |  |  |  |  |
| JUICE-UVS 592542 |  | SVT MLI Design & Procure June 17 Lead Time |  | 539d | 2016-10-03 A | 2019-08-05 A | JUICE-UVS 593791 | 100% | 2016-10-03 | 2018-11-26 |  |  |  |  |  |  |  | 05.01 | 05.01.03 | Mechanical Procurements | Phase C | % C |  | Brandon | DSI | % C |  |  | PH CD |  |  |  |  | SVT | SVT | P |  |  |  |  |  |
| JUICE-UVS 593151 |  | SVT Procure Radiator Coating Oct 17 Lead Time |  | 539d | 2016-10-03 A | 2019-01-07 A | JUICE-UVS 593791, JUICE-UVS 593175 | 100% | 2016-10-03 | 2018-11-26 |  |  |  |  |  |  |  | 05.01 | 05.01.03 | Mechanical Procurements | Phase C | % C |  | Brandon | DSI | % C |  |  | PH CD |  |  |  |  | SVT | SVT | P |  |  |  |  |  |
| JUICE-UVS 593175 |  | SVT X-ray Test FM Pump Out Tube Oct 17 Lead Time |  | 539d | 2016-10-03 A | 2019-01-07 A | JUICE-UVS 593791 | 100% | 2016-10-03 | 2018-11-26 |  |  |  |  |  |  |  | 05.01 | 05.01.03 | Mechanical Procurements | Phase C | % C |  | Brandon | DSI | % C |  |  | PH CD |  |  |  |  | SVT | SVT | P |  |  |  |  |  |
| JUICE-UVS 593256 |  | SVT Procure STM Stainless Steel Plates July 17 Lead Time |  | 395d | 2016-10-03 A | 2018-03-14 A | JUICE-UVS 593791 | 100% | 2016-10-03 | 2018-04-27 |  |  |  |  |  |  |  | 05.01 | 05.01.03 | Mechanical Procurements | Phase C | % C |  | Brandon | DSI | % C |  |  | PH CD |  |  |  |  | SVT |  | P |  |  |  |  |  |
| JUICE-UVS 593791 |  | Mechanical Procurement | milestone | 0d | 2016-10-03 A | 2016-10-03 A | JUICE-UVS 0023 | 100% |  |  |  |  |  |  |  |  |  | 05.01 | 05.01.03 | Mechanical Procurements | Phase C | % C |  | Brandon | DSI | % C |  |  | PH CD |  |  |  |  |  |  | P | C |  |  |  |  |
| JUICE-UVS593787 |  | SVT Solar Port EM/FM Procurement Lead Time |  | 213d | 2016-10-03 A | 2017-08-07 A | JUICE-UVS 593791 | 100% |  |  |  |  |  |  |  |  |  | 05.01 | 05.01.03 | Mechanical Procurements | Phase C | % C |  | Brandon | DSI | % C |  |  | PH CD |  |  |  |  | SVT | SVT | P |  |  |  |  |  |
| JUICE-UVS593796 |  | SVTFM & STM Mechanical Materials Procurement March 17 Lead Time |  | 106d | 2016-10-03 A | 2017-03-06 A | JUICE-UVS 593791 | 100% |  |  |  |  |  |  |  |  |  | 05.01 | 05.01.03 | Mechanical Procurements | Phase C | % C |  | Brandon | DSI | % C |  |  | PH CD |  |  |  |  | SVT | SVT | P |  |  |  |  |  |
| JUICE-UVS593799 |  | SVT FM & STM Mechanical Materials Procurement July 17 Lead Time |  | 213d | 2016-10-03 A | 2017-08-07 A | JUICE-UVS 593791 | 100% |  |  |  |  |  |  |  |  |  | 05.01 | 05.01.03 | Mechanical Procurements | Phase C | % C |  | Brandon | DSI | % C |  |  | PH CD |  |  |  |  | SVT | SVT | P |  |  |  |  |  |
| JUICE-UVS593802 |  | SVT FM & STM Mechanical Materials Procurement Aug 17 Lead Time |  | 343d | 2016-10-03 A | 2018-01-25 A | JUICE-UVS 593791 | 100% | 2016-10-03 | 2018-02-14 |  |  |  |  |  |  |  | 05.01 | 05.01.03 | Mechanical Procurements | Phase C | % C |  | Brandon | DSI | % C |  |  | PH CD |  |  |  |  | SVT | SVT | P |  |  |  |  |  |
| JUICE-UVS593805 |  | SVT FM & STM Mechanical Materials Procurement Sep 17 Lead Time |  | 482d | 2016-10-03 A | 2018-08-21 A | JUICE-UVS 593791, JUICE-UVS593808 | 100% | 2016-10-03 | 2018-09-04 |  |  |  |  |  |  |  | 05.01 | 05.01.03 | Mechanical Procurements | Phase C | % C |  | Brandon | DSI | % C |  |  | PH CD |  |  |  |  | SVT | SVT | P |  |  |  |  |  |
| JUICE-UVS593808 |  | SVT FM & STM Mechanical Materials Procurement Oct 17 Lead Time |  | 539d | 2016-10-03 A | 2019-09-25 A | JUICE-UVS 593791, JUICE-UVS593811 | 100% | 2016-10-03 | 2018-11-26 |  |  |  |  |  |  |  | 05.01 | 05.01.03 | Mechanical Procurements | Phase C | % C |  | Brandon | DSI | % C |  |  | PH CD |  |  |  |  | SVT | SVT | P |  |  |  |  |  |
| JUICE-UVS593811 |  | SVT FM & STM Mechanical Materials Procurement Nov 17 Lead Time |  | 396d | 2016-10-03 A | 2018-04-24 A | JUICE-UVS 593791, JUICE-UVS 3567 | 100% | 2016-10-03 | 2018-04-30 |  |  |  |  |  |  |  | 05.01 | 05.01.03 | Mechanical Procurements | Phase C | % C |  | Brandon | DSI | % C |  |  | PH CD |  |  |  |  | SVT | SVT | P |  |  |  |  |  |
| JUICE-UVS593814 |  | SVT FM & STM Mechanical Materials Procurement Dec 17 Lead Time |  | 343d | 2016-10-03 A | 2018-01-18 A | JUICE-UVS 593791 | 100% | 2016-10-03 | 2018-02-14 |  |  |  |  |  |  |  | 05.01 | 05.01.03 | Mechanical Procurements | Phase C | % C |  | Brandon | DSI | % C |  |  | PH CD |  |  |  |  | SVT | SVT | P |  |  |  |  |  |
| JUICE-UVS593817 |  | FM & STM Mechanical Materials Procurement March 17 Delivery |  | 1d | 2017-03-07 A | 2017-03-07 A | JUICE-UVS593796 | 100% |  |  |  |  |  |  |  |  |  | 05.01 | 05.01.03 | Mechanical Procurements | Phase C | % C |  | Brandon | DSI | 0-100 | 19190.25.920 |  | PH CD |  |  |  |  |  |  | P |  |  |  |  |  |
| JUICE-UVS 593901 |  | FM & STM Mechanical Materials March 17 Material Task Receipt | milestone | 0d | 2017-03-07 A | 2017-03-07 A | JUICE-UVS593817 | 100% |  |  |  |  |  |  |  |  |  | 05.01 | 05.01.03 | Mechanical Procurements | Phase C | % C |  | Brandon | DSI | 0-100 |  |  | PH CD |  |  |  |  |  |  | P | R |  |  |  |  |
| JUICE-UVS 3508 |  | Procure FM TiNi Latch Actuators Delivery |  | 1d | 2017-04-17 A | 2017-04-17 A | JUICE-UVS 3511, JUICE-UVS 5226 | 100% | 2017-03-17 | 2017-03-17 |  |  |  |  |  |  | BW | 05.01 | 05.01.03 | Mechanical Procurements | Phase C | % C | C | Brandon | DSI | 0-100 | 19190.25.920 |  | PH CD |  |  |  |  |  |  | P |  | Flight Cost Entered | B+ | Mat |  |
| JUICE-UVS 3514 |  | FM TiNi Latch Actuators Material Task Receipt | milestone | 0d | 2017-04-17 A | 2017-04-17 A | JUICE-UVS 3508 | 100% |  |  |  |  |  |  |  |  |  | 05.01 | 05.01.03 | Mechanical Procurements | Phase C | % C |  | Brandon | DSI | 0-100 |  |  | PH CD |  |  |  |  |  |  | P | R |  |  |  |  |
| JUICE-UVS 593283 |  | Plate EM 2 Mechanisms Delivery |  | 2d | 2017-05-08 A | 2017-05-09 A | JUICE-UVS 593289 | 100% |  |  |  |  |  | DS1 |  |  |  | 05.01 | 05.01.03 | Mechanical Procurements | Phase C | % C |  | Brandon | DSI | 0-100 | 19190.25.920 |  | PH CD |  |  |  |  |  |  | P |  |  |  | Serv |  |
| JUICE-UVS 593289 |  | SVT Plate EM 2 Mechanisms Lead Time |  | 0d | 2017-05-08 A | 2017-05-08 A | JUICE-UVS 593791 | 100% |  |  |  |  |  |  |  |  |  | 05.01 | 05.01.03 | Mechanical Procurements | Phase C | % C |  | Brandon | DSI | 50-50 |  |  | PH CD |  |  |  |  | SVT | SVT | P | R |  |  |  |  |
| JUICE-UVS 593373 |  | Plate EM 2 Mechanisms Material Task Receipt | milestone | 0d | 2017-05-09 A | 2017-05-09 A | JUICE-UVS 593283 | 100% |  |  |  |  |  |  |  |  |  | 05.01 | 05.01.03 | Mechanical Procurements | Phase C | % C |  | Brandon | DSI | 0-100 |  |  | PH CD |  |  |  |  |  |  | P | R |  |  |  |  |
| JUICE-UVS 11613 |  | FM Detector WPA Actuator Delivery |  | 1d | 2017-06-13 A | 2017-06-13 A | JUICE-UVS 592372, JUICE-UVS 5226 | 100% |  |  |  |  |  |  |  |  | BW | 05.01 | 05.01.03 | Mechanical Procurements | Phase C | % C | C | Brandon | DSI | 0-100 | 19190.25.920 |  | PH CD |  |  |  |  |  |  | P |  | Flight Cost Entered |  | Mat |  |
| JUICE-UVS 11679 |  | FM Detector WPA Actuator Material Task Receipt | milestone | 0d | 2017-06-13 A | 2017-06-13 A | JUICE-UVS 11613 | 100% |  |  |  |  |  |  |  |  |  | 05.01 | 05.01.03 | Mechanical Procurements | Phase C | % C |  | Brandon | DSI | 0-100 |  |  | PH CD |  |  |  |  |  |  | P | R |  |  |  |  |
| JUICE-UVS 3573 |  | FM & STM Mechanical Parts June 17 Delivery |  | 1d | 2017-06-23 A | 2017-06-23 A | JUICE-UVS 3558 | 100% |  |  |  |  |  |  |  |  |  | 05.01 | 05.01.03 | Mechanical Procurements | Phase C | % C |  | Brandon | DSI | 0-100 | 19190.25.920 |  | PH CD |  |  |  |  |  |  | P |  |  |  |  |  |
| JUICE-UVS593922 |  | FM & STM Mechanical Parts June 17 Material Task Receipt | milestone | 0d | 2017-06-23 A | 2017-06-23 A | JUICE-UVS 3573 | 100% |  |  |  |  |  |  |  |  |  | 05.01 | 05.01.03 | Mechanical Procurements | Phase C | % C |  | Brandon | DSI | 0-100 |  |  | PH CD |  |  |  |  |  |  | P | R |  |  |  |  |
| JUICE-UVS 3570 |  | FM & STM Mechanical Parts May 17 Delivery |  | 1d | 2017-08-07 A | 2017-08-07 A | JUICE-UVS 3555 | 100% |  |  |  |  |  |  |  |  |  | 05.01 | 05.01.03 | Mechanical Procurements | Phase C | % C |  | Brandon | DSI | 0-100 | 19190.25.920 |  | PH CD |  |  |  |  |  |  | P |  |  |  |  |  |
| JUICE-UVS 592369 |  | Solar Port EM/FM Delivery |  | 1d | 2017-08-07 A | 2017-08-07 A | JUICE-UVS593787 | 100% |  |  |  |  |  |  |  |  | BW | 05.01 | 05.01.03 | Mechanical Procurements | Phase C | % C | B | Brandon | DSI | 0-100 | 19190.25.920 |  | PH CD |  |  |  |  |  |  | P |  | Flight Cost Entered |  | Mat |  |
| JUICE-UVS593820 |  | FM & STM Mechanical Materials Procurement July 17 Delivery |  | 1d | 2017-08-07 A | 2017-08-07 A | JUICE-UVS593799 | 100% |  |  |  |  |  |  |  |  |  | 05.01 | 05.01.03 | Mechanical Procurements | Phase C | % C |  | Brandon | DSI | 0-100 | 19190.25.920 |  | PH CD |  |  |  |  |  |  | P |  |  |  |  |  |
| JUICE-UVS 592375 |  | Solar Port EM/FM Material Task Receipt | milestone | 0d | 2017-08-07 A | 2017-08-07 A | JUICE-UVS 592369 | 100% |  |  |  |  |  |  |  |  |  | 05.01 | 05.01.03 | Mechanical Procurements | Phase C | % C |  | Brandon | DSI | 0-100 |  |  | PH CD |  |  |  |  |  |  | P | R |  |  |  |  |
| JUICE-UVS593904 |  | FM & STM Mechanical Materials July 17 Material Task Receipt | milestone | 0d | 2017-08-07 A | 2017-08-07 A | JUICE-UVS593820 | 100% |  |  |  |  |  |  |  |  |  | 05.01 | 05.01.03 | Mechanical Procurements | Phase C | % C |  | Brandon | DSI | 0-100 |  |  | PH CD |  |  |  |  |  |  | P | R |  |  |  |  |
| JUICE-UVS593919 |  | FM & STM Mechanical Parts May 17 Material Task Receipt | milestone | 0d | 2017-08-07 A | 2017-08-07 A | JUICE-UVS 3570 | 100% |  |  |  |  |  |  |  |  |  | 05.01 | 05.01.03 | Mechanical Procurements | Phase C | % C |  | Brandon | DSI | 0-100 |  |  | PH CD |  |  |  |  |  |  | P | R |  |  |  |  |
| JUICE-UVS 3579 |  | FM & STM Mechanical Parts Aug 17 Delivery |  | 1d | 2017-09-26 A | 2017-09-26 A | JUICE-UVS 3564 | 100% |  |  |  |  |  |  |  |  |  | 05.01 | 05.01.03 | Mechanical Procurements | Phase C | % C |  | Brandon | DSI | 0-100 | 19190.25.920 |  | PH CD |  |  |  |  |  |  | P |  |  |  |  |  |
| JUICE-UVS593928 |  | FM & STM Mechanical Parts Aug 17 Material Task Receipt | milestone | 0d | 2017-09-26 A | 2017-09-26 A | JUICE-UVS 3579 | 100% |  |  |  |  |  |  |  |  |  | 05.01 | 05.01.03 | Mechanical Procurements | Phase C | % C |  | Brandon | DSI | 0-100 |  |  | PH CD |  |  |  |  |  |  | P | R |  |  |  |  |
| JUICE-UVS 11616 |  | FM LAT Motor Delivery |  | 1d | 2017-10-26 A | 2017-10-26 A | JUICE-UVS 0023, JUICE-UVS 11622 | 100% | 2017-10-31 | 2017-10-31 |  |  |  |  |  |  | BW | 05.01 | 05.01.03 | Mechanical Procurements | Phase C | % C | C | Brandon | DSI | 0-100 | 19190.25.920 |  | PH CD |  |  |  |  |  |  | P |  | Flight Cost Entered |  | Mat |  |
| JUICE-UVS 11676 |  | FM LAT Motor Material Task Receipt | milestone | 0d | 2017-10-26 A | 2017-10-26 A | JUICE-UVS 11616 | 100% | 2017-11-27 | 2017-11-27 |  |  |  |  |  |  |  | 05.01 | 05.01.03 | Mechanical Procurements | Phase C | % C |  | Brandon | DSI | 0-100 |  |  | PH CD |  |  |  |  |  |  | P | R |  |  |  |  |
| JUICE-UVS 2649 |  | SVT Weld FM Pump Out Tube Procurement Lead Time |  | 57d | 2017-12-04 A | 2018-02-23 A | JUICE-UVS 2644 | 100% |  |  |  |  |  |  |  |  |  | 05.01 | 05.01.03 | Mechanical Procurements | Phase C | % C |  | Brandon | DSI | % C |  |  | PH CD |  |  |  |  | SVT | SVT | P |  |  |  |  |  |
| JUICE-UVS 3568 |  | FM Tantalum Plates July 17 Delivery |  | 1d | 2017-12-15 A | 2017-12-15 A | JUICE-UVS 3562 | 100% |  |  |  |  |  |  |  |  |  | 05.01 | 05.01.03 | Mechanical Procurements | Phase C | % C |  | Brandon | DSI | 0-100 | 19190.25.920 |  | PH CD |  |  |  |  |  |  | P |  |  |  |  |  |
| JUICE-UVS593934 |  | FM Tantalum Plates July 17 Material Task Receipt | milestone | 0d | 2017-12-15 A | 2017-12-15 A | JUICE-UVS 3568 | 100% | 2017-12-22 | 2017-12-22 |  |  |  |  |  |  |  | 05.01 | 05.01.03 | Mechanical Procurements | Phase C | % C |  | Brandon | DSI | 0-100 |  |  | PH CD |  |  |  |  |  |  | P | R |  |  |  |  |
| JUICE-UVS 3553 |  | FM Tantalum Plates Aug 17 Delivery |  | 1d | 2018-01-08 A | 2018-01-08 A | JUICE-UVS 3565, JUICE-UVS 5226 | 100% |  |  |  |  |  |  |  |  | BW | 05.01 | 05.01.03 | Mechanical Procurements | Phase C | % C | C | Brandon | DSI | 0-100 | 19190.25.920 |  | PH CD |  |  |  |  |  |  | P |  | Flight Quote | B+ | Mat | Mod |
| JUICE-UVS593937 |  | FM Tantalum Plates Aug 17 Material Task Receipt | milestone | 0d | 2018-01-08 A | 2018-01-08 A | JUICE-UVS 3553 | 100% |  |  |  |  |  |  |  |  |  | 05.01 | 05.01.03 | Mechanical Procurements | Phase C | % C |  | Brandon | DSI | 0-100 |  |  | PH CD |  |  |  |  |  |  | P | R |  |  |  |  |
| JUICE-UVS 3067 |  | FM & STM Mechanical Materials Procurement Dec 17 Delivery |  | 1d | 2018-01-19 A | 2018-01-19 A | JUICE-UVS593814, JUICE-UVS 2581 | 100% |  |  |  |  |  |  |  |  | BW | 05.01 | 05.01.03 | Mechanical Procurements | Phase C | % C |  | Brandon | DSI | 0-100 | 19190.25.920 |  | PH CD |  |  |  |  |  |  | P |  | Flight Quote |  | Mat |  |
| JUICE-UVS593838 |  | FM & STM Mechanical Materials Dec 17 Material Task Receipt | milestone | 0d | 2018-01-19 A | 2018-01-19 A | JUICE-UVS 3067 | 100% | 2018-02-15 | 2018-02-15 |  |  |  |  |  |  |  | 05.01 | 05.01.03 | Mechanical Procurements | Phase C | % C |  | Brandon | DSI | 0-100 |  |  | PH CD |  |  |  |  |  |  | P | R |  |  |  |  |
| JUICE-UVS593823 |  | FM & STM Mechanical Materials Procurement Aug 17 Delivery |  | 1d | 2018-01-26 A | 2018-01-26 A | JUICE-UVS593802 | 100% |  |  |  |  |  |  |  |  |  | 05.01 | 05.01.03 | Mechanical Procurements | Phase C | % C |  | Brandon | DSI | 0-100 | 19190.25.920 |  | PH CD |  |  |  |  |  |  | P |  |  |  |  |  |
| JUICE-UVS593907 |  | FM & STM Mechanical Materials Aug 17 Material Task Receipt | milestone | 0d | 2018-01-26 A | 2018-01-26 A | JUICE-UVS593823 | 100% | 2018-02-15 | 2018-02-15 |  |  |  |  |  |  |  | 05.01 | 05.01.03 | Mechanical Procurements | Phase C | % C |  | Brandon | DSI | 0-100 |  |  | PH CD |  |  |  |  |  |  | P | R |  |  |  |  |
| JUICE-UVS 2679 |  | SVT Plate Mechanisms Lead Time |  | 10d | 2018-02-16 A | 2018-03-01 A | JUICE-UVS 592821 | 100% |  |  |  |  |  |  |  |  |  | 05.01 | 05.01.03 | Mechanical Procurements | Phase C | % C |  | Brandon | DSI | 0-100 |  |  | PH CD |  |  |  |  | SVT | SVT | P |  |  |  |  |  |

Notes:
- JUICE-UVS 51067: Justify: Project Mandated STM Delivery
- JUICE-UVS 593166: Justify: Activity completion is not needed until right before STM Assembly
- JUICE-UVS 11658: Justify: Activity completion is not needed until right before STM Assembly
- JUICE-UVS 592369: (New Notebook Topic): ? / EM Parts in stock. Verify suitability of old FM stock

| ID | Activity | Type | Duration | Start | Finish | Predecessors | Complete | Planned start | Planned finish | Total float | Free float | Constraint | user_text7 | user_text8 | CA | WP/PP | Work Package Name | PHAS - Alice (Old) | BUDG - Budget Phase | SORT - Item Sort | JUICE UVS Phases | EVT | JUICE-UVS Resources | NASA Phase | JUICE-UVS CAMs | OBS | P6 EVT | JUICE-UVS Charge #s | JUICE-UVS Procurements | JUICE-UVS Phase CD | PERT - Pert Select | M/S | user_text4 |
| --- | --- | --- | --- | --- | --- | --- | --- | --- | --- | --- | --- | --- | --- | --- | --- | --- | --- | --- | --- | --- | --- | --- | --- | --- | --- | --- | --- | --- | --- | --- | --- | --- | --- |
| JUICE-UVS 2646 | Weld FM Pump Out Tube Delivery |  | 5d | 2018-02-26 A | 2018-03-02 A | JUICE-UVS 2649 | 100% |  |  |  |  |  | Eng Est Entered | BW | 05.01 | 05.01.03 | Mechanical Procurements | 633 | C/D | MECH | Phase C | % C | Serv | C | Brandon | DSI | 0-100 | 19190.25.920 | P | PH CD |  |  |  |
| JUICE-UVS 592842 | Plate Sensor Mech. Piece Parts Nov 17 Delivery |  | 2d | 2018-03-01 A | 2018-03-02 A | JUICE-UVS 5223 | 100% |  |  |  |  |  |  |  | 05.01 | 05.01.03 | Mechanical Procurements |  |  |  | Phase C | % C |  |  | Brandon | DSI | 0-100 | 19190.25.920 | P | PH CD |  |  |  |
| JUICE-UVS 2676 | Plate FM Mechanisms Delivery |  | 1d | 2018-03-02 A | 2018-03-02 A | JUICE-UVS 2679 SS | 100% |  |  |  |  |  |  | BW | 05.01 | 05.01.03 | Mechanical Procurements | 633 | C/D | MECH | Phase C | % C | Serv | C | Brandon | DSI | 0-100 | 19190.25.920 | P | PH CD | Y |  |  |
| JUICE-UVS 2661 | Weld FM Pump Out Tube Material Task Receipt | milestone | 0d | 2018-03-02 A | 2018-03-02 A | JUICE-UVS 2646 | 100% |  |  |  |  |  |  |  | 05.01 | 05.01.03 | Mechanical Procurements |  |  |  | Phase C | % C |  |  | Brandon | DSI | 0-100 |  | P | PH CD |  | R |  |
| JUICE-UVS 2682 | Plate Mechanisms Material Task Receipt | milestone | 0d | 2018-03-02 A | 2018-03-02 A | JUICE-UVS 2676 | 100% | 2018-02-22 | 2018-02-22 |  |  |  |  |  | 05.01 | 05.01.03 | Mechanical Procurements |  |  |  | Phase C | % C |  |  | Brandon | DSI | 0-100 |  | P | PH CD |  | R |  |
| JUICE-UVS 593163 | STM Stainless Steel Plates July 17 Delivery |  | 1d | 2018-03-15 A | 2018-03-15 A | JUICE-UVS 593256, JUICE-UVS 5226 | 100% | 2018-04-19 | 2018-04-19 |  |  |  | Flight Quote | BW | 05.01 | 05.01.03 | Mechanical Procurements |  |  |  | Phase C | % C | Mat |  | Brandon | DSI | 0-100 | 19190.25.920 | P | PH CD |  |  |  |
| JUICE-UVS593946 | STM Stainless Steel Plates July 17 Material Task Receipt | milestone | 0d | 2018-03-15 A | 2018-03-15 A | JUICE-UVS 593163 | 100% | 2018-04-30 | 2018-04-30 |  |  |  |  |  | 05.01 | 05.01.03 | Mechanical Procurements |  |  |  | Phase C | % C |  |  | Brandon | DSI | 0-100 |  | P | PH CD |  | R |  |
| JUICE-UVS 3576 | FM & STM Mechanical Parts July 17 Delivery |  | 1d | 2018-03-21 A | 2018-03-21 A | JUICE-UVS 3561 | 100% |  |  |  |  |  |  |  | 05.01 | 05.01.03 | Mechanical Procurements |  |  |  | Phase C | % C |  |  | Brandon | DSI | 0-100 | 19190.25.920 | P | PH CD |  |  |  |
| JUICE-UVS593925 | FM & STM Mechanical Parts July 17 Material Task Receipt | milestone | 0d | 2018-03-21 A | 2018-03-21 A | JUICE-UVS 3576 | 100% | 2018-04-02 | 2018-04-02 |  |  |  |  |  | 05.01 | 05.01.03 | Mechanical Procurements |  |  |  | Phase C | % C |  |  | Brandon | DSI | 0-100 |  | P | PH CD |  | R |  |
| JUICE-UVS593832 | FM & STM Mechanical Materials Procurement Nov 17 Delivery |  | 1d | 2018-04-25 A | 2018-04-25 A | JUICE-UVS593811 | 100% |  |  |  |  |  |  |  | 05.01 | 05.01.03 | Mechanical Procurements |  |  |  | Phase C | % C |  |  | Brandon | DSI | 0-100 | 19190.25.920 | P | PH CD |  |  |  |
| JUICE-UVS593916 | FM & STM Mechanical Materials Nov 17 Material Task Receipt | milestone | 0d | 2018-04-25 A | 2018-04-25 A | JUICE-UVS593832 | 100% | 2018-04-30 | 2018-04-30 |  |  |  |  |  | 05.01 | 05.01.03 | Mechanical Procurements |  |  |  | Phase C | % C |  |  | Brandon | DSI | 0-100 |  | P | PH CD |  | R |  |
| JUICE-UVS 3552 | FM & STM Mechanical Parts Sep 17 Delivery |  | 1d | 2018-05-16 A | 2018-05-16 A | JUICE-UVS 3567, JUICE-UVS 5226 | 100% |  |  |  |  |  | Flight Quote | BW | 05.01 | 05.01.03 | Mechanical Procurements |  | B+ |  | Phase C | % C | Mat | C | Brandon | DSI | 0-100 | 19190.25.920 | P | PH CD |  |  | Mod |
| JUICE-UVS593931 | FM & STM Mechanical Parts Sep 17 Material Task Receipt | milestone | 0d | 2018-05-16 A | 2018-05-16 A | JUICE-UVS 3552 | 100% | 2018-05-29 | 2018-05-29 |  |  |  |  |  | 05.01 | 05.01.03 | Mechanical Procurements |  |  |  | Phase C | % C |  |  | Brandon | DSI | 0-100 |  | P | PH CD |  | R |  |
| JUICE-UVS593826 | FM & STM Mechanical Materials Procurement Sep 17 Delivery |  | 1d | 2018-08-22 A | 2018-08-22 A | JUICE-UVS593805 | 100% |  |  |  |  |  |  |  | 05.01 | 05.01.03 | Mechanical Procurements |  |  |  | Phase C | % C |  |  | Brandon | DSI | 0-100 | 19190.25.920 | P | PH CD |  |  |  |
| JUICE-UVS593910 | FM & STM Mechanical Materials Sep 17 Material Task Receipt | milestone | 0d | 2018-08-22 A | 2018-08-22 A | JUICE-UVS593826 | 100% | 2018-09-04 | 2018-09-04 |  |  |  |  |  | 05.01 | 05.01.03 | Mechanical Procurements |  |  |  | Phase C | % C |  |  | Brandon | DSI | 0-100 |  | P | PH CD |  | R |  |
| JUICE-UVS 2648 | X-ray Test FM Pump Out Tube Oct 17 Delivery |  | 1d | 2019-01-07 A | 2019-01-07 A | JUICE-UVS 593175 | 100% |  |  |  |  |  | Eng Est Entered | BW | 05.01 | 05.01.03 | Mechanical Procurements | 633 | C/D | MECH | Phase C | % C | Serv | C | Brandon | DSI | 0-100 | 19190.25.920 | P | PH CD |  |  |  |
| JUICE-UVS 3556 | Mechanical procurements for FM Optics - S/C Heaters Delivery |  | 1d | 2019-01-07 A | 2019-01-07 A | JUICE-UVS 0023, JUICE-UVS 3559, JUICE-UVS 5226 | 100% |  |  |  |  |  | Flight Quote | BW | 05.01 | 05.01.03 | Mechanical Procurements |  |  |  | Phase C | % C | Mat | C | Brandon | DSI | 0-100 | 19190.25.920 | P | PH CD |  |  | Mod |
| JUICE-UVS 592836 | Plate Sensor Mech. Piece Parts Dec 17 Delivery |  | 1d | 2019-01-07 A | 2019-01-07 A | JUICE-UVS 5223 | 100% |  |  |  |  |  |  |  | 05.01 | 05.01.03 | Mechanical Procurements |  |  |  | Phase C | % C | Serv |  | Brandon | DSI | 50-50 | 19190.25.920 | P | PH CD |  |  |  |
| JUICE-UVS 593145 | Procure Radiator Coating Oct 17 Delivery |  | 1d | 2019-01-07 A | 2019-01-07 A | JUICE-UVS 593151, JUICE-UVS 2688 SS | 100% |  |  |  |  |  | Flight Quote | BW | 05.01 | 05.01.03 | Mechanical Procurements |  |  |  | Phase C | % C | Serv |  | Brandon | DSI | 0-100 | 19190.25.920 | P | PH CD |  |  |  |
| JUICE-UVS 3571 | Mechanical for FM Optics - S/C Heaters Material Task Receipt | milestone | 0d | 2019-01-07 A | 2019-01-07 A | JUICE-UVS 3556 | 100% |  |  |  |  |  |  |  | 05.01 | 05.01.03 | Mechanical Procurements |  |  |  | Phase C | % C |  |  | Brandon | DSI | 0-100 |  | P | PH CD |  | R |  |
| JUICE-UVS593940 | Radiator Coating Oct 17 Material Task Receipt | milestone | 0d | 2019-01-07 A | 2019-01-07 A | JUICE-UVS 593145 | 100% |  |  |  |  |  |  |  | 05.01 | 05.01.03 | Mechanical Procurements |  |  |  | Phase C | % C |  |  | Brandon | DSI | 0-100 |  | P | PH CD |  | R |  |
| JUICE-UVS593943 | X-ray Test FM Pump Out Tube Oct 17 Material Task Receipt | milestone | 0d | 2019-01-07 A | 2019-01-07 A | JUICE-UVS 2648 | 100% |  |  |  |  |  |  |  | 05.01 | 05.01.03 | Mechanical Procurements |  |  |  | Phase C | % C |  |  | Brandon | DSI | 0-100 |  | P | PH CD |  | R |  |
| JUICE-UVS 11646 | FM Shipping Cases Procurement Delivery |  | 1d | 2019-08-05 A | 2019-08-05 A | JUICE-UVS 2030 | 100% |  |  |  |  |  | Eng Est Entered | BW | 05.01 | 05.01.03 | Mechanical Procurements |  |  |  | Phase C | % C | Serv | C | Brandon | DSI | 0-100 | 19190.25.920 | P | PH CD |  |  |  |
| JUICE-UVS 592533 | MLI Design MLI - Final Dec 17 Delivery |  | 13d | 2019-08-05 A | 2019-08-16 A | JUICE-UVS 593791, JUICE-UVS 5235, JUICE-UVS 2581 | 100% | 2019-08-05 | 2019-08-21 |  |  |  |  | BW | 05.01 | 05.01.03 | Mechanical Procurements |  |  |  | Phase C | % C | Serv |  | Brandon | DSI | 50-50 | 19190.25.920 | P | PH CD |  |  |  |
| JUICE-UVS 592539 | MLI Design & Procure Delivery |  | 1d | 2019-11-22 | 2019-11-25 | JUICE-UVS 592536, JUICE-UVS 592542 |  | 2019-11-22 | 2019-11-22 | 36d | 0d | start on or after 2019-09-30 |  |  | 05.01 | 05.01.03 | Mechanical Procurements |  |  |  | Phase C | % C |  |  | Brandon | DSI | 0-100 | 19190.25.920 | P | PH CD |  |  |  |
| JUICE-UVS593829 | FM & STM Mechanical Materials Procurement Oct 17 Delivery |  | 0.5d | 2019-11-22 | 2019-11-22 | JUICE-UVS593808 |  |  |  | 31.5d | 0d | start on or after 2019-09-30 |  |  | 05.01 | 05.01.03 | Mechanical Procurements |  |  |  | Phase C | % C |  |  | Brandon | DSI | 0-100 | 19190.25.920 | P | PH CD |  |  |  |
| JUICE-UVS593913 | FM & STM Mechanical Materials Oct 17 Material Task Receipt | milestone | 0d | 2019-11-22 | 2019-11-22 | JUICE-UVS593829 |  |  |  | 31.5d | 0d |  |  |  | 05.01 | 05.01.03 | Mechanical Procurements |  |  |  | Phase C | % C |  |  | Brandon | DSI | 0-100 |  | P | PH CD |  | R |  |
| JUICE-UVS593949 | MLI Design & Procure Material Task Receipt | milestone | 0d | 2019-11-25 | 2019-11-25 | JUICE-UVS 592539 |  |  |  | 36d | 11d |  |  |  | 05.01 | 05.01.03 | Mechanical Procurements |  |  |  | Phase C | % C |  |  | Brandon | DSI | 0-100 |  | P | PH CD |  | R |  |

Notes:
- JUICE-UVS 11646: Justify: Activity completion is not needed until right before STM Delivery
- JUICE-UVS 592533: Justify: MLI estimated deilvery is Dec 17, 2017

| ID | WBS | Activity | Duration | Start | Finish | Predecessors | Complete | Planned start | Planned finish | CA | WP/PP | Work Package Name | JUICE UVS Phases | EVT | JUICE-UVS CAMs | OBS | P6 EVT | JUICE-UVS Charge #s | LOE | JUICE-UVS Phase CD | user_text4 | JUICE-UVS Phase AB Charge #s | PHAS - Alice (Old) | BUDG - Budget Phase | SORT - Item Sort | PERT - Pert Select | JUICE Mission Phases | NASA Phase | user_text2 | user_text8 | JUICE UVS Phase CD | JUICE-UVS Procurements | JUICE-UVS Resources | user_text7 | Justify | Forecast Chg |
| --- | --- | --- | --- | --- | --- | --- | --- | --- | --- | --- | --- | --- | --- | --- | --- | --- | --- | --- | --- | --- | --- | --- | --- | --- | --- | --- | --- | --- | --- | --- | --- | --- | --- | --- | --- | --- |
|  | 04 | **EM Mechanical Oversight** |  | 2017-03-06 | 2017-07-21 |  |  |  |  |  |  |  |  |  |  |  |  |  |  |  |  |  |  |  |  |  |  |  |  |  |  |  |  |  |  |  |
| JUICE-UVS 592845 |  | EM Mechanical Oversight | 97d | 2017-03-06 A | 2017-07-21 A | JUICE-UVS 0011 | 100% |  |  | 05.01 | 05.01.04 | EM Mechanical Oversight | Phase C | LOE | Brandon | DSI | LOE | 19190.25.105 | LOE | PH CD |  |  |  |  |  |  |  |  |  |  |  |  |  |  |  |  |
|  | 05 | **EM Mechanical** |  | 2017-03-06 | 2017-08-18 |  |  |  |  |  |  |  |  |  |  |  |  |  |  |  |  |  |  |  |  |  |  |  |  |  |  |  |  |  |  |  |
| JUICE-UVS 592833 |  | Fab Sensor Mech. piece parts | 29d | 2017-03-06 A | 2017-04-13 A | JUICE-UVS 0023 | 100% |  |  | 05.01 | 05.01.05 | EM Mechanical | Phase C | % C | Brandon | DSI | 50-50 | 19190.25.160 |  | PH CD | Mod | 19190.15.141 |  |  |  |  |  |  |  |  |  |  |  |  |  |  |
| JUICE-UVS 592032 |  | Machine EM 1 Optics Housing Covers | 6d | 2017-03-20 A | 2017-03-27 A | JUICE-UVS 0023 | 100% |  |  | 05.01 | 05.01.05 | EM Mechanical | Phase C | % C | Brandon | DSI | 50-50 | 19190.25.160 |  | PH CD |  | 19190.15.141 | 633 | C/D | MECH | Y | End B | B |  |  |  |  |  |  |  |  |
| JUICE-UVS 592274 |  | Machine EM 2 Optics Housing Covers | 5d | 2017-03-20 A | 2017-03-24 A | JUICE-UVS 0023 | 100% |  |  | 05.01 | 05.01.05 | EM Mechanical | Phase C | % C | Brandon | DSI | 50-50 | 19190.25.160 |  | PH CD |  | 19190.15.141 |  |  |  |  |  |  | DS1 |  |  |  |  |  |  |  |
| JUICE-UVS 592053 |  | Fab EM 1 Mechanisms | 11d | 2017-03-22 A | 2017-04-05 A | JUICE-UVS 0023 | 100% |  |  | 05.01 | 05.01.05 | EM Mechanical | Phase C | % C | Brandon | DSI | 50-50 | 19190.25.160 |  | PH CD |  | 19190.15.141 | 633 | C/D | MECH | Y | End B | B |  |  |  |  |  |  |  |  |
| JUICE-UVS 593280 |  | Fab EM 2 Mechanisms | 105d | 2017-03-22 A | 2017-08-18 A | JUICE-UVS 592053 SS | 100% |  |  | 05.01 | 05.01.05 | EM Mechanical | Phase C | % C | Brandon | DSI | 50-50 | 19190.25.160 |  | PH CD |  | 19190.15.141 |  |  |  |  |  |  | DS1 |  |  |  |  |  |  |  |
| JUICE-UVS 31268 |  | EM 1 Mechanical Parts Kitting | 1d | 2017-04-07 A | 2017-04-07 A | JUICE-UVS 592035 FF | 100% |  |  | 05.01 | 05.01.05 | EM Mechanical | Phase C | % C | Brandon | DSI | 0-100 | 19190.25.160 |  | PH CD | Mod | 19190.15.141 |  |  |  |  |  | C |  | BW | PH CD |  |  |  |  |  |
|  | 06 | **EM Mechanical Procurements** |  | 2017-03-27 | 2017-08-09 |  |  |  |  |  |  |  |  |  |  |  |  |  |  |  |  |  |  |  |  |  |  |  |  |  |  |  |  |  |  |  |
| JUICE-UVS 592035 |  | Plate EM 1/2 Optics Housing Covers | 10d | 2017-03-27 A | 2017-04-07 A | JUICE-UVS 592274, JUICE-UVS 592032 | 100% |  |  | 05.01 | 05.01.06 | EM Mechanical Procurements | Phase C | % C | Brandon | DSI | 0-100 | 19190.25.915 |  | PH CD |  | 19190.15.141 | 633 | C/D | MECH |  | End B | B |  |  |  | P |  |  |  |  |
| JUICE-UVS 592056 |  | Plate EM 1 Mechanisms | 8d | 2017-03-31 A | 2017-04-11 A | JUICE-UVS 592053 | 100% |  |  | 05.01 | 05.01.06 | EM Mechanical Procurements | Phase C | % C | Brandon | DSI | 0-100 | 19190.25.915 |  | PH CD | Mod | 19190.15.412 | 633 | C/D | MECH | Y | End B | B |  | BW |  | P | Serv |  |  |  |
| JUICE-UVS 592065 |  | Plate Sensor Mech. piece parts | 4d | 2017-04-14 A | 2017-04-19 A | JUICE-UVS 592833 | 100% |  |  | 05.01 | 05.01.06 | EM Mechanical Procurements | Phase C | % C | Brandon | DSI | 50-50 | 19190.25.915 |  | PH CD | Mod | 19190.15.412 |  |  |  |  |  | C |  |  |  | P |  |  |  |  |
| JUICE-UVS 592041 |  | Weld EM 1/2 Pump Out Tube | 10d | 2017-07-10 A | 2017-07-21 A | JUICE-UVS 0023 | 100% |  |  | 05.01 | 05.01.06 | EM Mechanical Procurements | Phase C | % C | Brandon | DSI | 50-50 | 19190.25.915 |  | PH CD | Mod | 19190.15.412 | 633 | C/D | MECH |  | End B | B |  | BW |  | P | Serv | Eng Est Entered |  |  |
| JUICE-UVS 592044 |  | X-ray Test EM Pump Out Tube | 5d | 2017-07-24 A | 2017-07-28 A | JUICE-UVS 592041 | 100% |  |  | 05.01 | 05.01.06 | EM Mechanical Procurements | Phase C | % C | Brandon | DSI | 0-100 | 19190.25.915 |  | PH CD | Mod | 19190.15.412 | 633 | C/D | MECH |  | End B | B |  | BW |  | P | Serv | Eng Est Entered |  |  |
| JUICE-UVS 592047 |  | Plate EM 1/2 Pump Out Tube | 3d | 2017-08-07 A | 2017-08-09 A | JUICE-UVS 592044 | 100% |  |  | 05.01 | 05.01.06 | EM Mechanical Procurements | Phase C | % C | Brandon | DSI | 0-100 | 19190.25.915 |  | PH CD | Mod | 19190.15.141 | 633 | C/D | MECH |  | End B | C |  | BW | PH CD | P |  |  | Mandated Start Date to wait for CDR |  |
|  | 07 | **S/C Back Shell Ta** |  | 2018-09-17 | 2019-05-17 |  |  |  |  |  |  |  |  |  |  |  |  |  |  |  |  |  |  |  |  |  |  |  |  |  |  |  |  |  |  |  |
|  | 01 | **S/C Back Shell Ta Piece Parts Design & Fab** |  | 2018-09-17 | 2019-05-17 |  |  |  |  |  |  |  |  |  |  |  |  |  |  |  |  |  |  |  |  |  |  |  |  |  |  |  |  |  |  |  |
| JUICE-UVS594774 |  | S/C Back Shell Ta Design | 5d | 2018-09-17 A | 2018-09-17 A | JUICE-UVS 5784 | 100% | 2018-09-17 | 2018-09-21 | 05.01 | 05.01.07.01 | S/C Backshell Ta Piece Parts Design & Fab | Phase C | % C | Brandon | DSI | 50-50 | 19190.25.170 |  |  |  |  |  |  |  |  |  |  |  |  |  |  |  |  | Project Level Mandated Start Date |  |
| JUICE-UVS594777 |  | S/C Back Shell Ta Custom Screws | 50d | 2018-09-17 A | 2019-01-15 A | JUICE-UVS594774 SS | 100% | 2018-09-17 | 2018-11-27 | 05.01 | 05.01.07.01 | S/C Backshell Ta Piece Parts Design & Fab | Phase C | % C | Brandon | DSI | 50-50 | 19190.25.170 |  |  |  |  |  |  |  |  |  |  |  |  |  |  |  |  |  |  |
| JUICE-UVS594780 |  | S/C Back Shell Ta Back Shell Covers | 20d | 2018-10-30 A | 2019-01-16 A | JUICE-UVS594777 | 100% | 2018-10-30 | 2018-11-28 | 05.01 | 05.01.07.01 | S/C Backshell Ta Piece Parts Design & Fab | Phase C | % C | Brandon | DSI | % C | 19190.25.170 |  |  |  |  |  |  |  |  |  |  |  |  |  |  |  |  |  |  |
| JUICE-UVS594783 |  | S/C Back Shell Ta Back Shell Halves Phase 1 | 36d | 2018-10-30 A | 2019-01-15 A | JUICE-UVS594774 SS | 100% | 2018-10-30 | 2018-12-20 | 05.01 | 05.01.07.01 | S/C Backshell Ta Piece Parts Design & Fab | Phase C | % C | Brandon | DSI | % C | 19190.25.170 |  |  |  |  |  |  |  |  |  |  |  |  |  |  |  |  |  |  |
| JUICE-UVS594786 |  | S/C Back Shell Ta Back Shell Halves Phase 2 | 28d | 2019-01-02 A | 2019-05-17 A | JUICE-UVS594783 FF, JUICE-UVS594798 FF | 100% | 2019-01-02 | 2019-02-08 | 05.01 | 05.01.07.01 | S/C Backshell Ta Piece Parts Design & Fab | Phase C | % C | Brandon | DSI | % C | 19190.25.170 |  |  |  |  |  |  |  |  |  |  |  |  |  |  |  |  |  | Y |
|  | 02 | **S/C Back Shell QA** |  | 2019-01-14 | 2019-03-29 |  |  |  |  |  |  |  |  |  |  |  |  |  |  |  |  |  |  |  |  |  |  |  |  |  |  |  |  |  |  |  |
| JUICE-UVS594801 |  | S/C Back Shell Ta Custom Screws QA | 15d | 2019-01-14 A | 2019-02-01 A | JUICE-UVS594777 SS | 100% |  |  | 05.01 | 05.01.07.02 | S/C Back Shell QA |  | % C | Brandon | DSI | 50-50 | 19190.25.171 |  |  |  |  |  |  |  |  |  |  |  |  |  |  |  |  |  |  |
| JUICE-UVS594804 |  | S/C Back Shell Ta Back Shell Halves Phase 1 QA | 36d | 2019-01-14 A | 2019-01-31 A | JUICE-UVS594783 SS | 100% | 2019-01-14 | 2019-03-04 | 05.01 | 05.01.07.02 | S/C Back Shell QA |  | % C | Brandon | DSI | % C | 19190.25.171 |  |  |  |  |  |  |  |  |  |  |  |  |  |  |  |  |  |  |
| JUICE-UVS594810 |  | S/C Back Shell Ta Back Shell Halves Phase 2 QA | 28d | 2019-01-14 A | 2019-03-29 A | JUICE-UVS594786 SS | 100% | 2019-01-14 | 2019-02-20 | 05.01 | 05.01.07.02 | S/C Back Shell QA |  | % C | Brandon | DSI | % C | 19190.25.171 |  |  |  |  |  |  |  |  |  |  |  |  |  |  |  |  |  |  |
| JUICE-UVS594807 |  | S/C Back Shell Ta Back Shell Covers QA | 20d | 2019-01-16 A | 2019-01-31 A | JUICE-UVS594780 SS | 100% | 2019-01-16 | 2019-02-12 | 05.01 | 05.01.07.02 | S/C Back Shell QA |  | % C | Brandon | DSI | % C | 19190.25.171 |  |  |  |  |  |  |  |  |  |  |  |  |  |  |  |  |  |  |

Notes:
- JUICE-UVS 592047: Problem: ?? Changed logic; to FF Assemble Optic / Housing UVS2660
- JUICE-UVS594780: Steps: Backshell Covers 1 (done); Backshell Covers 2 (done); Backshell Covers 3 (done); Backshell Covers 4 (done); Backshell Covers 5 (done)
- JUICE-UVS594783: Steps: Backshell Halves 1 (done); Backshell Halves 2 (done); Backshell Halves 3 (done)
- JUICE-UVS594786: Steps: Backshell Halves 4 (done); Backshell Halves 5 (done); Backshell Fit CheckRework (done)

| ID | WBS | Activity | Type | Duration | Start | Finish | Predecessors | Complete | Planned start | Planned finish | CA | WP/PP | Work Package Name | Justify | JUICE-UVS CAMs | OBS | JUICE-UVS SVT | JUICE UVS Phases | EVT | P6 EVT | JUICE-UVS Charge #s | BUDG - Budget Phase | SORT - Item Sort | JUICE Mission Phases | NASA Phase | JUICE-UVS Phase CD | user_text6 | PHAS - Alice (Old) | PERT - Pert Select | JUICE UVS Phase CD | JUICE-UVS Summary Milestones | Forecast Chg | JUICE-UVS FM CP |
| --- | --- | --- | --- | --- | --- | --- | --- | --- | --- | --- | --- | --- | --- | --- | --- | --- | --- | --- | --- | --- | --- | --- | --- | --- | --- | --- | --- | --- | --- | --- | --- | --- | --- |
|  | 03 | **S/C Back Shell Ta Piece Parts Materials Procurement** |  |  | 2018-09-17 | 2018-10-24 |  |  |  |  |  |  |  |  |  |  |  |  |  |  |  |  |  |  |  |  |  |  |  |  |  |  |  |
| JUICE-UVS594792 |  | S/C Back Shell Ta Piece Parts Procurement | milestone | 0d | 2018-09-17 A | 2018-09-17 A | JUICE-UVS594774 SS | 100% |  |  | 05.01 | 05.01.07.03 | S/C Backshell Ta Piece Parts Materials Procurement | Project Level Mandated Start Date | Brandon | DSI |  |  |  |  |  |  |  |  |  |  |  |  |  |  |  |  |  |
| JUICE-UVS594795 |  | S/C Back Shell Ta Piece Parts Procurement SVT |  | 44d | 2018-09-17 A | 2018-10-24 A | JUICE-UVS594792 | 100% | 2018-09-17 | 2018-11-15 | 05.01 | 05.01.07.03 | S/C Backshell Ta Piece Parts Materials Procurement |  | Brandon | DSI | SVT |  |  |  |  |  |  |  |  |  |  |  |  |  |  |  |  |
| JUICE-UVS594789 |  | S/C Back Shell Ta Piece Parts Delivery |  | 1d | 2018-10-24 A | 2018-10-24 A | JUICE-UVS594795 | 100% | 2018-10-23 | 2018-10-23 | 05.01 | 05.01.07.03 | S/C Backshell Ta Piece Parts Materials Procurement |  | Brandon | DSI |  | Phase C | % C | 0-100 | 19190.25.905 |  |  |  |  |  |  |  |  |  |  |  |  |
| JUICE-UVS594798 |  | S/C Back Shell Ta Piece Parts Task Receipt |  | 1d | 2018-10-24 A | 2018-10-24 A | JUICE-UVS594789 | 100% |  |  | 05.01 | 05.01.07.03 | S/C Backshell Ta Piece Parts Materials Procurement |  | Brandon | DSI |  |  |  |  |  |  |  |  |  |  |  |  |  |  |  |  |  |
|  | 02 | **Electrical** |  |  | 2016-10-03 | 2019-11-22 |  |  |  |  |  |  |  |  |  |  |  |  |  |  |  |  |  |  |  |  |  |  |  |  |  |  |  |
|  | 01 | **C&DH** |  |  | 2016-11-28 | 2018-09-14 |  |  |  |  |  |  |  |  |  |  |  |  |  |  |  |  |  |  |  |  |  |  |  |  |  |  |  |
|  | 01 | **C&DH EM Testing** |  |  | 2016-11-28 | 2017-04-28 |  |  |  |  |  |  |  |  |  |  |  |  |  |  |  |  |  |  |  |  |  |  |  |  |  |  |  |
| JUICE-UVS 3030b6 |  | C&DH EM 2 PWA Bench test w/FPGAs |  | 30d | 2016-11-28 A | 2017-01-11 A | JUICE-UVS 0023 | 100% |  |  | 05.02 | 05.02.01.01 | C&DH EM Test C/D |  | Kris | DSE |  | Phase C | % C | 50-50 | 19190.25.210 | B | ELEC/C&DH | End B | C | PH CD |  |  |  |  |  |  |  |
| JUICE-UVS 592584 |  | Final Test C&DH EM 1 PWA with Build 1 S/W |  | 11d | 2017-02-10 A | 2017-02-24 A | JUICE-UVS 0023 | 100% |  |  | 05.02 | 05.02.01.01 | C&DH EM Test C/D |  | Kris | DSE |  | Phase C | % C | 50-50 | 19190.25.210 | B | ELEC/C&DH | End B | C | PH CD | Phase B | 545 | N | PH CD | Summary |  |  |
| JUICE-UVS 591807 |  | Pre-Emulator (GSEOS) I&T with C&DH EM 2 & SW Build 1 |  | 20d | 2017-03-20 A | 2017-04-14 A | JUICE-UVS 3030b6 | 100% |  |  | 05.02 | 05.02.01.01 | C&DH EM Test C/D |  | Kris | DSE |  | Phase C | % C | 50-50 | 19190.25.210 | B | ELEC/C&DH | End B | C | PH CD | Phase B | 545 | N |  |  |  |  |
| JUICE-UVS 591810 |  | Final Test C&DH EM 2 PWA with Build 1 S/W |  | 10d | 2017-04-17 A | 2017-04-28 A | JUICE-UVS 591807, JUICE-UVS 3030b6 | 100% |  |  | 05.02 | 05.02.01.01 | C&DH EM Test C/D |  | Kris | DSE |  | Phase C | % C | 50-50 | 19190.25.210 | B | ELEC/C&DH | End B | C | PH CD | Phase B | 545 | N |  |  |  |  |
|  | 02 | **C&DH FM Final Design** |  |  | 2017-05-22 | 2017-07-11 |  |  |  |  |  |  |  |  |  |  |  |  |  |  |  |  |  |  |  |  |  |  |  |  |  |  |  |
| JUICE-UVS 5208 |  | C&DH Updates |  | 28d | 2017-05-22 A | 2017-06-30 A | JUICE-UVS 4024 SS | 100% |  |  | 05.02 | 05.02.01.02 | C&DH FM Final Design |  | Kris | DSE |  | Phase C | % C | 50-50 | 19190.25.211 | B+ |  |  | C | PH CD | Phase B | 635 |  | PH CD |  |  |  |
| JUICE-UVS 3176 |  | FM C&DH Peer Review |  | 1d | 2017-07-03 A | 2017-07-03 A | JUICE-UVS 5208 | 100% |  |  | 05.02 | 05.02.01.02 | C&DH FM Final Design |  | Kris | DSE |  | Phase C | % C | 0-100 | 19190.25.211 | B | ELEC/C&DH |  | C | PH CD | Phase B | 615 | Y |  |  |  |  |
| JUICE-UVS 592740 |  | FM C&DH Peer Review Updates |  | 5d | 2017-07-05 A | 2017-07-11 A | JUICE-UVS 3176 | 100% |  |  | 05.02 | 05.02.01.02 | C&DH FM Final Design |  | Kris | DSE |  | Phase C | % C | 0-100 | 19190.25.211 |  |  |  |  | PH CD |  |  |  |  |  |  |  |
|  | 03 | **C&DH FM FPGA** |  |  | 2017-01-09 | 2018-09-14 |  |  |  |  |  |  |  |  |  |  |  |  |  |  |  |  |  |  |  |  |  |  |  |  |  |  |  |
| JUICE-UVS 592350 |  | FM C&DH FPGA Update |  | 310d | 2017-01-09 A | 2018-03-30 A | JUICE-UVS 3030b6 | 100% |  |  | 05.02 | 05.02.01.03 | C&DH FM FPGA |  | Kris | DSE |  | Phase C | % C | 50-50 | 19190.25.212 | C/D | ELEC/C&DH |  | C | PH CD |  | 635 | Y |  |  |  |  |
| JUICE-UVS 3196 |  | FPGA Peer Review |  | 1d | 2017-07-17 A | 2017-07-17 A |  | 100% |  |  | 05.02 | 05.02.01.03 | C&DH FM FPGA |  | Kris | DSE |  | Phase C | % C | 0-100 | 19190.25.212 |  |  |  |  | PH CD |  |  |  |  |  |  |  |
| JUICE-UVS 592743 |  | FPGA Peer Review Updates |  | 5d | 2017-07-18 A | 2017-07-24 A | JUICE-UVS 3196 | 100% |  |  | 05.02 | 05.02.01.03 | C&DH FM FPGA |  | Kris | DSE |  | Phase C | % C | 0-100 | 19190.25.212 |  |  |  |  | PH CD |  |  |  |  |  |  |  |
| JUICE-UVS 3193 |  | FM C&DH FPGA Simulations/WCTA Review |  | 287d | 2017-07-25 A | 2018-09-14 A | JUICE-UVS 592350, JUICE-UVS 592743 | 100% |  |  | 05.02 | 05.02.01.03 | C&DH FM FPGA |  | Kris | DSE |  | Phase C | % C | 50-50 | 19190.25.212 | C/D | ELEC/C&DH |  | C | PH CD |  | 635 | Y |  |  | Y | FM CP |
|  | 04 | **C&DH FM Fab** |  |  | 2017-09-15 | 2018-03-05 |  |  |  |  |  |  |  |  |  |  |  |  |  |  |  |  |  |  |  |  |  |  |  |  |  |  |  |
| JUICE-UVS 3186 |  | FM C&DH Update Assembly Dwg |  | 54d | 2017-09-15 A | 2017-12-01 A | JUICE-UVS 592740 | 100% |  |  | 05.02 | 05.02.01.04 | C&DH FM Fab | Mandated Start Date to wait for CDR | Kris | DSE |  | Phase C | % C | 0-100 | 19190.25.213 | B+ |  |  | C | PH CD | Phase B | 635 |  |  |  |  |  |
| JUICE-UVS 3182 |  | C&DH FM MPS Development |  | 5d | 2017-11-27 A | 2017-12-01 A | JUICE-UVS 592740 | 100% |  |  | 05.02 | 05.02.01.04 | C&DH FM Fab | Mandated Start Date to wait for CDR | Kris | DSE |  | Phase C | % C | 0-100 | 19190.25.213 | C/D | ELEC/C&DH |  | C | PH CD | Phase B | 635 | Y |  |  |  |  |
| JUICE-UVS 3188 |  | FM C&DH Parts Kitting |  | 3d | 2017-12-04 A | 2017-12-06 A | JUICE-UVS 593769, JUICE-UVS 593757, JUICE-UVS 593745, JUICE-UVS 593733, JUICE-UVS 593721, JUICE-UVS 591288, JUICE-UVS 593391, JUICE-UVS 593715, JUICE-UVS 3182 | 100% |  |  | 05.02 | 05.02.01.04 | C&DH FM Fab |  | Kris | DSE |  | Phase C | % C | 0-100 | 19190.25.213 | C/D | ELEC/C&DH |  | C | PH CD | Phase B | 635 | Y |  |  |  |  |
| JUICE-UVS 3192 |  | FM C&DH Fab PWA |  | 48d | 2018-01-29 A | 2018-03-05 A | JUICE-UVS 3186, JUICE-UVS 3188 | 100% | 2017-12-27 | 2018-03-05 | 05.02 | 05.02.01.04 | C&DH FM Fab |  | Kris | DSE |  | Phase C | % C | 50-50 | 19190.25.213 | C/D | ELEC/C&DH |  | C | PH CD |  | 635 | Y |  |  |  |  |

| ID | WBS | Activity | Duration | Start | Finish | Predecessors | Complete | Planned start | Planned finish | user_text8 | Work Package | CA | WP/PP | Work Package Name | SORT - Item Sort | JUICE UVS Phases | EVT | NASA Phase | JUICE-UVS CAMs | OBS | P6 EVT | JUICE-UVS Charge #s | JUICE-UVS Phase CD | user_text4 | PHAS - Alice (Old) | BUDG - Budget Phase | PERT - Pert Select | JUICE-UVS FM CP | user_text1 JUICE-UVS Risk ID | user_text6 | user_text2 |
| --- | --- | --- | --- | --- | --- | --- | --- | --- | --- | --- | --- | --- | --- | --- | --- | --- | --- | --- | --- | --- | --- | --- | --- | --- | --- | --- | --- | --- | --- | --- | --- |
|  | 05 | **C&DH FM Test** |  | 2018-02-08 | 2018-05-18 |  |  |  |  |  |  |  |  |  |  |  |  |  |  |  |  |  |  |  |  |  |  |  |  |  |  |
| JUICE-UVS 592485 |  | UVS C&DH FTP Release - FM Final | 20d | 2018-02-08 A | 2018-02-09 A | JUICE-UVS 5208 | 100% | 2018-02-08 | 2018-03-07 | KP | 2.4.3.2 | 05.02 | 05.02.01.05 | C&DH FM Test | PLANS | Phase C | % C | C | Kris | DSE | 50-50 | 19190.25.214 | PH CD |  |  |  |  |  |  |  |  |
| JUICE-UVS 3198 |  | FM C&DH PWA Stand-Alone Test (checkout FTP) | 15d | 2018-04-27 A | 2018-05-18 A | JUICE-UVS 3192, JUICE-UVS 592485 | 100% | 2018-04-27 | 2018-05-17 |  |  | 05.02 | 05.02.01.05 | C&DH FM Test | ELEC/C&DH | Phase C | % C | C | Kris | DSE | 50-50 | 19190.25.214 | PH CD | Mod | 645 | C/D | Y | FM CP |  |  |  |
|  | 02 | **LVPS** |  | 2017-01-23 | 2018-05-21 |  |  |  |  |  |  |  |  |  |  |  |  |  |  |  |  |  |  |  |  |  |  |  |  |  |  |
|  | 01 | **LVPS FM Final Design** |  | 2017-01-23 | 2017-07-14 |  |  |  |  |  |  |  |  |  |  |  |  |  |  |  |  |  |  |  |  |  |  |  |  |  |  |
| JUICE-UVS 3272 |  | Update FM LVPS Design & Layouts | 90d | 2017-01-23 A | 2017-05-30 A | JUICE-UVS594045 FF | 100% |  |  | KP |  | 05.02 | 05.02.02.01 | LVPS FM Final Design | ELEC/LVPS | Phase C | % C | C | Kris | DSE | 50-50 | 19190.25.220 | PH CD | Mod | 617 | B | Y |  | Risk ID 23 | Phase B |  |
| JUICE-UVS 5076 |  | Update FM LVPS Magnetics Source Control Drawings | 28d | 2017-05-30 A | 2017-07-07 A | JUICE-UVS 3272 | 100% |  |  |  |  | 05.02 | 05.02.02.01 | LVPS FM Final Design | ELEC/LVPS | Phase C | % C | C | Kris | DSE | 50-50 | 19190.25.220 | PH CD | Mod | 617 | B | Y |  |  | Phase B |  |
| JUICE-UVS 3274 |  | FM LVPS Peer Review | 1d | 2017-07-07 A | 2017-07-07 A | JUICE-UVS594039, JUICE-UVS594042, JUICE-UVS594033, JUICE-UVS 3272 | 100% |  |  |  |  | 05.02 | 05.02.02.01 | LVPS FM Final Design | ELEC/LVPS | Phase C | % C | C | Kris | DSE | 0-100 | 19190.25.220 | PH CD |  | 617 | B | Y |  |  | Phase B |  |
| JUICE-UVS 3277 |  | FM LVPS Peer Review Updates | 5d | 2017-07-10 A | 2017-07-14 A | JUICE-UVS 3274 | 100% |  |  |  |  | 05.02 | 05.02.02.01 | LVPS FM Final Design |  | Phase C | % C |  | Kris | DSE | 0-100 | 19190.25.220 | PH CD |  |  |  |  |  |  |  |  |
|  | 02 | **LVPS FM Fab** |  | 2017-09-11 | 2018-02-27 |  |  |  |  |  |  |  |  |  |  |  |  |  |  |  |  |  |  |  |  |  |  |  |  |  |  |
|  | 01 | **LVPS FM 1 Fab** |  | 2017-09-11 | 2018-02-26 |  |  |  |  |  |  |  |  |  |  |  |  |  |  |  |  |  |  |  |  |  |  |  |  |  |  |
| JUICE-UVS 3292 |  | LVPS FM 1 ASSY dwg. | 26d | 2017-09-11 A | 2017-10-16 A | JUICE-UVS 3274, JUICE-UVS 3277 | 100% |  |  |  |  | 05.02 | 05.02.02.02.01 | LVPS FM 1 Fab |  | Phase C | % C | C | Kris | DSE | 0-100 | 19190.25.221 | PH CD |  |  |  |  |  |  |  |  |
| JUICE-UVS 5214 |  | LVPS FM 1 MPS Development | 27d | 2017-09-28 A | 2017-11-03 A | JUICE-UVS 3274 | 100% |  |  |  |  | 05.02 | 05.02.02.02.01 | LVPS FM 1 Fab | ELEC/LVPS | Phase C | % C | C | Kris | DSE | 0-100 | 19190.25.221 | PH CD |  | 637 | B | Y |  |  | Phase B |  |
| JUICE-UVS 3280 |  | LVPS FM 1 Parts Kitting | 9d | 2017-10-27 A | 2017-11-08 A | JUICE-UVS 593781, JUICE-UVS 593769, JUICE-UVS 593775, JUICE-UVS 593757, JUICE-UVS 593745, JUICE-UVS 593733, JUICE-UVS 593721, JUICE-UVS 591300, JUICE-UVS 593391, JUICE-UVS 593715, JUICE-UVS 3220, JUICE-UVS 3274, JUICE-UVS 5214 | 100% |  |  |  |  | 05.02 | 05.02.02.02.01 | LVPS FM 1 Fab | ELEC/LVPS | Phase C | % C | C | Kris | DSE | 0-100 | 19190.25.221 | PH CD |  | 637 | C/D | Y |  |  | Phase B |  |
| JUICE-UVS 3284 |  | LVPS FM 1 Board Assembly | 75d | 2017-11-07 A | 2018-02-26 A | JUICE-UVS 3280, JUICE-UVS 3292 | 100% |  |  |  |  | 05.02 | 05.02.02.02.01 | LVPS FM 1 Fab | ELEC/LVPS | Phase C | % C | C | Kris | DSE | 50-50 | 19190.25.221 | PH CD | Mod | 637 | C/D | Y |  |  |  |  |
|  | 02 | **LVPS FM 2 Fab** |  | 2017-09-11 | 2018-02-27 |  |  |  |  |  |  |  |  |  |  |  |  |  |  |  |  |  |  |  |  |  |  |  |  |  |  |
| JUICE-UVS 592521 |  | LVPS FM 2 ASSY dwg. | 26d | 2017-09-11 A | 2017-10-16 A | JUICE-UVS 3277 | 100% |  |  |  |  | 05.02 | 05.02.02.02.02 | LVPS FM 2 Fab |  | Phase C | % C | C | Kris | DSE | 0-100 | 19190.25.222 | PH CD |  |  |  |  |  |  |  | DS3 |
| JUICE-UVS 592518 |  | LVPS FM 2 MPS Development | 21d | 2017-10-06 A | 2017-11-03 A | JUICE-UVS 3274 | 100% |  |  |  |  | 05.02 | 05.02.02.02.02 | LVPS FM 2 Fab | ELEC/LVPS | Phase C | % C | C | Kris | DSE | 0-100 | 19190.25.222 | PH CD |  | 637 | B | Y |  |  | Phase B | DS3 |
| JUICE-UVS 592524 |  | LVPS FM 2 Parts Kitting | 7d | 2017-10-27 A | 2017-11-06 A | JUICE-UVS 592518 | 100% |  |  |  |  | 05.02 | 05.02.02.02.02 | LVPS FM 2 Fab | ELEC/LVPS | Phase C | % C | C | Kris | DSE | 0-100 | 19190.25.222 | PH CD |  | 637 | C/D | Y |  |  | Phase B | DS3 |
| JUICE-UVS 592527 |  | LVPS FM 2 Board Assembly | 75d | 2017-11-07 A | 2018-02-27 A | JUICE-UVS 592524, JUICE-UVS 592521 | 100% | 2017-11-07 | 2018-02-26 |  |  | 05.02 | 05.02.02.02.02 | LVPS FM 2 Fab | ELEC/LVPS | Phase C | % C | C | Kris | DSE | 50-50 | 19190.25.222 | PH CD | Mod | 637 | C/D | Y |  |  |  | DS3 |
|  | 03 | **LVPS FM Test** |  | 2018-01-16 | 2018-05-21 |  |  |  |  |  |  |  |  |  |  |  |  |  |  |  |  |  |  |  |  |  |  |  |  |  |  |
|  | 01 | **LVPS FM 1 Test** |  | 2018-01-16 | 2018-03-16 |  |  |  |  |  |  |  |  |  |  |  |  |  |  |  |  |  |  |  |  |  |  |  |  |  |  |
| JUICE-UVS 593388 |  | LVPS FM GSE & SW Development | 20d | 2018-01-16 A | 2018-02-02 A | JUICE-UVS 592758 | 100% | 2018-01-16 | 2018-02-12 |  |  | 05.02 | 05.02.02.03.01 | LVPS FM 1 Test |  | Phase C | % C |  | Kris | DSE | 50-50 | 19190.25.223 | PH CD |  |  |  |  |  |  |  |  |
| JUICE-UVS 3286 |  | LVPS FM 1 PWA #1 Bench FTP & Test | 40d | 2018-01-22 A | 2018-03-16 A | JUICE-UVS 3284 FF, JUICE-UVS 3272, JUICE-UVS 593388 SS, JUICE-UVS 5076 | 100% |  |  |  |  | 05.02 | 05.02.02.03.01 | LVPS FM 1 Test | ELEC/LVPS | Phase C | % C | C | Kris | DSE | 50-50 | 19190.25.223 | PH CD | Mod | 647 | C/D | Y |  |  |  |  |

Notes:
- JUICE-UVS 3292: Justify: Mandated Start Date to wait for CDR
- JUICE-UVS 5214: Justify: Mandated Start Date to wait for CDR
- JUICE-UVS 592521: Justify: Mandated Start Date to wait for CDR
- JUICE-UVS 592518: Justify: Mandated Start Date to wait for CDR
- JUICE-UVS 593388: Justify: Activity to be completed right before LVPS FM1 PWA#1 FTP & Test

| ID | WBS | Activity | Duration | Start | Finish | Predecessors | Complete | Planned start | Planned finish | user_text2 | user_text4 | CA | WP/PP | Work Package Name | PHAS - Alice (Old) | BUDG - Budget Phase | SORT - Item Sort | PERT - Pert Select | JUICE UVS Phases | EVT | NASA Phase | JUICE-UVS CAMs | OBS | P6 EVT | JUICE-UVS Charge #s | JUICE-UVS FM CP | JUICE-UVS Phase CD | JUICE UVS Phase CD | user_text6 | Justify | JUICE-UVS Resources |
| --- | --- | --- | --- | --- | --- | --- | --- | --- | --- | --- | --- | --- | --- | --- | --- | --- | --- | --- | --- | --- | --- | --- | --- | --- | --- | --- | --- | --- | --- | --- | --- |
|  | 02 | **LVPS FM 2 Test** |  | 2018-03-28 | 2018-05-21 |  |  |  |  |  |  |  |  |  |  |  |  |  |  |  |  |  |  |  |  |  |  |  |  |  |  |
| JUICE-UVS 592530 |  | LVPS FM 2 PWA #1 Bench Test | 39d | 2018-03-28 A | 2018-05-21 A | JUICE-UVS 3286, JUICE-UVS 592527 FF | 100% |  |  | DS3 | Mod | 05.02 | 05.02.02.03.02 | LVPS FM 2 Test | 647 | C/D | ELEC/LVPS | Y | Phase C | % C | C | Kris | DSE | 50-50 | 19190.25.224 | FM CP | PH CD |  |  |  |  |
|  | 04 | **LVPS Input Filter Redesign with EM Update** |  | 2017-03-13 | 2017-06-16 |  |  |  |  |  |  |  |  |  |  |  |  |  |  |  |  |  |  |  |  |  |  |  |  |  |  |
| JUICE-UVS594045 |  | Redesign Input Filter | 15d | 2017-03-13 A | 2017-03-31 A | JUICE-UVS594036 | 100% |  |  |  |  | 05.02 | 05.02.02.04 | LVPS FInput Filter Redesign with EM Update |  |  |  |  | Phase C | % C |  | Kris | DSE | 50-50 | 19190.25.225 |  | PH CD |  |  |  |  |
| JUICE-UVS594039 |  | LCL Power Stability WCA (R001882) | 15d | 2017-04-03 A | 2017-04-21 A | JUICE-UVS594045 | 100% |  |  |  |  | 05.02 | 05.02.02.04 | LVPS FInput Filter Redesign with EM Update |  |  |  |  | Phase C | % C |  | Kris | DSE | 50-50 | 19190.25.225 |  | PH CD |  |  |  |  |
| JUICE-UVS594048 |  | Retrofit 2 EM LVPS | 10d | 2017-04-03 A | 2017-04-14 A | JUICE-UVS594045 | 100% |  |  |  |  | 05.02 | 05.02.02.04 | LVPS FInput Filter Redesign with EM Update |  |  |  |  | Phase C | % C |  | Kris | DSE | 0-100 | 19190.25.225 |  | PH CD |  |  |  |  |
| JUICE-UVS594051 |  | Retest EM LVPS | 43d | 2017-04-17 A | 2017-06-16 A | JUICE-UVS594048 SS+5d | 100% |  |  |  |  | 05.02 | 05.02.02.04 | LVPS FInput Filter Redesign with EM Update |  |  |  |  | Phase C | % C |  | Kris | DSE | 0-100 | 19190.25.225 |  | PH CD |  |  |  |  |
|  | 03 | **HVPS** |  | 2016-12-06 | 2018-07-20 |  |  |  |  |  |  |  |  |  |  |  |  |  |  |  |  |  |  |  |  |  |  |  |  |  |  |
|  | 01 | **HVPS FM Final Design** |  | 2017-02-20 | 2017-05-31 |  |  |  |  |  |  |  |  |  |  |  |  |  |  |  |  |  |  |  |  |  |  |  |  |  |  |
| JUICE-UVS 3229 |  | FM HVPS DWG Review & Updates | 40d | 2017-02-20 A | 2017-04-14 A | JUICE-UVS 0023 | 100% |  |  |  |  | 05.02 | 05.02.03.01 | HVPS FM Final Design |  |  |  |  | Phase C | % C | C | Kris | DSE | 50-50 | 19190.25.230 |  | PH CD | PH CD |  |  |  |
| JUICE-UVS 3212 |  | FM HVPS Update Board Layouts | 16d | 2017-04-17 A | 2017-05-08 A | JUICE-UVS 3229 | 100% |  |  |  |  | 05.02 | 05.02.03.01 | HVPS FM Final Design | 614 | B | ELEC/HVPS | Y | Phase C | % C | C | Kris | DSE | 50-50 | 19190.25.230 |  | PH CD |  | Phase B |  |  |
| JUICE-UVS 3214 |  | FM HVPS Peer Review | 1d | 2017-05-09 A | 2017-05-09 A | JUICE-UVS 3212 | 100% |  |  |  |  | 05.02 | 05.02.03.01 | HVPS FM Final Design | 614 | B | ELEC/HVPS | Y | Phase C | % C | C | Kris | DSE | 0-100 | 19190.25.230 |  | PH CD |  | Phase B |  |  |
| JUICE-UVS 3217 |  | FM HVPS Peer Review Updates | 14d | 2017-05-10 A | 2017-05-31 A | JUICE-UVS 3214 | 100% |  |  |  |  | 05.02 | 05.02.03.01 | HVPS FM Final Design |  |  |  |  | Phase C | % C |  | Kris | DSE | 0-100 | 19190.25.230 |  | PH CD |  |  |  |  |
|  | 02 | **HVPS FM Fab** |  | 2017-09-13 | 2018-02-16 |  |  |  |  |  |  |  |  |  |  |  |  |  |  |  |  |  |  |  |  |  |  |  |  |  |  |
| JUICE-UVS 3226 |  | HVPS FM 1 MPS Development | 14d | 2017-09-13 A | 2017-10-02 A | JUICE-UVS 3217 | 100% |  |  |  |  | 05.02 | 05.02.03.02 | HVPS FM Fab | 634 | B | ELEC/HVPS | Y | Phase C | % C | C | Kris | DSE | 0-100 | 19190.25.231 |  | PH CD |  | Phase B | Mandated Start Date to wait for CDR |  |
| JUICE-UVS 3228 |  | HVPS FM 1 Parts Kitting | 2d | 2017-10-13 A | 2017-10-16 A | JUICE-UVS 593781, JUICE-UVS 593769, JUICE-UVS 593775, JUICE-UVS 593757, JUICE-UVS 593745, JUICE-UVS 593733, JUICE-UVS 593721, JUICE-UVS 591309, JUICE-UVS 593391, JUICE-UVS 593715, JUICE-UVS 3220, JUICE-UVS 3226, JUICE-UVS 3229 | 100% |  |  |  |  | 05.02 | 05.02.03.02 | HVPS FM Fab | 634 | C/D | ELEC/HVPS | Y | Phase C | % C | C | Kris | DSE | 0-100 | 19190.25.231 |  | PH CD |  | Phase B |  |  |
| JUICE-UVS 3236 |  | HVPS FM 1 Multiplier String Fab (2) | 5d | 2017-10-17 A | 2017-10-23 A | JUICE-UVS 3228 | 100% |  |  | DS3 |  | 05.02 | 05.02.03.02 | HVPS FM Fab | 634 | C/D | ELEC/HVPS | Y | Phase C | % C | C | Kris | DSE | 0-100 | 19190.25.231 |  | PH CD |  | Phase B |  |  |
| JUICE-UVS 3240 |  | HVPS FM 1 Multiplier String Test | 1d | 2017-10-24 A | 2017-10-24 A | JUICE-UVS 3236 | 100% |  |  |  |  | 05.02 | 05.02.03.02 | HVPS FM Fab | 644 | C/D | ELEC/HVPS | Y | Phase C | % C | C | Kris | DSE | 0-100 | 19190.25.231 |  | PH CD |  |  |  |  |
| JUICE-UVS 3242 |  | HVPS FM 1 Multiplier String Parylene Service | 14d | 2017-10-25 A | 2017-11-13 A | JUICE-UVS 3240 | 100% |  |  |  |  | 05.02 | 05.02.03.02 | HVPS FM Fab |  | C/D | ELEC/HVPS |  | Phase C | % C | C | Kris | DSE | 0-100 | 19190.25.231 |  | PH CD |  |  |  |  |
| JUICE-UVS 592755 |  | HVPS FM 1 Multiplier String Parylene Labor | 14d | 2017-10-25 A | 2017-11-13 A | JUICE-UVS 3242 SS | 100% |  |  |  |  | 05.02 | 05.02.03.02 | HVPS FM Fab |  |  |  |  | Phase C | % C |  | Kris | DSE | 0-100 | 19190.25.231 |  | PH CD |  |  |  | 0Budget |
| JUICE-UVS 3231 |  | HVPS FM 1 Multiplier/Filter Board Assembly (2) | 15d | 2017-11-09 A | 2017-12-01 A | JUICE-UVS 3230 | 100% |  |  | DS3 |  | 05.02 | 05.02.03.02 | HVPS FM Fab | 634 | C/D | ELEC/HVPS | Y | Phase C | % C | C | Kris | DSE | 0-100 | 19190.25.231 |  | PH CD |  | Phase B | Project level Mandatory Finish Date |  |
| JUICE-UVS 3230 |  | HVPS FM 1 test Multiplier Strings before installation (2) | 1d | 2017-11-14 A | 2017-11-14 A | JUICE-UVS 3228, JUICE-UVS 592755 | 100% |  |  | DS3 |  | 05.02 | 05.02.03.02 | HVPS FM Fab | 634 | C/D | ELEC/HVPS | Y | Phase C | % C | C | Kris | DSE | 0-100 | 19190.25.231 |  | PH CD |  | Phase B |  |  |
| JUICE-UVS 3234 |  | HVPS FM 1 Multiplier/Filter Board Test | 5d | 2017-12-04 A | 2017-12-08 A | JUICE-UVS 3231 | 100% |  |  |  |  | 05.02 | 05.02.03.02 | HVPS FM Fab | 644 | C/D | ELEC/HVPS | Y | Phase C | % C | C | Kris | DSE | 0-100 | 19190.25.231 |  | PH CD |  |  |  |  |
| JUICE-UVS 3250 |  | HVPS FM 1 Main Board Assembly | 38d | 2017-12-11 A | 2018-02-16 A | JUICE-UVS 3228, JUICE-UVS 3234 | 100% | 2017-12-11 | 2018-02-05 |  |  | 05.02 | 05.02.03.02 | HVPS FM Fab |  |  |  |  | Phase C | % C | C | Kris | DSE | 50-50 | 19190.25.231 |  | PH CD |  |  |  |  |

| ID | WBS | Activity | Duration | Start | Finish | Predecessors | Complete | Planned start | Planned finish | user_text6 | CA | WP/PP | Work Package Name | PHAS - Alice (Old) | BUDG - Budget Phase | SORT - Item Sort | PERT - Pert Select | JUICE Mission Phases | JUICE UVS Phases | EVT | NASA Phase | JUICE-UVS CAMs | OBS | P6 EVT | JUICE-UVS Charge #s | JUICE-UVS Phase CD | JUICE-UVS FM CP | user_text4 | Justify | Forecast Chg |
| --- | --- | --- | --- | --- | --- | --- | --- | --- | --- | --- | --- | --- | --- | --- | --- | --- | --- | --- | --- | --- | --- | --- | --- | --- | --- | --- | --- | --- | --- | --- |
|  | 03 | **HVPS EM/FM Test** |  | 2016-12-06 | 2018-07-20 |  |  |  |  |  |  |  |  |  |  |  |  |  |  |  |  |  |  |  |  |  |  |  |  |  |
|  | 01 | **HVPS EM Test** |  | 2016-12-06 | 2016-12-19 |  |  |  |  |  |  |  |  |  |  |  |  |  |  |  |  |  |  |  |  |  |  |  |  |  |
| JUICE-UVS 591876 |  | Final EM 1 HVPS FTP & Test | 10d | 2016-12-06 A | 2016-12-19 A | JUICE-UVS 0023 | 100% |  |  | Phase B | 05.02 | 05.02.03.03.01 | HVPS EM Test | 544 | B | ELEC/HVPS | N | End B | Phase C | % C | B | Kris | DSE | 0-100 | 19190.25.232 | PH CD |  |  |  |  |
|  | 02 | **HVPS FM Test** |  | 2018-01-23 | 2018-07-20 |  |  |  |  |  |  |  |  |  |  |  |  |  |  |  |  |  |  |  |  |  |  |  |  |  |
| JUICE-UVS 3252 |  | HVPS FM 1 Main Board Test | 10d | 2018-01-23 A | 2018-02-22 A | JUICE-UVS 594189, JUICE-UVS 3250 FF, JUICE-UVS 3212, JUICE-UVS 3214, JUICE-UVS 3220 SS | 100% | 2018-01-23 | 2018-02-05 |  | 05.02 | 05.02.03.03.02 | HVPS FM Test |  |  |  |  |  | Phase C | % C | C | Kris | DSE | 50-50 | 19190.25.233 | PH CD |  |  |  |  |
| JUICE-UVS 3262 |  | HVPS FM 1 Main Board Assembly Parylene Service | 23d | 2018-03-29 A | 2018-05-02 A | JUICE-UVS 3252 | 100% | 2018-03-29 | 2018-04-30 |  | 05.02 | 05.02.03.03.02 | HVPS FM Test | 644 | C/D | ELEC/HVPS |  |  | Phase C | % C | C | Kris | DSE | 0-100 | 19190.25.233 | PH CD | FM CP |  |  |  |
| JUICE-UVS 592752 |  | HVPS FM 1 Main Board Assembly Parylene Labor | 5d | 2018-04-26 A | 2018-05-02 A | JUICE-UVS 3262 SS | 100% |  |  |  | 05.02 | 05.02.03.03.02 | HVPS FM Test |  |  |  |  |  | Phase C | % C |  | Kris | DSE | 0-100 | 19190.25.233 | PH CD | FM CP |  |  |  |
| JUICE-UVS 3264 |  | HVPS FM 1 Post-Parylene Test | 20d | 2018-05-29 A | 2018-07-20 A | JUICE-UVS 592752 | 100% | 2018-05-29 | 2018-06-25 |  | 05.02 | 05.02.03.03.02 | HVPS FM Test | 644 | C/D | ELEC/HVPS | Y |  | Phase C | % C | C | Kris | DSE | 0-100 | 19190.25.233 | PH CD | FM CP |  |  |  |
|  | 04 | **Harnessing/Backplane** |  | 2016-10-03 | 2018-09-21 |  |  |  |  |  |  |  |  |  |  |  |  |  |  |  |  |  |  |  |  |  |  |  |  |  |
|  | 01 | **Harness FM** |  | 2017-12-27 | 2018-09-21 |  |  |  |  |  |  |  |  |  |  |  |  |  |  |  |  |  |  |  |  |  |  |  |  |  |
| JUICE-UVS 3310 |  | FM Instrument Harness Final Design | 10d | 2017-12-27 A | 2018-01-10 A | JUICE-UVS 592475 | 100% |  |  | Phase B | 05.02 | 05.02.04.01 | Harness FM | 618 | B | MECH | Y |  | Phase C | % C | C | Kris | DSE | 50-50 | 19190.25.240 | PH CD | FM CP | Mod | Project level Mandatory Finish Date |  |
| JUICE-UVS 3295 |  | FM Instrument Harness MPS Development | 3d | 2018-03-26 A | 2018-03-28 A | JUICE-UVS 3310 | 100% |  |  | Phase B | 05.02 | 05.02.04.01 | Harness FM | 637 | B | ELEC/LVPS | Y |  | Phase C | % C | C | Kris | DSE | 0-100 | 19190.25.240 | PH CD | FM CP |  |  |  |
| JUICE-UVS 3296 |  | FM Instrument Harness Fabrication | 67d | 2018-04-02 A | 2018-07-06 A | JUICE-UVS 3297 | 100% |  |  |  | 05.02 | 05.02.04.01 | Harness FM | 638 | C/D | ELEC | Y |  | Phase C | % C | C | Kris | DSE | 50-50 | 19190.25.240 | PH CD | FM CP | Mod |  |  |
| JUICE-UVS 3297 |  | FM Instrument Harness Parts Kitting | 5d | 2018-04-02 A | 2018-04-06 A | JUICE-UVS 593255, JUICE-UVS 593252, JUICE-UVS 593249, JUICE-UVS 593246, JUICE-UVS 3295 | 100% |  |  | Phase B | 05.02 | 05.02.04.01 | Harness FM | 637 | C/D | ELEC | Y |  | Phase C | % C | C | Kris | DSE | 0-100 | 19190.25.240 | PH CD | FM CP |  |  |  |
| JUICE-UVS 3288 |  | FM Safe/Arm Cable Design | 5d | 2018-05-07 A | 2018-05-11 A | JUICE-UVS 3310 | 100% |  |  |  | 05.02 | 05.02.04.01 | Harness FM | 648 | C/D | ELEC | Y |  | Phase C | % C | C | Kris | DSE | 0-100 | 19190.25.240 | PH CD | FM CP |  |  |  |
| JUICE-UVS 5091 |  | FM Safe/Arm Cable MPS Development | 5d | 2018-05-14 A | 2018-05-18 A | JUICE-UVS 3288 | 100% |  |  | Phase B | 05.02 | 05.02.04.01 | Harness FM | 637 | B | ELEC/LVPS | Y |  | Phase C | % C | C | Kris | DSE | 0-100 | 19190.25.240 | PH CD | FM CP |  |  |  |
| JUICE-UVS 5109 |  | SC Interface Connectors | 5d | 2018-05-18 A | 2018-05-24 A | JUICE-UVS 0023, JUICE-UVS 3310 | 100% |  |  |  | 05.02 | 05.02.04.01 | Harness FM |  |  |  |  |  | Phase C | % C | C | Kris | DSE | 0-100 | 19190.25.240 | PH CD |  |  |  |  |
| JUICE-UVS 5094 |  | FM Safe/Arm Cable Parts Kitting | 5d | 2018-05-21 A | 2018-05-25 A | JUICE-UVS 593252, JUICE-UVS 593249, JUICE-UVS 593246, JUICE-UVS 5091 | 100% | 2018-05-21 | 2018-05-29 | Phase B | 05.02 | 05.02.04.01 | Harness FM | 637 | C/D | ELEC | Y |  | Phase C | % C | C | Kris | DSE | 0-100 | 19190.25.240 | PH CD | FM CP |  |  |  |
| JUICE-UVS 5097 |  | FM Safe/Arm Plugs Fabrication | 5d | 2018-05-29 A | 2018-06-04 A | JUICE-UVS 5094 | 100% |  |  |  | 05.02 | 05.02.04.01 | Harness FM | 638 | C/D | ELEC | Y |  | Phase C | % C | C | Kris | DSE | 0-100 | 19190.25.240 | PH CD | FM CP |  |  |  |
| JUICE-UVS 5103 |  | FM Safe/Arm Cable Testing | 63d | 2018-06-22 A | 2018-09-21 A | JUICE-UVS 5097 | 100% |  |  |  | 05.02 | 05.02.04.01 | Harness FM | 648 | C/D | ELEC | Y |  | Phase C | % C | C | Kris | DSE | 0-100 | 19190.25.240 | PH CD | FM CP |  | Activity has started | Y |
| JUICE-UVS 3298 |  | FM Instrument Harness Testing | 5d | 2018-06-25 A | 2018-06-29 A | JUICE-UVS 3296 | 100% |  |  |  | 05.02 | 05.02.04.01 | Harness FM | 648 | C/D | ELEC | Y |  | Phase C | % C | C | Kris | DSE | 0-100 | 19190.25.240 | PH CD | FM CP |  |  |  |
|  | 02 | **Backplane EM** |  | 2016-10-03 | 2016-10-27 |  |  |  |  |  |  |  |  |  |  |  |  |  |  |  |  |  |  |  |  |  |  |  |  |  |
|  | 01 | **EM 2 Backplane Fab** |  | 2016-10-03 | 2016-10-27 |  |  |  |  |  |  |  |  |  |  |  |  |  |  |  |  |  |  |  |  |  |  |  |  |  |
| JUICE-UVS 591918 |  | Backplane EM Parts Kitting | 3d | 2016-10-03 A | 2016-10-05 A | JUICE-UVS 0023 | 100% |  |  | Phase B | 05.02 | 05.02.04.02.01 | Backplane EM Fab | 535 | B | ELEC/C&DH | N |  | Phase C | % C | B | Kris | DSE | 0-100 | 19190.25.241 | PH CD |  |  |  |  |
| JUICE-UVS 3033a3 |  | Assembly Backplane EM PWA EM 2 | 16d | 2016-10-06 A | 2016-10-27 A | JUICE-UVS 591918 | 100% |  |  | Phase B | 05.02 | 05.02.04.02.01 | Backplane EM Fab | 535 | B | ELEC/C&DH | N |  | Phase C | % C | B | Kris | DSE | 50-50 | 19190.25.241 | PH CD |  |  |  |  |

Notes:
- JUICE-UVS 3264: Status Report: ?? Dur chg from 5 to 3. / (09/08/09)
- JUICE-UVS 3296: Estimation: ?? Changed dur from 25 to / 15.
- JUICE-UVS 3298: Estimation: ?? Changed dur from 15 to / 10.

| ID | WBS | Activity | Type | Duration | Start | Finish | Predecessors | Complete | Planned start | Planned finish | user_text6 | CA | WP/PP | Work Package Name | PHAS - Alice (Old) | BUDG - Budget Phase | SORT - Item Sort | PERT - Pert Select | JUICE UVS Phases | EVT | NASA Phase | JUICE-UVS CAMs | OBS | P6 EVT | JUICE-UVS Charge #s | JUICE-UVS Phase CD | Justify | user_text7 | user_text8 | JUICE-UVS Resources | user_text1 JUICE-UVS Risk ID | user_text2 | M/S | JUICE-UVS Procurements | JUICE-UVS SVT | SVT |
| --- | --- | --- | --- | --- | --- | --- | --- | --- | --- | --- | --- | --- | --- | --- | --- | --- | --- | --- | --- | --- | --- | --- | --- | --- | --- | --- | --- | --- | --- | --- | --- | --- | --- | --- | --- | --- |
|  | 02 | **EM 2 Backplane Test** |  |  | 2016-10-24 | 2016-10-27 |  |  |  |  |  |  |  |  |  |  |  |  |  |  |  |  |  |  |  |  |  |  |  |  |  |  |  |  |  |  |
| JUICE-UVS 591921 |  | Test EM 2 Backplane |  | 4d | 2016-10-24 A | 2016-10-27 A | JUICE-UVS 3033a3 | 100% |  |  | Phase B | 05.02 | 05.02.04.02.02 | Backplane EM Test | 545 | B | ELEC/C&DH | N | Phase C | % C | B | Kris | DSE | 0-100 | 19190.25.242 | PH CD |  |  |  |  |  |  |  |  |  |  |
|  | 03 | **Backplane FM** |  |  | 2017-06-26 | 2018-03-02 |  |  |  |  |  |  |  |  |  |  |  |  |  |  |  |  |  |  |  |  |  |  |  |  |  |  |  |  |  |  |
|  | 01 | **FM Backplane Design** |  |  | 2017-06-26 | 2017-08-04 |  |  |  |  |  |  |  |  |  |  |  |  |  |  |  |  |  |  |  |  |  |  |  |  |  |  |  |  |  |  |
| JUICE-UVS 3015 |  | Update Schematics of Backplane Elec-FM |  | 7d | 2017-06-26 A | 2017-07-05 A | JUICE-UVS 0023 | 100% |  |  | Phase B | 05.02 | 05.02.04.03.01 | Backplane FM Design | 415 | B+ | ELEC/C&DH | N | Phase C | % C | C | Kris | DSE | 0-100 | 19190.25.243 | PH CD |  |  |  |  |  |  |  |  |  |  |
| JUICE-UVS 3032 |  | Generate FM Backplane Parts List |  | 10d | 2017-07-06 A | 2017-07-19 A | JUICE-UVS 3015 | 100% |  |  | Phase B | 05.02 | 05.02.04.03.01 | Backplane FM Design | 415 | B+ | ELEC/C&DH | N | Phase C | % C | C | Kris | DSE | 0-100 | 19190.25.243 | PH CD |  |  |  |  |  |  |  |  |  |  |
| JUICE-UVS 3035 |  | Peer Review Backplane Design |  | 2d | 2017-07-20 A | 2017-07-21 A | JUICE-UVS 3032 | 100% |  |  | Phase B | 05.02 | 05.02.04.03.01 | Backplane FM Design | 415 | B+ | ELEC/C&DH | N | Phase C | % C | C | Kris | DSE | 0-100 | 19190.25.243 | PH CD |  |  |  |  |  |  |  |  |  |  |
| JUICE-UVS 3022 |  | Update Layout & Route Backplane PWB |  | 10d | 2017-07-24 A | 2017-08-04 A | JUICE-UVS 3035 | 100% |  |  | Phase B | 05.02 | 05.02.04.03.01 | Backplane FM Design | 415 | B+ | ELEC/C&DH | N | Phase C | % C | C | Kris | DSE | 0-100 | 19190.25.243 | PH CD |  |  |  |  |  |  |  |  |  |  |
| JUICE-UVS 3048 |  | Peer Review FM Backplane PWB Layout |  | 3d | 2017-08-02 A | 2017-08-04 A | JUICE-UVS 3022 FF | 100% |  |  | Phase B | 05.02 | 05.02.04.03.01 | Backplane FM Design | 415 | B+ | ELEC/C&DH | N | Phase C | % C | C | Kris | DSE | 0-100 | 19190.25.243 | PH CD |  |  |  |  |  |  |  |  |  |  |
|  | 02 | **FM Backplane Fab** |  |  | 2017-09-25 | 2018-02-19 |  |  |  |  |  |  |  |  |  |  |  |  |  |  |  |  |  |  |  |  |  |  |  |  |  |  |  |  |  |  |
| JUICE-UVS 3038 |  | Backplane FM Assembly Dwg |  | 80d | 2017-09-25 A | 2018-01-19 A | JUICE-UVS 3048 | 100% |  |  | Phase B | 05.02 | 05.02.04.03.02 | Backplane FM Fab | 415 | B | ELEC/C&DH | N | Phase C | % C | C | Kris | DSE | 0-100 | 19190.25.244 | PH CD | Mandated Start Date to wait for CDR |  |  |  |  |  |  |  |  |  |
| JUICE-UVS 3041 |  | Backplane FM MPS Development |  | 16d | 2017-12-28 A | 2018-01-19 A | JUICE-UVS 3038 | 100% |  |  | Phase B | 05.02 | 05.02.04.03.02 | Backplane FM Fab | 535 | B | ELEC/C&DH | N | Phase C | % C | C | Kris | DSE | 50-50 | 19190.25.244 | PH CD |  |  |  |  |  |  |  |  |  |  |
| JUICE-UVS 3037 |  | Backplane FM Parts Kitting |  | 2d | 2018-01-22 A | 2018-01-23 A | JUICE-UVS 593802, JUICE-UVS 593793, JUICE-UVS 593781, JUICE-UVS 593775 FF, JUICE-UVS 593775, JUICE-UVS 593769, JUICE-UVS 593757, JUICE-UVS 593745, JUICE-UVS 593733, JUICE-UVS 593721, JUICE-UVS 3078, JUICE-UVS 593391, JUICE-UVS 3041 | 100% |  |  | Phase B | 05.02 | 05.02.04.03.02 | Backplane FM Fab | 535 | B | ELEC/C&DH | N | Phase C | % C | C | Kris | DSE | 0-100 | 19190.25.244 | PH CD | Project level Mandatory Finish Date |  |  |  |  |  |  |  |  |  |
| JUICE-UVS 3051 |  | Assembly Backplane FM PWA |  | 12d | 2018-02-02 A | 2018-02-19 A | JUICE-UVS 3037 | 100% |  |  |  | 05.02 | 05.02.04.03.02 | Backplane FM Fab | 535 | B | ELEC/C&DH | N | Phase C | % C | C | Kris | DSE | 50-50 | 19190.25.244 | PH CD |  |  |  |  |  |  |  |  |  |  |
|  | 03 | **FM Backplane Test** |  |  | 2018-01-29 | 2018-03-02 |  |  |  |  |  |  |  |  |  |  |  |  |  |  |  |  |  |  |  |  |  |  |  |  |  |  |  |  |  |  |
| JUICE-UVS 3057 |  | Test FM Backplane |  | 10d | 2018-01-29 A | 2018-03-02 A | JUICE-UVS 3051 FF, JUICE-UVS 3037 | 100% | 2018-01-29 | 2018-02-09 |  | 05.02 | 05.02.04.03.03 | Backplane FM Test | 545 | B | ELEC/C&DH | N | Phase C | % C | C | Kris | DSE | 0-100 | 19190.25.245 | PH CD |  |  |  |  |  |  |  |  |  |  |
|  | 05 | **EGSE** |  |  | 2016-11-28 | 2016-12-29 |  |  |  |  |  |  |  |  |  |  |  |  |  |  |  |  |  |  |  |  |  |  |  |  |  |  |  |  |  |  |
| JUICE-UVS 11667 |  | HVPS GSE Phase C Procurement |  | 22d | 2016-11-28 A | 2016-12-29 A | JUICE-UVS 0023 | 100% |  |  |  | 05.02 | 05.02.05 | EGSE Procurement |  |  |  |  | Phase C | % C |  | Kris | DSE | 50-50 | 19190.25.930 | PH CD |  | Flight Cost Entered | SC | Mat |  |  |  |  |  |  |
| JUICE-UVS 592758 |  | LVPS GSE Phase C Procurement |  | 22d | 2016-11-28 A | 2016-12-29 A | JUICE-UVS 0023 | 100% |  |  |  | 05.02 | 05.02.05 | EGSE Procurement |  |  |  |  | Phase C | % C |  | Kris | DSE | 50-50 | 19190.25.930 | PH CD |  | Flight Cost Entered | SC | Mat |  |  |  |  |  |  |
|  | 06 | **Electrical Procurements** |  |  | 2016-10-03 | 2019-11-22 |  |  |  |  |  |  |  |  |  |  |  |  |  |  |  |  |  |  |  |  |  |  |  |  |  |  |  |  |  |  |
|  | 01 | **EE Parts Procurement (EM/FM)** |  |  | 2016-10-03 | 2017-08-14 |  |  |  |  |  |  |  |  |  |  |  |  |  |  |  |  |  |  |  |  |  |  |  |  |  |  |  |  |  |  |
| JUICE-UVS 593391 |  | FM EEE Parts Purchase Request | milestone | 0d | 2016-10-03 A | 2016-10-03 A | JUICE-UVS 0023 | 100% |  |  |  | 05.02 | 05.02.06.01 | EE Parts Procurement |  |  |  |  | Phase C | % C |  | Kris | DSE | 0-100 |  | PH CD |  | Flight Cost Entered |  | Mat | Risk ID 24 | CS2, DS3 | C | P |  |  |
| JUICE-UVS 593712 |  | SVT FM EEE Dec 16 Parts Lead Time |  | 44d | 2016-10-03 A | 2016-12-05 A | JUICE-UVS 593391 | 100% |  |  |  | 05.02 | 05.02.06.01 | EE Parts Procurement |  |  |  |  | Phase C | % C |  | Kris | DSE | % C |  | PH CD |  |  |  |  |  |  |  | P | SVT | SVT |
| JUICE-UVS 593718 |  | SVT FM EEE Jan 17 Parts Lead Time |  | 68d | 2016-10-03 A | 2017-01-11 A | JUICE-UVS 593391 | 100% |  |  |  | 05.02 | 05.02.06.01 | EE Parts Procurement |  |  |  |  | Phase C | % C |  | Kris | DSE | % C |  | PH CD |  |  |  |  |  |  |  | P | SVT | SVT |
| JUICE-UVS 593730 |  | SVT FM EEE Feb 17 Parts Lead Time |  | 106d | 2016-10-03 A | 2017-03-06 A | JUICE-UVS 593391 | 100% |  |  |  | 05.02 | 05.02.06.01 | EE Parts Procurement |  |  |  |  | Phase C | % C |  | Kris | DSE | % C |  | PH CD |  |  |  |  |  |  |  | P | SVT | SVT |
| JUICE-UVS 593742 |  | SVT FM EEE March 17 Parts Lead Time |  | 107d | 2016-10-03 A | 2017-03-07 A | JUICE-UVS 593391 | 100% |  |  |  | 05.02 | 05.02.06.01 | EE Parts Procurement |  |  |  |  | Phase C | % C |  | Kris | DSE | % C |  | PH CD |  |  |  |  |  |  |  | P | SVT | SVT |
| JUICE-UVS 593754 |  | SVT FM EEE April 17 Parts Lead Time |  | 92d | 2016-10-03 A | 2017-02-14 A | JUICE-UVS 593391 | 100% |  |  |  | 05.02 | 05.02.06.01 | EE Parts Procurement |  |  |  |  | Phase C | % C |  | Kris | DSE | % C |  | PH CD |  |  |  |  |  |  |  | P | SVT | SVT |
| JUICE-UVS 593766 |  | SVT FM EEE May 17 Parts Lead Time |  | 97d | 2016-10-03 A | 2017-02-21 A | JUICE-UVS 593391 | 100% |  |  |  | 05.02 | 05.02.06.01 | EE Parts Procurement |  |  |  |  | Phase C | % C |  | Kris | DSE | % C |  | PH CD |  |  |  |  |  |  |  | P | SVT | SVT |
| JUICE-UVS 593772 |  | SVT FM EEE June 17 Parts Lead Time |  | 121d | 2016-10-03 A | 2017-03-27 A | JUICE-UVS 593391 | 100% |  |  |  | 05.02 | 05.02.06.01 | EE Parts Procurement |  |  |  |  | Phase C | % C |  | Kris | DSE | % C |  | PH CD |  |  |  |  |  |  |  | P | SVT | SVT |
| JUICE-UVS 593778 |  | SVT FM EEE July 17 Parts Lead Time |  | 157d | 2016-10-03 A | 2017-05-16 A | JUICE-UVS 593391 | 100% |  |  |  | 05.02 | 05.02.06.01 | EE Parts Procurement |  |  |  |  | Phase C | % C |  | Kris | DSE | % C |  | PH CD |  |  |  |  |  |  |  | P | SVT | SVT |
| JUICE-UVS 593784 |  | SVT FM EEE Aug 17 Parts Lead Time |  | 176d | 2016-10-03 A | 2017-06-14 A | JUICE-UVS 593391 | 100% |  |  |  | 05.02 | 05.02.06.01 | EE Parts Procurement |  |  |  |  | Phase C | % C |  | Kris | DSE | % C |  | PH CD |  |  |  |  |  |  |  | P | SVT | SVT |
| JUICE-UVS 593796 |  | SVT FM EEE Sep 17 Parts Lead Time |  | 189d | 2016-10-31 A | 2017-08-01 A | JUICE-UVS 593391 | 100% |  |  |  | 05.02 | 05.02.06.01 | EE Parts Procurement |  |  |  |  | Phase C | % C |  | Kris | DSE | % C |  | PH CD |  |  |  |  |  |  |  | P | SVT | SVT |
| JUICE-UVS 593499 |  | FM EEE Dec 16 Delivery |  | 1d | 2016-12-06 A | 2016-12-06 A | JUICE-UVS 593712 | 100% |  |  |  | 05.02 | 05.02.06.01 | EE Parts Procurement |  |  |  |  | Phase C | % C |  | Kris | DSE | 0-100 | 19190.25.940 | PH CD |  |  |  |  |  |  |  | P |  |  |
| JUICE-UVS 593715 |  | FM EEE Dec 16 Material Task Receipt | milestone | 0d | 2016-12-06 A | 2016-12-06 A | JUICE-UVS 593499 | 100% |  |  |  | 05.02 | 05.02.06.01 | EE Parts Procurement |  |  |  |  | Phase C | % C |  | Kris | DSE | 0-100 |  | PH CD | FM EE Parts estimated delivery date |  |  |  |  |  | R | P |  |  |
| JUICE-UVS 593511 |  | FM EEE Jan 17 Delivery |  | 1d | 2017-01-12 A | 2017-01-12 A | JUICE-UVS 593718 | 100% |  |  |  | 05.02 | 05.02.06.01 | EE Parts Procurement |  |  |  |  | Phase C | % C |  | Kris | DSE | 0-100 | 19190.25.940 | PH CD |  |  |  |  |  |  |  | P |  |  |
| JUICE-UVS 593721 |  | FM EEE Jan 17 Material Task Receipt | milestone | 0d | 2017-01-12 A | 2017-01-12 A | JUICE-UVS 593511 | 100% |  |  |  | 05.02 | 05.02.06.01 | EE Parts Procurement |  |  |  |  | Phase C | % C |  | Kris | DSE | 0-100 |  | PH CD | FM EE Parts estimated delivery date |  |  |  |  |  | R | P |  |  |
| JUICE-UVS 593595 |  | FM EEE March 17 Delivery |  | 1d | 2017-02-08 A | 2017-02-08 A | JUICE-UVS 593742 | 100% |  |  |  | 05.02 | 05.02.06.01 | EE Parts Procurement |  |  |  |  | Phase C | % C |  | Kris | DSE | 0-100 | 19190.25.940 | PH CD |  |  |  |  |  |  |  | P |  |  |
| JUICE-UVS 593529 |  | FM EEE April 17 Delivery |  | 1d | 2017-02-15 A | 2017-02-15 A | JUICE-UVS 593754 | 100% |  |  |  | 05.02 | 05.02.06.01 | EE Parts Procurement |  |  |  |  | Phase C | % C |  | Kris | DSE | 0-100 | 19190.25.940 | PH CD |  |  |  |  |  |  |  | P |  |  |
| JUICE-UVS 593697 |  | FM EEE May 17 Delivery |  | 1d | 2017-02-22 A | 2017-02-22 A | JUICE-UVS 593766 | 100% |  |  |  | 05.02 | 05.02.06.01 | EE Parts Procurement |  |  |  |  | Phase C | % C |  | Kris | DSE | 0-100 | 19190.25.940 | PH CD |  |  |  |  |  |  |  | P |  |  |
| JUICE-UVS 593517 |  | FM EEE Feb 17 Delivery |  | 1d | 2017-03-07 A | 2017-03-07 A | JUICE-UVS 0023, JUICE-UVS 593730 | 100% |  |  |  | 05.02 | 05.02.06.01 | EE Parts Procurement |  |  |  |  | Phase C | % C |  | Kris | DSE | 0-100 | 19190.25.940 | PH CD |  |  |  |  |  |  |  | P |  |  |
| JUICE-UVS 593733 |  | FM EEE Feb 17 Material Task Receipt | milestone | 0d | 2017-03-07 A | 2017-03-07 A | JUICE-UVS 593517 | 100% |  |  |  | 05.02 | 05.02.06.01 | EE Parts Procurement |  |  |  |  | Phase C | % C |  | Kris | DSE | 0-100 |  | PH CD | FM EE Parts estimated delivery date |  |  |  |  |  | R | P |  |  |
| JUICE-UVS 593745 |  | FM EEE March 17 Material Receipt | milestone | 0d | 2017-03-09 A | 2017-03-09 A | JUICE-UVS 593595 | 100% |  |  |  | 05.02 | 05.02.06.01 | EE Parts Procurement |  |  |  |  | Phase C | % C |  | Kris | DSE | 0-100 |  | PH CD | FM EE Parts estimated delivery date |  |  |  |  |  | R | P |  |  |
| JUICE-UVS 593700 |  | FM EEE June 17 Delivery |  | 1d | 2017-03-28 A | 2017-03-28 A | JUICE-UVS 593772 | 100% |  |  |  | 05.02 | 05.02.06.01 | EE Parts Procurement |  |  |  |  | Phase C | % C |  | Kris | DSE | 0-100 | 19190.25.940 | PH CD |  |  |  |  |  |  |  | P |  |  |
| JUICE-UVS 593775 |  | FM EEE June 17 Material Task Receipt |  | 1d | 2017-03-29 A | 2017-03-29 A | JUICE-UVS 593700 | 100% |  |  |  | 05.02 | 05.02.06.01 | EE Parts Procurement |  |  |  |  | Phase C | % C |  | Kris | DSE | 0-100 |  | PH CD |  |  |  |  |  |  | R | P |  |  |
| JUICE-UVS 593757 |  | FM EEE April 17 Material Task Receipt | milestone | 0d | 2017-04-12 A | 2017-04-12 A | JUICE-UVS 593529 | 100% |  |  |  | 05.02 | 05.02.06.01 | EE Parts Procurement |  |  |  |  | Phase C | % C |  | Kris | DSE | 0-100 |  | PH CD | FM EE Parts estimated delivery date |  |  |  |  |  | R | P |  |  |
| JUICE-UVS 593769 |  | FM EEE May 17 Material Task Receipt | milestone | 0d | 2017-05-16 A | 2017-05-16 A | JUICE-UVS 593697 | 100% |  |  |  | 05.02 | 05.02.06.01 | EE Parts Procurement |  |  |  |  | Phase C | % C |  | Kris | DSE | 0-100 |  | PH CD | FM EE Parts estimated delivery date |  |  |  |  |  | R | P |  |  |
| JUICE-UVS 593703 |  | FM EEE July 17 Delivery |  | 1d | 2017-05-17 A | 2017-05-17 A | JUICE-UVS 593778 | 100% |  |  |  | 05.02 | 05.02.06.01 | EE Parts Procurement |  |  |  |  | Phase C | % C |  | Kris | DSE | 0-100 | 19190.25.940 | PH CD |  |  |  |  |  |  |  | P |  |  |
| JUICE-UVS 593781 |  | FM EEE July 17 Material Task Receipt | milestone | 0d | 2017-05-17 A | 2017-05-17 A | JUICE-UVS 593703 | 100% |  |  |  | 05.02 | 05.02.06.01 | EE Parts Procurement |  |  |  |  | Phase C | % C |  | Kris | DSE | 0-100 |  | PH CD | FM EE Parts estimated delivery date |  |  |  |  |  | R | P |  |  |
| JUICE-UVS 593790 |  | FM EEE Aug 17 Delivery |  | 1d | 2017-06-15 A | 2017-06-15 A | JUICE-UVS 593784 | 100% |  |  |  | 05.02 | 05.02.06.01 | EE Parts Procurement |  |  |  |  | Phase C | % C |  | Kris | DSE | 0-100 | 19190.25.940 | PH CD |  |  |  |  |  |  |  | P |  |  |
| JUICE-UVS 593793 |  | FM EEE Aug 17 Material Task Receipt | milestone | 0d | 2017-06-15 A | 2017-06-15 A | JUICE-UVS 593790 | 100% |  |  |  | 05.02 | 05.02.06.01 | EE Parts Procurement |  |  |  |  | Phase C | % C |  | Kris | DSE | 0-100 |  | PH CD | FM EE Parts estimated delivery date |  |  |  |  |  | R | P |  |  |
| JUICE-UVS 3220 |  | FM LVPS/HVPS Magnetics Fab |  | 35d | 2017-06-26 A | 2017-08-14 A | JUICE-UVS 3214, JUICE-UVS 5076 | 100% |  |  | Phase B | 05.02 | 05.02.06.01 | EE Parts Procurement | 634 | B | ELEC/HVPS |  | Phase C | % C | C | Kris | DSE | 50-50 | 19190.25.940 | PH CD |  | Flight Quote | KP | Mat |  |  |  | P |  |  |
| JUICE-UVS 593799 |  | FM EEE Sep 17 Delivery |  | 1d | 2017-08-02 A | 2017-08-02 A | JUICE-UVS 593796 | 100% |  |  |  | 05.02 | 05.02.06.01 | EE Parts Procurement |  |  |  |  | Phase C | % C |  | Kris | DSE | 0-100 | 19190.25.940 | PH CD | FM EE Parts estimated delivery date |  |  |  |  |  |  | P |  |  |
| JUICE-UVS 593802 |  | FM EEE Sep 17 Material Task Receipt | milestone | 0d | 2017-08-02 A | 2017-08-02 A | JUICE-UVS 593799 | 100% | 2017-09-29 | 2017-09-29 |  | 05.02 | 05.02.06.01 | EE Parts Procurement |  |  |  |  | Phase C | % C |  | Kris | DSE | 0-100 |  | PH CD | FM EE Parts estimated delivery date |  |  |  |  |  | R | P |  |  |

Notes:
- JUICE-UVS 11667: Explanation: ? / Matrerial costs / for this activity was not included in the Phase C/D proposal. / MTL $ 10,000 / MHB $402
- JUICE-UVS 592758: Explanation: ? / Matrerial costs / for this activity was not included in the Phase C/D proposal. / MTL $17,500 / MHB $703.50

| ID | WBS | Activity | Type | Duration | Start | Finish | Predecessors | Complete | Remaining | Planned start | Planned finish | Total float | Free float | Constraint | Expected finish | user_text6 | user_text7 | user_text8 | CA | WP/PP | Work Package Name | PHAS - Alice (Old) | BUDG - Budget Phase | SORT - Item Sort | PERT - Pert Select | JUICE UVS Phases | EVT | JUICE-UVS Resources | NASA Phase | JUICE-UVS CAMs | OBS | P6 EVT | JUICE-UVS SVT | SVT | JUICE-UVS Procurements | JUICE-UVS Phase CD | Justify | M/S | JUICE-UVS Charge #s | Forecast Chg |
| --- | --- | --- | --- | --- | --- | --- | --- | --- | --- | --- | --- | --- | --- | --- | --- | --- | --- | --- | --- | --- | --- | --- | --- | --- | --- | --- | --- | --- | --- | --- | --- | --- | --- | --- | --- | --- | --- | --- | --- | --- |
|  | 02 | **C&DH Procurements** |  |  | 2017-08-14 | 2017-09-28 |  |  |  |  |  |  |  |  |  |  |  |  |  |  |  |  |  |  |  |  |  |  |  |  |  |  |  |  |  |  |  |  |  |  |
| JUICE-UVS 591264 |  | SVT FM C&DH PWB Lead Time |  | 10d | 2017-08-14 A | 2017-08-25 A | JUICE-UVS593964 | 100% |  |  |  |  |  |  |  | Phase B | Flight Cost Entered | KP | 05.02 | 05.02.06.02 | C&DH Procurements | 694 | B | ELEC/C&DH | Y | Phase C | % C | Mat | C | Kris | DSE | 50-50 | SVT | SVT | P | PH CD |  |  |  |  |
| JUICE-UVS593964 |  | Procure FM C&DH PWB | milestone | 0d | 2017-08-14 A | 2017-08-14 A | JUICE-UVS 592740 | 100% |  |  |  |  |  |  |  |  |  |  | 05.02 | 05.02.06.02 | C&DH Procurements |  |  |  |  | Phase C | % C |  |  | Kris | DSE | 0-100 |  |  | P | PH CD | Bd Level procurement delayed by layout and peer review | C |  |  |
| JUICE-UVS 591276 |  | FM C&DH PWB Delivery, Inspection, & Coupon Test |  | 10d | 2017-08-28 A | 2017-09-28 A | JUICE-UVS 591264 | 100% |  | 2017-08-28 | 2017-09-12 |  |  |  |  | Phase B | Flight Cost Entered | KP | 05.02 | 05.02.06.02 | C&DH Procurements | 694 | C/D | ELEC/C&DH | Y | Phase C | % C | Mat | C | Kris | DSE | 50-50 |  |  | P | PH CD |  |  | 19190.25.941 |  |
| JUICE-UVS 591288 |  | FM C&DH PWB Material Task Receipt | milestone | 0d | 2017-09-28 A | 2017-09-28 A | JUICE-UVS 591276 | 100% |  | 2017-09-29 | 2017-09-29 |  |  |  |  |  |  |  | 05.02 | 05.02.06.02 | C&DH Procurements |  |  |  |  | Phase C | % C |  |  | Kris | DSE | 0-100 |  |  | P | PH CD |  | R |  |  |
|  | 03 | **LVPS Procurements** |  |  | 2017-08-07 | 2017-10-12 |  |  |  |  |  |  |  |  |  |  |  |  |  |  |  |  |  |  |  |  |  |  |  |  |  |  |  |  |  |  |  |  |  |  |
| JUICE-UVS 591273 |  | SVT Procure FM LVPS PWB Lead Time |  | 18d | 2017-08-07 A | 2017-08-30 A | JUICE-UVS 591294 | 100% |  |  |  |  |  |  |  | Phase B | Flight Cost Entered | KP | 05.02 | 05.02.06.03 | LVPS Procurements | 694 | B | ELEC/LVPS | Y | Phase C | % C | Mat | C | Kris | DSE | 50-50 | SVT | SVT | P | PH CD |  |  |  |  |
| JUICE-UVS 591294 |  | Procure FM LVPS PWB | milestone | 0d | 2017-08-07 A | 2017-08-07 A | JUICE-UVS 3277 | 100% |  |  |  |  |  |  |  |  |  |  | 05.02 | 05.02.06.03 | LVPS Procurements |  |  |  |  | Phase C | % C |  |  | Kris | DSE | 0-100 |  |  | P | PH CD | Bd Level procurement delayed by layout and peer review | C |  |  |
| JUICE-UVS 591279 |  | FM LVPS PWB Delivery, Inspection, & Coupon Test |  | 29d | 2017-08-31 A | 2017-10-12 A | JUICE-UVS 591273 | 100% |  |  |  |  |  |  |  | Phase B | Flight Cost Entered | KP | 05.02 | 05.02.06.03 | LVPS Procurements | 694 | C/D | ELEC/LVPS | Y | Phase C | % C | Mat | C | Kris | DSE | 50-50 |  |  | P | PH CD | Awaiting Coupon Test Results |  | 19190.25.942 |  |
| JUICE-UVS 591300 |  | FM LVPS PWB Material Task Receipt | milestone | 0d | 2017-10-12 A | 2017-10-12 A | JUICE-UVS 591279 | 100% |  |  |  |  |  |  |  |  |  |  | 05.02 | 05.02.06.03 | LVPS Procurements |  |  |  |  | Phase C | % C |  |  | Kris | DSE | 0-100 |  |  | P | PH CD |  | R |  |  |
|  | 04 | **HVPS Procurement** |  |  | 2017-07-17 | 2017-10-12 |  |  |  |  |  |  |  |  |  |  |  |  |  |  |  |  |  |  |  |  |  |  |  |  |  |  |  |  |  |  |  |  |  |  |
| JUICE-UVS 591270 |  | SVT Procure FM HVPS PWBs |  | 10d | 2017-07-17 A | 2017-07-28 A | JUICE-UVS 591306 | 100% |  |  |  |  |  |  |  | Phase B | Flight Cost Entered | KP | 05.02 | 05.02.06.04 | HVPS Procurements | 694 | B | ELEC/HVPS | Y | Phase C | % C | Mat | C | Kris | DSE | 50-50 | SVT | SVT | P | PH CD |  |  |  |  |
| JUICE-UVS 591306 |  | Procure FM HVPS PWBs | milestone | 0d | 2017-07-17 A | 2017-07-17 A | JUICE-UVS 3217 | 100% |  |  |  |  |  |  |  |  |  |  | 05.02 | 05.02.06.04 | HVPS Procurements |  |  |  |  | Phase C | % C |  |  | Kris | DSE | 0-100 |  |  | P | PH CD |  | C |  |  |
| JUICE-UVS 591267 |  | FM HVPS PWB Delivery, Inspection, & Coupon Test |  | 73d | 2017-07-31 A | 2017-10-12 A | JUICE-UVS 591270 | 100% |  | 2017-07-31 | 2017-11-10 |  |  |  |  | Phase B | Flight Cost Entered | KP | 05.02 | 05.02.06.04 | HVPS Procurements | 694 | B | ELEC/HVPS |  | Phase C | % C | Mat | C | Kris | DSE | 50-50 |  |  | P | PH CD |  |  | 19190.25.943 |  |
| JUICE-UVS 591309 |  | FM HVPS PWB Material Task Receipt | milestone | 0d | 2017-10-12 A | 2017-10-12 A | JUICE-UVS 591267 | 100% |  | 2017-11-10 | 2017-11-10 |  |  |  |  |  |  |  | 05.02 | 05.02.06.04 | HVPS Procurements |  |  |  |  | Phase C | % C |  |  | Kris | DSE | 0-100 |  |  | P | PH CD |  | R |  |  |
|  | 05 | **Harness Procurement** |  |  | 2016-10-03 | 2019-11-22 |  |  |  |  |  |  |  |  |  |  |  |  |  |  |  |  |  |  |  |  |  |  |  |  |  |  |  |  |  |  |  |  |  |  |
| JUICE-UVS593835 |  | Harness Procurement | milestone | 0d | 2016-10-03 A | 2016-10-03 A | JUICE-UVS 0023 | 100% |  |  |  |  |  |  |  |  |  |  | 05.02 | 05.02.06.05 | Harness Procurements |  |  |  |  | Phase C | % C |  |  | Kris | DSE | 0-100 |  |  | P | PH CD |  | C |  |  |
| JUICE-UVS593841 |  | SVT Procure Misc EEE and Harness Parts June 17 Lead Time |  | 92d | 2016-10-03 A | 2017-02-14 A | JUICE-UVS593835 | 100% |  |  |  |  |  |  |  |  |  |  | 05.02 | 05.02.06.05 | Harness Procurements |  |  |  |  | Phase C | % C |  |  | Kris | DSE | % C | SVT | SVT | P | PH CD |  |  |  |  |
| JUICE-UVS593844 |  | SVT Procure Misc EEE and Harness Parts July 17 Lead Time |  | 157d | 2016-10-03 A | 2017-05-16 A | JUICE-UVS593835 | 100% |  |  |  |  |  |  |  |  |  |  | 05.02 | 05.02.06.05 | Harness Procurements |  |  |  |  | Phase C | % C |  |  | Kris | DSE | % C | SVT | SVT | P | PH CD |  |  |  |  |
| JUICE-UVS593847 |  | SVT Procure Misc EEE and Harness Parts Aug 17 Lead Time |  | 212d | 2016-10-03 A | 2017-08-04 A | JUICE-UVS593835 | 100% |  |  |  |  |  |  |  |  |  |  | 05.02 | 05.02.06.05 | Harness Procurements |  |  |  |  | Phase C | % C |  |  | Kris | DSE | % C | SVT | SVT | P | PH CD |  |  |  |  |
| JUICE-UVS593850 |  | SVT Procure Long Lead FM Harness Parts Sep 17 Lead Time |  | 249d | 2016-10-03 A | 2017-09-28 A | JUICE-UVS593835 | 100% |  |  |  |  |  |  |  |  |  |  | 05.02 | 05.02.06.05 | Harness Procurements |  |  |  |  | Phase C | % C |  |  | Kris | DSE | % C | SVT | SVT | P | PH CD |  |  |  |  |
| JUICE-UVS593853 |  | SVT Procure Long Lead FM Harness Parts Oct 17 Lead Time |  | 289d | 2016-10-03 A | 2017-10-30 A | JUICE-UVS593835 | 100% |  | 2016-10-03 | 2017-11-27 |  |  |  |  |  |  |  | 05.02 | 05.02.06.05 | Harness Procurements |  |  |  |  | Phase C | % C |  |  | Kris | DSE | % C | SVT | SVT | P | PH CD |  |  |  |  |
| JUICE-UVS593856 |  | SVT Procure Long Lead FM Harness Parts Nov 17 Lead Time |  | 539d | 2016-10-03 A | 2019-11-22 | JUICE-UVS593835, JUICE-UVS 3559 | 100% | 0d | 2016-10-03 | 2018-11-26 | 14d | 0d |  | 2018-02-05 |  |  |  | 05.02 | 05.02.06.05 | Harness Procurements |  |  |  |  | Phase C | % C |  |  | Kris | DSE | % C | SVT | SVT | P | PH CD |  |  |  |  |
| JUICE-UVS593859 |  | SVT Procure Long Lead FM Harness Parts Dec 17 Lead Time |  | 243d | 2016-10-03 A | 2017-09-20 A | JUICE-UVS593835 | 100% |  |  |  |  |  |  |  |  |  |  | 05.02 | 05.02.06.05 | Harness Procurements |  |  |  |  | Phase C | % C |  |  | Kris | DSE | % C | SVT | SVT | P | PH CD |  |  |  |  |
| JUICE-UVS593862 |  | Misc EEE and Harness Parts June 17 Delivery |  | 1d | 2017-02-15 A | 2017-02-15 A | JUICE-UVS593841 | 100% |  |  |  |  |  |  |  |  |  |  | 05.02 | 05.02.06.05 | Harness Procurements |  |  |  |  | Phase C | % C |  |  | Kris | DSE | 0-100 |  |  | P | PH CD |  |  | 19190.25.944 |  |
| JUICE-UVS 593246 |  | Misc EEE and Harness Parts June 17 Material Task Receipt | milestone | 0d | 2017-02-15 A | 2017-02-15 A | JUICE-UVS593862 | 100% |  |  |  |  |  |  |  |  |  |  | 05.02 | 05.02.06.05 | Harness Procurements |  |  |  |  | Phase C | % C |  |  | Kris | DSE | 0-100 |  |  | P | PH CD |  | R |  |  |
| JUICE-UVS593865 |  | Misc EEE and Harness Parts July 17 Delivery |  | 1d | 2017-05-17 A | 2017-05-17 A | JUICE-UVS593844 | 100% |  |  |  |  |  |  |  |  |  |  | 05.02 | 05.02.06.05 | Harness Procurements |  |  |  |  | Phase C | % C |  |  | Kris | DSE | 0-100 |  |  | P | PH CD |  |  | 19190.25.944 |  |
| JUICE-UVS 593249 |  | Misc EEE and Harness Parts July 17 Material Task Receipt | milestone | 0d | 2017-05-17 A | 2017-05-17 A | JUICE-UVS593865 | 100% |  |  |  |  |  |  |  |  |  |  | 05.02 | 05.02.06.05 | Harness Procurements |  |  |  |  | Phase C | % C |  |  | Kris | DSE | 0-100 |  |  | P | PH CD |  | R |  |  |
| JUICE-UVS 591261 |  | Misc EEE and Harness Parts Aug 17 Delivery |  | 1d | 2017-08-07 A | 2017-08-07 A | JUICE-UVS593847 | 100% |  |  |  |  |  |  |  |  | Flight Cost Entered | KP | 05.02 | 05.02.06.05 | Harness Procurements |  |  |  |  | Phase C | % C | Mat | C | Kris | DSE | 0-100 |  |  | P | PH CD |  |  | 19190.25.944 |  |
| JUICE-UVS 593252 |  | Misc EEE and Harness Parts Aug 17 Material Task Receipt | milestone | 0d | 2017-08-07 A | 2017-08-07 A | JUICE-UVS 591261 | 100% |  |  |  |  |  |  |  |  |  |  | 05.02 | 05.02.06.05 | Harness Procurements |  |  |  |  | Phase C | % C |  |  | Kris | DSE | 0-100 |  |  | P | PH CD |  | R |  |  |
| JUICE-UVS 593243 |  | Long Lead FM Harness Parts Dec 17 Delivery |  | 1d | 2017-09-21 A | 2017-09-21 A | JUICE-UVS593859 | 100% |  |  |  |  |  |  |  |  | Flight Cost Entered | KP | 05.02 | 05.02.06.05 | Harness Procurements |  |  |  |  | Phase C | % C | Mat |  | Kris | DSE | 0-100 |  |  | P | PH CD |  |  | 19190.25.944 |  |
| JUICE-UVS 593264 |  | Long Lead FM Harness Parts Dec 17 Material Task Receipt | milestone | 0d | 2017-09-21 A | 2017-09-21 A | JUICE-UVS 593243 | 100% |  |  |  |  |  |  |  |  |  |  | 05.02 | 05.02.06.05 | Harness Procurements |  |  |  |  | Phase C | % C |  |  | Kris | DSE | 0-100 |  |  | P | PH CD |  | R |  |  |
| JUICE-UVS 593298 |  | Long Lead FM Harness Parts Sep 17 Delivery |  | 1d | 2017-09-29 A | 2017-09-29 A | JUICE-UVS593850 | 100% |  |  |  |  |  |  |  |  |  |  | 05.02 | 05.02.06.05 | Harness Procurements |  |  |  |  | Phase C | % C |  |  | Kris | DSE | 0-100 |  |  | P | PH CD |  |  | 19190.25.944 |  |
| JUICE-UVS 593255 |  | Long Lead FM Harness Parts Sep 17 Material Task Receipt | milestone | 0d | 2017-09-29 A | 2017-09-29 A | JUICE-UVS 593298 | 100% |  |  |  |  |  |  |  |  |  |  | 05.02 | 05.02.06.05 | Harness Procurements |  |  |  |  | Phase C | % C |  |  | Kris | DSE | 0-100 |  |  | P | PH CD |  | R |  |  |
| JUICE-UVS 593331 |  | Long Lead FM Harness Parts Oct 17 Delivery |  | 1d | 2017-11-22 A | 2017-11-22 A | JUICE-UVS593853 | 100% |  | 2017-11-27 | 2017-11-27 |  |  |  |  |  |  |  | 05.02 | 05.02.06.05 | Harness Procurements |  |  |  |  | Phase C | % C |  |  | Kris | DSE | 0-100 |  |  | P | PH CD |  |  | 19190.25.944 |  |
| JUICE-UVS 593258 |  | Long Lead FM Harness Parts Oct 17 Material Task Receipt | milestone | 0d | 2017-11-22 A | 2017-11-22 A | JUICE-UVS 593331 | 100% |  | 2017-11-27 | 2017-11-27 |  |  |  |  |  |  |  | 05.02 | 05.02.06.05 | Harness Procurements |  |  |  |  | Phase C | % C |  |  | Kris | DSE | 0-100 |  |  | P | PH CD |  | R |  |  |
| JUICE-UVS 593340 |  | Long Lead FM Harness Parts Nov 17 Delivery |  | 1d | 2019-11-22 | 2019-11-22 | JUICE-UVS593856 |  |  |  |  | 36d | 0d | start on or after 2019-05-08 |  |  |  |  | 05.02 | 05.02.06.05 | Harness Procurements |  |  |  |  | Phase C | % C |  |  | Kris | DSE | 0-100 |  |  | P | PH CD | Part delivery date changed |  | 19190.25.944 | Y |
| JUICE-UVS 593261 |  | Long Lead FM Harness Parts Nov 17 Material Task Receipt | milestone | 0d | 2019-11-22 | 2019-11-22 | JUICE-UVS 593340 |  |  |  |  | 36d | 28d |  |  |  |  |  | 05.02 | 05.02.06.05 | Harness Procurements |  |  |  |  | Phase C | % C |  |  | Kris | DSE | 0-100 |  |  | P | PH CD |  | R |  |  |

Notes:
- JUICE-UVS 593261: (New Notebook Topic): ? / Contains Remaining EEE Cost Data

| ID | WBS | Activity | Type | Duration | Start | Finish | Predecessors | Complete | Planned start | Planned finish | user_text6 | user_text7 | user_text8 | CA | WP/PP | Work Package Name | PHAS - Alice (Old) | BUDG - Budget Phase | SORT - Item Sort | PERT - Pert Select | JUICE UVS Phases | EVT | JUICE-UVS Resources | NASA Phase | JUICE-UVS CAMs | OBS | P6 EVT | JUICE-UVS Charge #s | JUICE-UVS SVT | SVT | JUICE-UVS Procurements | JUICE-UVS Phase CD | M/S | BCR # | JUICE Mission Phases | JUICE-UVS Phase AB Charge #s | user_text2 |
| --- | --- | --- | --- | --- | --- | --- | --- | --- | --- | --- | --- | --- | --- | --- | --- | --- | --- | --- | --- | --- | --- | --- | --- | --- | --- | --- | --- | --- | --- | --- | --- | --- | --- | --- | --- | --- | --- |
|  | 06 | **Backplane Procurements** |  |  | 2017-06-26 | 2017-09-06 |  |  |  |  |  |  |  |  |  |  |  |  |  |  |  |  |  |  |  |  |  |  |  |  |  |  |  |  |  |  |  |
| JUICE-UVS 3069 |  | SVT Procure FM Backplane PWB Lead Time |  | 1d | 2017-06-26 A | 2017-07-24 A | JUICE-UVS 3075 | 100% | 2017-06-26 | 2017-06-26 | Phase B | Flight Cost Entered | KP | 05.02 | 05.02.06.06 | Backplane Procurements | 594 | B | I&T | N | Phase C | % C | Mat | C | Kris | DSE | 50-50 | 19190.25.945 | SVT | SVT | P | PH CD |  |  |  |  |  |
| JUICE-UVS 3075 |  | Procure FM Backplane | milestone | 0d | 2017-06-26 A | 2017-06-26 A | JUICE-UVS 3048 | 100% |  |  |  |  |  | 05.02 | 05.02.06.06 | Backplane Procurements |  |  |  |  | Phase C | % C |  |  | Kris | DSE | 0-100 |  |  |  | P | PH CD | C |  |  |  |  |
| JUICE-UVS 3070 |  | FM Backplane PWB Delivery, Inspection, & Coupon Test |  | 30d | 2017-07-25 A | 2017-09-06 A | JUICE-UVS 3069 | 100% |  |  | Phase B | Flight Cost Entered | KP | 05.02 | 05.02.06.06 | Backplane Procurements | 694 | B+ |  |  | Phase C | % C | Mat | C | Kris | DSE | 50-50 | 19190.25.945 |  |  | P | PH CD |  |  |  |  |  |
| JUICE-UVS 3078 |  | FM Backplane Material Receipt Task | milestone | 0d | 2017-09-06 A | 2017-09-06 A | JUICE-UVS 3070 | 100% |  |  |  |  |  | 05.02 | 05.02.06.06 | Backplane Procurements |  |  |  |  | Phase C | % C |  |  | Kris | DSE | 0-100 |  |  |  | P | PH CD | R |  |  |  |  |
|  | 07 | **FM EE High Value Parts Procurement** |  |  | 2017-11-27 | 2018-11-21 |  |  |  |  |  |  |  |  |  |  |  |  |  |  |  |  |  |  |  |  |  |  |  |  |  |  |  |  |  |  |  |
| JUICE-UVS 594180 |  | High Value EE High Voltage Resistor Purchase Request # 17901433, PO # K21045KM |  | 1d | 2017-11-27 A | 2017-11-27 A | JUICE-UVS 3217 | 100% |  |  |  |  |  | 05.02 | 05.02.06.07 | High Value Parts Procurement |  |  | ELEC/HVPS |  | Phase C | % C |  | C | Kris | DSE | % C |  |  |  | P |  | C |  |  |  |  |
| JUICE-UVS 594192 |  | High Value EE Choke Inductor Purchase Request # 17901666, PO # K18410SRM |  | 1d | 2017-11-27 A | 2017-11-27 A | JUICE-UVS 3217 | 100% |  |  |  |  |  | 05.02 | 05.02.06.07 | High Value Parts Procurement |  |  | ELEC/HVPS |  | Phase C | % C |  | C | Kris | DSE | % C |  |  |  | P |  | C |  |  |  |  |
| JUICE-UVS 594183 |  | SVT High Value EE High Voltage Resistor Parts Procurement Lead Time |  | 21d | 2017-11-28 A | 2017-12-22 A | JUICE-UVS 594180 | 100% | 2017-11-28 | 2017-12-28 |  |  |  | 05.02 | 05.02.06.07 | High Value Parts Procurement |  |  | ELEC/HVPS |  | Phase C | % C |  | C | Kris | DSE | % C |  | SVT | SVT | P |  |  |  |  |  |  |
| JUICE-UVS 594195 |  | SVT High Value EE Choke Inductor Parts Procurement Dec 2017 Lead Time |  | 193d | 2017-11-28 A | 2018-11-19 A | JUICE-UVS 594192 | 100% | 2017-11-28 | 2018-09-04 |  |  |  | 05.02 | 05.02.06.07 | High Value Parts Procurement |  |  | ELEC/HVPS |  | Phase C | % C |  | C | Kris | DSE | % C |  | SVT | SVT | P |  |  |  |  |  |  |
| JUICE-UVS 594198 |  | SVT High Value EE Choke Inductor Feb 2018 Parts Procurement Lead Time |  | 193d | 2017-11-28 A | 2018-11-19 A | JUICE-UVS 594192, JUICE-UVS593856 | 100% | 2017-11-28 | 2018-09-04 |  |  |  | 05.02 | 05.02.06.07 | High Value Parts Procurement |  |  | ELEC/HVPS |  | Phase C | % C |  | C | Kris | DSE | % C |  | SVT | SVT | P |  |  |  |  |  |  |
| JUICE-UVS 594186 |  | High Value EE High Voltage Resistor Dec 2017 Delivery & Inspection |  | 1d | 2018-01-11 A | 2018-01-11 A | JUICE-UVS 594183 | 100% |  |  |  |  |  | 05.02 | 05.02.06.07 | High Value Parts Procurement |  |  | ELEC/HVPS |  | Phase C | % C |  | C | Kris | DSE | 0-100 | 19190.25.946 |  |  | P |  |  |  |  |  |  |
| JUICE-UVS 594189 |  | High Value EE High Voltage Resistor Dec 2017 Material Receipt Task |  | 0d | 2018-01-12 A | 2018-01-12 A | JUICE-UVS 594186 | 100% |  |  |  |  |  | 05.02 | 05.02.06.07 | High Value Parts Procurement |  |  | ELEC/HVPS |  | Phase C | % C |  | C | Kris | DSE | % C |  |  |  | P |  | R |  |  |  |  |
| JUICE-UVS 594201 |  | High Value EE Choke Inductor Dec 2017 Delivery & Inspection |  | 1d | 2018-11-20 A | 2018-11-20 A | JUICE-UVS 594195 | 100% | 2018-11-26 | 2018-11-26 |  |  |  | 05.02 | 05.02.06.07 | High Value Parts Procurement |  |  | ELEC/HVPS |  | Phase C | % C |  | C | Kris | DSE | 0-100 | 19190.25.946 |  |  | P |  |  |  |  |  |  |
| JUICE-UVS 594204 |  | High Value EE Choke Inductor Feb 2018 Delivery & Inspection |  | 1d | 2018-11-20 A | 2018-11-20 A | JUICE-UVS 594198 | 100% | 2018-11-26 | 2018-11-26 |  |  |  | 05.02 | 05.02.06.07 | High Value Parts Procurement |  |  | ELEC/HVPS |  | Phase C | % C |  | C | Kris | DSE | 0-100 | 19190.25.946 |  |  | P |  |  |  |  |  |  |
| JUICE-UVS 594207 |  | High Value EE Choke Inductor Dec 2017 Material Receipt Task |  | 0d | 2018-11-20 A | 2018-11-20 A | JUICE-UVS 594201 | 100% | 2018-11-26 | 2018-11-26 |  |  |  | 05.02 | 05.02.06.07 | High Value Parts Procurement |  |  | ELEC/HVPS |  | Phase C | % C |  | C | Kris | DSE | % C |  |  |  | P |  | R |  |  |  |  |
| JUICE-UVS 594210 |  | High Value EE Choke Inductor Feb 2018 Material Receipt Task |  | 0d | 2018-11-20 A | 2018-11-21 A | JUICE-UVS 594204 | 100% | 2018-11-27 | 2018-11-27 |  |  |  | 05.02 | 05.02.06.07 | High Value Parts Procurement |  |  | ELEC/HVPS |  | Phase C | % C |  | C | Kris | DSE | % C |  |  |  | P |  | R |  |  |  |  |
|  | 07 | **Electronics NCR Investigation/Resolution** |  |  | 2017-01-20 | 2017-02-16 |  |  |  |  |  |  |  |  |  |  |  |  |  |  |  |  |  |  |  |  |  |  |  |  |  |  |  |  |  |  |  |
|  | 01 | **EM LVPS AR-19190-4** |  |  | 2017-01-20 | 2017-02-16 |  |  |  |  |  |  |  |  |  |  |  |  |  |  |  |  |  |  |  |  |  |  |  |  |  |  |  |  |  |  |  |
| JUICE-UVS593967 |  | EM LVPS AR-19190-4 |  | 20d | 2017-01-20 A | 2017-02-16 A | JUICE-UVS 4022 SS | 100% |  |  |  |  |  | 05.02 | 05.02.07.01 | EM LVPS AR-19190-4 |  |  |  |  | Phase C | % C |  |  | Kris | DSE | 50-50 | 19190.25.601 |  |  |  | PH CD |  | 23 |  |  |  |
|  | 08 | **EM Electrical** |  |  | 2017-03-08 | 2017-08-04 |  |  |  |  |  |  |  |  |  |  |  |  |  |  |  |  |  |  |  |  |  |  |  |  |  |  |  |  |  |  |  |
| JUICE-UVS 3146 |  | Update Harness Drawing |  | 40d | 2017-03-08 A | 2017-05-02 A | JUICE-UVS 0023 | 100% |  |  |  |  |  | 05.02 | 05.02.08 | EM Electrical |  |  |  |  | Phase C | % C |  |  | Kris | DSE | 50-50 | 19190.25.801 |  |  |  | PH CD |  |  |  |  |  |
| JUICE-UVS 3143 |  | EM 1 Instrument Harness Fab |  | 27d | 2017-05-09 A | 2017-06-16 A | JUICE-UVS 3146 | 100% |  |  |  |  |  | 05.02 | 05.02.08 | EM Electrical |  |  |  |  | Phase C | % C |  | B | Kris | DSE | 50-50 | 19190.25.801 |  |  |  | PH CD |  |  | End B | 19190.15.250 |  |
| JUICE-UVS 591897 |  | EM 2 Instrument Harness Fab |  | 34d | 2017-06-19 A | 2017-08-04 A | JUICE-UVS 3143 | 100% |  |  |  |  |  | 05.02 | 05.02.08 | EM Electrical |  |  |  |  | Phase C | % C |  | B | Kris | DSE | 50-50 | 19190.25.801 |  |  |  | PH CD |  |  | End B | 19190.15.250 | DS1 |

| ID | WBS | Activity | Duration | Start | Finish | Predecessors | Complete | Planned start | Planned finish | Constraint | user_text8 | CA | WP/PP | Work Package Name | JUICE UVS Phases | EVT | NASA Phase | JUICE-UVS CAMs | OBS | P6 EVT | JUICE-UVS Charge #s | LOE | JUICE-UVS Phase CD | Forecast Chg | user_text6 | BUDG - Budget Phase | SORT - Item Sort | SubC | PHAS - Alice (Old) | PERT - Pert Select | JUICE-UVS FM CP | Justify |
| --- | --- | --- | --- | --- | --- | --- | --- | --- | --- | --- | --- | --- | --- | --- | --- | --- | --- | --- | --- | --- | --- | --- | --- | --- | --- | --- | --- | --- | --- | --- | --- | --- |
|  | 03 | **Detector/Optics** |  | 2016-10-03 | 2019-07-08 |  |  |  |  |  |  |  |  |  |  |  |  |  |  |  |  |  |  |  |  |  |  |  |  |  |  |  |
|  | 01 | **Detector** |  | 2016-10-03 | 2019-07-08 |  |  |  |  |  |  |  |  |  |  |  |  |  |  |  |  |  |  |  |  |  |  |  |  |  |  |  |
|  | 01 | **Detector SubC Mgmt** |  | 2016-10-03 | 2019-07-08 |  |  |  |  |  |  |  |  |  |  |  |  |  |  |  |  |  |  |  |  |  |  |  |  |  |  |  |
|  | 01 | **Detector SubC Mgmt** |  | 2016-10-03 | 2019-07-08 |  |  |  |  |  |  |  |  |  |  |  |  |  |  |  |  |  |  |  |  |  |  |  |  |  |  |  |
| JUICE-UVS 9012 |  | Detector Oversight & Spt Phase FY 17 Phase C Start | 250d | 2016-10-03 A | 2017-09-29 A | JUICE-UVS 0011 | 100% |  |  |  | MD | 05.03 | 05.03.01.01.01 | Detector SubC Mgmt | Phase C | LOE | C | Mike | DSR | LOE | 19190.25.330 | LOE | PH CD |  |  |  |  |  |  |  |  |  |
| JUICE-UVS 9015 |  | Detector Oversight & Spt Phase FY 18 | 355d | 2017-10-02 A | 2019-07-08 A | JUICE-UVS 9012 | 100% | 2017-10-02 | 2019-03-01 |  | MD | 05.03 | 05.03.01.01.01 | Detector SubC Mgmt | Phase C | LOE | C | Mike | DSR | LOE | 19190.25.330 | LOE | PH CD | Y |  |  |  |  |  |  |  |  |
|  | 02 | **Discrete SubC Mgmt** |  | 2017-01-11 | 2017-01-13 |  |  |  |  |  |  |  |  |  |  |  |  |  |  |  |  |  |  |  |  |  |  |  |  |  |  |  |
| JUICE-UVS 9027 |  | Detector CDR Mtg - OSSY | 3d | 2017-01-11 A | 2017-01-13 A | JUICE-UVS 0023 | 100% |  |  |  | MD | 05.03 | 05.03.01.01.02 | Discrete SubC | Phase C | % C | C | Mike | DSR | % C | 19190.25.331 |  | PH CD |  | Phase B | C/D | OPT/DET | SS |  |  |  |  |
|  | 02 | **Detector FM** |  | 2017-01-11 | 2019-02-05 |  |  |  |  |  |  |  |  |  |  |  |  |  |  |  |  |  |  |  |  |  |  |  |  |  |  |  |
| JUICE-UVS 9063 |  | Update Det Elec. Layouts | 17d | 2017-01-11 A | 2017-02-02 A | JUICE-UVS 9054 | 100% |  |  |  | KP | 05.03 | 05.03.01.02 | Detector FM | Phase C | % C | C | Mike | DSR | 50-50 | 19190.25.332 |  | PH CD |  | Phase B | B | OPT/DET |  |  |  |  |  |
| JUICE-UVS 9066 |  | Update & Release Final FM Detector Electronics Parts List | 68d | 2017-01-11 A | 2017-04-14 A | JUICE-UVS 9054 | 100% |  |  |  | KP | 05.03 | 05.03.01.02 | Detector FM | Phase C | % C | C | Mike | DSR | 50-50 | 19190.25.332 |  | PH CD |  |  | B | OPT/DET |  |  |  |  |  |
| JUICE-UVS 9069 |  | FM Det Elec. Final Design Review | 1d | 2017-02-03 A | 2017-02-03 A | JUICE-UVS 9063 FF | 100% |  |  |  | KP | 05.03 | 05.03.01.02 | Detector FM | Phase C | % C | C | Mike | DSR | 0-100 | 19190.25.332 |  | PH CD |  |  |  |  |  |  |  |  |  |
| JUICE-UVS 9072 |  | Detector Elec Fab PWB (SwRI) x2 | 80d | 2017-05-18 A | 2017-09-13 A | JUICE-UVS 9069, JUICE-UVS 592605 | 100% |  |  |  | KP | 05.03 | 05.03.01.02 | Detector FM | Phase C | % C | C | Mike | DSR | 50-50 | 19190.25.332 |  | PH CD |  |  | C/D | OPT/DET |  | 593 | Y |  |  |
| JUICE-UVS 9033 |  | Hand Carry DET Elec. to Ossy for Initial Testing | 55d | 2017-09-14 A | 2017-12-01 A | JUICE-UVS 9072 | 100% |  |  |  | KP | 05.03 | 05.03.01.02 | Detector FM | Phase C | % C | C | Mike | DSR | 0-100 | 19190.25.332 |  | PH CD |  |  |  |  |  |  |  |  |  |
| JUICE-UVS 9036 |  | Pick up DET elect. for Stake & Coat | 25d | 2018-03-02 A | 2018-04-06 A | JUICE-UVS 9105 | 100% | 2018-03-02 | 2018-04-05 |  | KP | 05.03 | 05.03.01.02 | Detector FM | Phase C | % C | C | Mike | DSR | 0-100 | 19190.25.332 |  | PH CD |  |  |  |  |  |  |  | FM CP |  |
| JUICE-UVS 9075 |  | Install Flight FPGA & final SAT resistors (SwRI) | 5d | 2018-04-06 A | 2018-04-12 A | JUICE-UVS 9036, JUICE-UVS 9057 | 100% |  |  |  | KP | 05.03 | 05.03.01.02 | Detector FM | Phase C | % C | C | Mike | DSR | 0-100 | 19190.25.332 |  | PH CD |  |  | C/D | OPT/DET |  | 593 |  | FM CP |  |
| JUICE-UVS 9108 |  | Test DET Elect. FPGAs & SAT resistors w/C&DH | 5d | 2018-04-13 A | 2018-04-19 A | JUICE-UVS 9075 | 100% |  |  |  | KP | 05.03 | 05.03.01.02 | Detector FM | Phase C | % C | C | Mike | DSR | 0-100 | 19190.25.332 |  | PH CD |  |  |  |  |  |  |  | FM CP |  |
| JUICE-UVS 9090 |  | Disassemble & Conf-Coat/Stake FM Det Elec. (SwRI) | 5d | 2018-04-20 A | 2018-04-26 A | JUICE-UVS 9108 | 100% |  |  |  | KP | 05.03 | 05.03.01.02 | Detector FM | Phase C | % C | C | Mike | DSR | 0-100 | 19190.25.332 |  | PH CD |  |  | C/D | OPT/DET |  |  |  | FM CP |  |
| JUICE-UVS 9039 |  | Hand Carry Det. Elect. to Ossy for Final testing | 9d | 2018-04-27 A | 2018-05-10 A | JUICE-UVS 9090 | 100% | 2018-04-27 | 2018-05-09 |  | KP | 05.03 | 05.03.01.02 | Detector FM | Phase C | % C | C | Mike | DSR | 0-100 | 19190.25.332 |  | PH CD |  |  |  |  |  |  |  | FM CP |  |
| JUICE-UVS 9081 |  | Pick-Up Of Completed Det & Det Electronincs | 49d | 2018-06-11 A | 2018-08-20 A | JUICE-UVS 11688, JUICE-UVS 11685, JUICE-UVS593961, JUICE-UVS 9102 | 100% | 2018-06-11 | 2018-08-17 |  | MD | 05.03 | 05.03.01.02 | Detector FM | Phase C | % C | C | Mike | DSR | 0-100 | 19190.25.332 |  | PH CD |  |  |  |  |  |  |  | FM CP | Activity has started |
| JUICE-UVS 9132 |  | Install Flight FPGA & final SAT resistors (SwRI) - FS | 5d | 2018-08-21 A | 2018-08-23 A | JUICE-UVS 9162 | 100% | 2018-08-21 | 2018-08-27 |  | KP | 05.03 | 05.03.01.02 | Detector FM | Phase C | % C | C | Mike | DSR | 0-100 | 19190.25.332 |  | PH CD |  |  | C/D | OPT/DET |  | 593 |  | FM CP | Project Level Mandated Start Date |
| JUICE-UVS 9147 |  | Disassemble & Conf-Coat/Stake FM Det Elec. (SwRI) - FS | 5d | 2018-08-22 A | 2018-08-28 A | JUICE-UVS 9132 | 100% |  |  |  | KP | 05.03 | 05.03.01.02 | Detector FM | Phase C | % C | C | Mike | DSR | 0-100 | 19190.25.332 |  | PH CD |  |  | C/D | OPT/DET |  |  |  | FM CP | Project Level Mandated Start Date |
| JUICE-UVS 9156 |  | FS Detector fabrication complete | 1d | 2018-08-29 A | 2018-08-29 A | JUICE-UVS 9147 | 100% |  |  |  |  | 05.03 | 05.03.01.02 | Detector FM | Phase C | % C |  | Mike | DSR | 0-100 | 19190.25.332 |  | PH CD |  |  |  |  |  |  |  | FM CP | Project Level Mandated Start Date |
| JUICE-UVS 9150 |  | Ship to OSSY (SwRI) - FS | 2d | 2019-02-04 A | 2019-02-05 A | JUICE-UVS 9156 | 100% |  |  | start on or after 2019-02-04 | KP | 05.03 | 05.03.01.02 | Detector FM | Phase C | % C | C | Mike | DSR | 0-100 | 19190.25.332 |  | PH CD |  |  | C/D | OPT/DET |  |  |  | FM CP |  |

| ID | WBS | Activity | Type | Duration | Start | Finish | Predecessors | Complete | Planned start | Planned finish | Constraint | CA | WP/PP | Work Package Name | M/S | JUICE UVS Phases | EVT | JUICE-UVS CAMs | OBS | P6 EVT | JUICE-UVS Charge #s | JUICE-UVS Phase CD | user_text2 | user_text7 | user_text8 | JUICE-UVS Resources | NASA Phase | SubC | user_text6 | PHAS - Alice (Old) | BUDG - Budget Phase | SORT - Item Sort | PERT - Pert Select | JUICE UVS Phase CD | JUICE-UVS Summary Milestones | Justify | JUICE-UVS FM CP |
| --- | --- | --- | --- | --- | --- | --- | --- | --- | --- | --- | --- | --- | --- | --- | --- | --- | --- | --- | --- | --- | --- | --- | --- | --- | --- | --- | --- | --- | --- | --- | --- | --- | --- | --- | --- | --- | --- |
|  | 03 | **Detector SubContracts & Milestone Payment Schedule** |  |  | 2016-10-03 | 2019-02-26 |  |  |  |  |  |  |  |  |  |  |  |  |  |  |  |  |  |  |  |  |  |  |  |  |  |  |  |  |  |  |  |
| JUICE-UVS 593677 |  | Start of Phase C | milestone | 0d | 2016-10-03 A | 2016-10-03 A | JUICE-UVS 0023 | 100% |  |  |  | 05.03 | 05.03.01.03 | Detector - Sensor Sciences | P | Phase C | % C | Mike | DSR | 0-100 | 19190.25.333 | PH CD |  |  |  |  |  |  |  |  |  |  |  |  |  |  |  |
| JUICE-UVS3097 |  | FM Detector Sub Contract FY 17 |  | 250d | 2016-10-03 A | 2017-09-29 A | JUICE-UVS 0023 | 100% |  |  |  | 05.03 | 05.03.01.03 | Detector - Sensor Sciences |  | Phase C | % C | Mike | DSR | % C | 19190.25.333 | PH CD | CS4 | Flight Quote | MD | SUBs | C | SS |  |  |  |  |  |  |  |  |  |
| JUICE-UVS 9054 |  | Update FM Det. Elec. Schematic |  | 10d | 2016-12-27 A | 2017-01-10 A | JUICE-UVS 9027 | 100% |  |  |  | 05.03 | 05.03.01.03 | Detector - Sensor Sciences |  | Phase C | % C | Mike | DSR | 0-100 | 19190.25.333 | PH CD |  |  |  | 0Budget | C | SS | Phase B | 612 | B | OPT/DET | Y |  |  |  |  |
| JUICE-UVS 593682 |  | Order placed for procurement of other long-lead items Milestone Payment 14 |  | 1d | 2017-01-16 A | 2017-01-16 A | JUICE-UVS 593677 | 100% |  |  |  | 05.03 | 05.03.01.03 | Detector - Sensor Sciences |  | Phase C | % C | Mike | DSR | 0-100 | 19190.25.333 | PH CD |  |  |  |  |  | SS |  |  |  |  |  |  |  |  |  |
| JUICE-UVS 9045 |  | FM Detector Fabrication |  | 95d | 2017-01-16 A | 2017-05-30 A | JUICE-UVS 9027 | 100% |  |  |  | 05.03 | 05.03.01.03 | Detector - Sensor Sciences |  | Phase C | % C | Mike | DSR | 50-50 | 19190.25.333 | PH CD |  |  |  | 0Budget | C | SS |  |  | B | OPT/DET |  | PH CD | Summary |  |  |
| JUICE-UVS593679 |  | Order placed for Procure MCPs Milestone Payment 13 |  | 1d | 2017-01-16 A | 2017-01-16 A | JUICE-UVS 9027 | 100% |  |  |  | 05.03 | 05.03.01.03 | Detector - Sensor Sciences |  | Phase C | % C | Mike | DSR | 0-100 | 19190.25.333 | PH CD |  |  |  |  |  | SS |  |  |  |  |  |  |  |  |  |
| JUICE-UVS 9060 |  | FM Detector Elect. Design Update Milestone Payment 15 |  | 1d | 2017-02-28 A | 2017-02-28 A | JUICE-UVS 0023, JUICE-UVS 9069 FF | 100% |  |  |  | 05.03 | 05.03.01.03 | Detector - Sensor Sciences |  | Phase C | % C | Mike | DSR | 0-100 | 19190.25.333 | PH CD |  |  |  | 0Budget | C | SS | Phase B | 493 | B | OPT/DET | N |  | Summary |  |  |
| JUICE-UVS593685 |  | FM Detector Electronics Fabrication Complete Milestone Payment 16 |  | 1d | 2017-04-28 A | 2017-04-28 A | JUICE-UVS 0023 | 100% |  |  |  | 05.03 | 05.03.01.03 | Detector - Sensor Sciences |  | Phase C | % C | Mike | DSR | 0-100 | 19190.25.333 | PH CD |  |  |  |  |  | SS |  |  |  |  |  |  |  |  |  |
| JUICE-UVS 9048 |  | FM Detector Assembly |  | 90d | 2017-05-22 A | 2017-09-29 A | JUICE-UVS 0023, JUICE-UVS 593682, JUICE-UVS593679, JUICE-UVS 9045 | 100% |  |  |  | 05.03 | 05.03.01.03 | Detector - Sensor Sciences |  | Phase C | % C | Mike | DSR | 50-50 | 19190.25.333 | PH CD |  |  |  | 0Budget | C | SS |  |  | B+ |  |  |  |  |  |  |
| JUICE-UVS593688 |  | FM Detector Fabrication Complete Milestone Payment 17 |  | 1d | 2017-06-16 A | 2017-06-16 A | JUICE-UVS 0023, JUICE-UVS593685 | 100% |  |  |  | 05.03 | 05.03.01.03 | Detector - Sensor Sciences |  | Phase C | % C | Mike | DSR | 0-100 | 19190.25.333 | PH CD |  |  |  |  |  | SS |  |  |  |  |  |  |  | Sub-Contractural Mandated Start Date for payment |  |
| JUICE-UVS593715 |  | JUICE-UVS CDR Milestone Payment 19 |  | 1d | 2017-09-15 A | 2017-09-15 A | JUICE-UVS 0023, JUICE-UVS593712 | 100% |  |  |  | 05.03 | 05.03.01.03 | Detector - Sensor Sciences |  | Phase C | % C | Mike | DSR | 0-100 | 19190.25.333 | PH CD |  |  |  |  |  | SS |  |  |  |  |  |  |  | Sub-Contractural Mandated Start Date for payment |  |
| JUICE-UVS 9057 |  | Update FM Det. Elec. FPGAs |  | 52d | 2017-09-18 A | 2017-11-30 A | JUICE-UVS 9033, JUICE-UVS 9054 | 100% |  |  |  | 05.03 | 05.03.01.03 | Detector - Sensor Sciences |  | Phase C | % C | Mike | DSR | 0-100 | 19190.25.333 | PH CD |  |  |  | 0Budget | C | SS | Phase B | 493 | B | OPT/DET | N |  |  |  |  |
| JUICE-UVS 9084 |  | Assemble Det. Elect. (Ossy) |  | 16d | 2017-09-18 A | 2017-10-09 A | JUICE-UVS 9033 | 100% |  |  |  | 05.03 | 05.03.01.03 | Detector - Sensor Sciences |  | Phase C | % C | Mike | DSR | 50-50 | 19190.25.333 | PH CD |  |  |  | 0Budget | C | SS |  |  | C/D | OPT/DET |  |  |  |  |  |
| JUICE-UVS593712 |  | FM Detector Assembly Complete Milestone Payment 18 |  | 1d | 2017-09-29 A | 2017-09-29 A | JUICE-UVS 0023, JUICE-UVS593688, JUICE-UVS 9048 | 100% |  |  |  | 05.03 | 05.03.01.03 | Detector - Sensor Sciences |  | Phase C | % C | Mike | DSR | 0-100 | 19190.25.333 | PH CD |  |  |  |  |  | SS |  |  |  |  |  |  |  | Sub-Contractural Mandated Start Date for payment |  |
| JUICE-UVS 9042 |  | FM Detector Bench [Initial] Test [OSSY] |  | 38d | 2017-10-10 A | 2017-11-27 A | JUICE-UVS 9084 | 100% | 2017-10-10 | 2017-12-04 |  | 05.03 | 05.03.01.03 | Detector - Sensor Sciences |  | Phase C | % C | Mike | DSR | 50-50 | 19190.25.333 | PH CD |  |  |  | 0Budget | C | SS |  |  | B+ |  |  |  |  |  |  |
| JUICE-UVS 9096 |  | FM Detector Elect Func Test & Trim (Ossy) |  | 21d | 2017-11-27 A | 2018-01-17 A | JUICE-UVS 9042, JUICE-UVS 9048 | 100% | 2017-11-27 | 2017-12-27 |  | 05.03 | 05.03.01.03 | Detector - Sensor Sciences |  | Phase C | % C | Mike | DSR | 0-100 | 19190.25.333 | PH CD |  |  |  | 0Budget | C | SS |  |  | C/D | OPT/DET |  |  |  |  |  |
| JUICE-UVS593691 |  | FS Detector Electronincs Fabrication Complete Milestone Payment 20 |  | 2d | 2017-12-12 A | 2017-12-13 A | JUICE-UVS 0023, JUICE-UVS593715 | 100% |  |  |  | 05.03 | 05.03.01.03 | Detector - Sensor Sciences |  | Phase C | % C | Mike | DSR | 0-100 | 19190.25.333 | PH CD |  |  |  |  |  | SS |  |  |  |  |  |  |  | Sub-Contractural Mandated Start Date for payment |  |
| JUICE-UVS 9078 |  | Install SAT Resistors (Ossy) |  | 3d | 2018-01-18 A | 2018-01-22 A | JUICE-UVS 9096 | 100% |  |  |  | 05.03 | 05.03.01.03 | Detector - Sensor Sciences |  | Phase C | % C | Mike | DSR | 0-100 | 19190.25.333 | PH CD |  |  |  | 0Budget | C | SS |  |  | C/D | OPT/DET |  |  |  |  |  |
| JUICE-UVS 9105 |  | Functional Test Det./Det. Elec w/SATs (Ossy) |  | 30d | 2018-01-23 A | 2018-03-05 A | JUICE-UVS 9078 | 100% |  |  |  | 05.03 | 05.03.01.03 | Detector - Sensor Sciences |  | Phase C | % C | Mike | DSR | 0-100 | 19190.25.333 | PH CD |  |  |  | 0Budget | C | SS |  |  | C/D | OPT/DET |  |  |  |  |  |
| JUICE-UVS593700 |  | FS Detector Fabrication complete Milestone Payment 21 |  | 1d | 2018-02-01 A | 2018-02-01 A | JUICE-UVS 0023, JUICE-UVS593691 FF | 100% |  |  |  | 05.03 | 05.03.01.03 | Detector - Sensor Sciences |  | Phase C | % C | Mike | DSR | 0-100 | 19190.25.333 | PH CD |  |  |  |  |  | SS |  |  |  |  |  |  |  |  |  |
| JUICE-UVS 9087 |  | Final Elec Test & Single-Cycle Thermal Test Det Electronics (Ossy) |  | 20d | 2018-04-02 A | 2018-04-27 A | JUICE-UVS 9039 | 100% |  |  |  | 05.03 | 05.03.01.03 | Detector - Sensor Sciences |  | Phase C | % C | Mike | DSR | 50-50 | 19190.25.333 | PH CD |  |  |  | 0Budget | C | SS |  |  | C/D | OPT/DET |  |  |  |  | FM CP |
| JUICE-UVS 9141 |  | Assemble Det. Elect. (Ossy) - FS |  | 10d | 2018-05-29 A | 2018-06-11 A | JUICE-UVS 9087 | 100% |  |  |  | 05.03 | 05.03.01.03 | Detector - Sensor Sciences |  | Phase C | % C | Mike | DSR | 0-100 | 19190.25.333 | PH CD |  |  |  | 0Budget | C | SS |  |  | C/D | OPT/DET |  |  |  |  | FM CP |
| JUICE-UVS 9153 |  | FM Detector Elect Func Test & Trim (Ossy) - FS |  | 9d | 2018-06-12 A | 2018-06-22 A | JUICE-UVS 9141 | 100% |  |  |  | 05.03 | 05.03.01.03 | Detector - Sensor Sciences |  | Phase C | % C | Mike | DSR | 50-50 | 19190.25.333 | PH CD |  |  |  | 0Budget | C | SS |  |  | C/D | OPT/DET |  |  |  |  | FM CP |
| JUICE-UVS 9102 |  | Final FM Det/Det Elect. Integrated Test (OSSY) |  | 5d | 2018-06-25 A | 2018-06-29 A | JUICE-UVS 9087 | 100% |  |  |  | 05.03 | 05.03.01.03 | Detector - Sensor Sciences |  | Phase C | % C | Mike | DSR | 0-100 | 19190.25.333 | PH CD |  |  |  | 0Budget | C | SS |  |  | C/D | OPT/DET |  |  |  |  | FM CP |
| JUICE-UVS 9099 |  | Flight Detector Elec ready for I&T |  | 1d | 2018-08-06 A | 2018-08-06 A | JUICE-UVS 9081 | 100% |  |  |  | 05.03 | 05.03.01.03 | Detector - Sensor Sciences |  | Phase C | % C | Mike | DSR | 0-100 | 19190.25.333 | PH CD |  |  |  | 0Budget | C | SS |  |  | C/D | OPT/DET |  |  |  |  | FM CP |
| JUICE-UVS593697 |  | FS Detector Assembly Complete Milestone Payment 23 |  | 1d | 2018-08-21 A | 2018-08-21 A | JUICE-UVS 0023, JUICE-UVS 9153 | 100% |  |  |  | 05.03 | 05.03.01.03 | Detector - Sensor Sciences |  | Phase C | % C | Mike | DSR | 0-100 | 19190.25.333 | PH CD |  |  |  |  |  | SS |  |  |  |  |  |  |  | Sub-Contractural Mandated Start Date for payment | FM CP |
| JUICE-UVS593718 |  | FM Detector & Electronics Delivered to SwRI Milestone Payment 22 |  | 1d | 2018-08-24 A | 2018-08-24 A | JUICE-UVS 0023, JUICE-UVS593700 | 100% |  |  |  | 05.03 | 05.03.01.03 | Detector - Sensor Sciences |  | Phase C | % C | Mike | DSR | 0-100 | 19190.25.333 | PH CD |  |  |  |  |  | SS |  |  |  |  |  |  |  | Sub-Contractural Mandated Start Date for payment | FM CP |
| JUICE-UVS 9135 |  | Install SAT Resistors (Ossy) - FS |  | 3d | 2019-01-21 A | 2019-01-23 A | JUICE-UVS 9153 | 100% |  |  | start on or after 2019-01-21 | 05.03 | 05.03.01.03 | Detector - Sensor Sciences |  | Phase C | % C | Mike | DSR | 0-100 | 19190.25.333 | PH CD |  |  |  | 0Budget | C | SS |  |  | C/D | OPT/DET |  |  |  | Project Level Mandated Start Date | FM CP |
| JUICE-UVS 9162 |  | Functional Test Det./Det. Elec w/SATs (Ossy) - FS |  | 5d | 2019-01-24 A | 2019-01-30 A | JUICE-UVS 9135, JUICE-UVS3097, JUICE-UVS593697 | 100% |  |  | start on or after 2018-11-12 | 05.03 | 05.03.01.03 | Detector - Sensor Sciences |  | Phase C | % C | Mike | DSR | 0-100 | 19190.25.333 | PH CD |  |  |  | 0Budget | C | SS |  |  | C/D | OPT/DET |  |  |  | Project Level Mandated Start Date | FM CP |
| JUICE-UVS 9144 |  | Final Elec Test & Single-Cycle Thermal Test Det Electronics (Ossy) - FS |  | 10d | 2019-02-06 A | 2019-02-19 A | JUICE-UVS 9150 | 100% |  |  |  | 05.03 | 05.03.01.03 | Detector - Sensor Sciences |  | Phase C | % C | Mike | DSR | 0-100 | 19190.25.333 | PH CD |  |  |  | 0Budget | C | SS |  |  | C/D | OPT/DET |  |  |  |  | FM CP |
| JUICE-UVS 2469 |  | FS Detector & Detector Electronics Delivered to SwRI Milestone Payment 24 |  | 0.12d | 2019-02-20 A | 2019-02-20 A | JUICE-UVS 9099, JUICE-UVS 9159 | 100% |  |  | start on or after 2019-03-26 | 05.03 | 05.03.01.03 | Detector - Sensor Sciences |  | Phase C | % C | Mike | DSR | 0-100 | 19190.25.333 | PH CD |  |  | MD | 0Budget | C | SS |  |  | C/D | OPT/DET |  |  |  | Sub-Contractural Mandated Start Date for payment | FM CP |
| JUICE-UVS 9159 |  | Final FS Det/Det Elect. Integrated Test (OSSY) - FS |  | 5d | 2019-02-20 A | 2019-02-26 A | JUICE-UVS 9144 | 100% |  |  |  | 05.03 | 05.03.01.03 | Detector - Sensor Sciences |  | Phase C | % C | Mike | DSR | 0-100 | 19190.25.333 | PH CD |  |  |  | 0Budget | C | SS |  |  | C/D | OPT/DET |  |  |  |  | FM CP |

| ID | WBS | Activity | Type | Duration | Start | Finish | Predecessors | Complete | Planned start | Planned finish | CA | WP/PP | Work Package Name | JUICE UVS Phases | EVT | JUICE-UVS CAMs | OBS | P6 EVT | JUICE-UVS SVT | SVT | JUICE-UVS Procurements | JUICE-UVS Phase CD | M/S | user_text6 | user_text7 | user_text8 | PHAS - Alice (Old) | BUDG - Budget Phase | SORT - Item Sort | PERT - Pert Select | JUICE-UVS Resources | NASA Phase | JUICE-UVS Charge #s | Justify |
| --- | --- | --- | --- | --- | --- | --- | --- | --- | --- | --- | --- | --- | --- | --- | --- | --- | --- | --- | --- | --- | --- | --- | --- | --- | --- | --- | --- | --- | --- | --- | --- | --- | --- | --- |
|  | 04 | **Detector Procurements** |  |  | 2017-01-03 | 2018-04-30 |  |  |  |  |  |  |  |  |  |  |  |  |  |  |  |  |  |  |  |  |  |  |  |  |  |  |  |  |
| JUICE-UVS 11643 |  | SVT Detector Pump Station Procurement Lead Time |  | 335d | 2017-01-03 A | 2018-04-20 A | JUICE-UVS 593952, JUICE-UVS 594195 | 100% | 2017-01-03 | 2018-04-30 | 05.03 | 05.03.01.04 | Detector Procurements | Phase C | % C | Mike | DSR | % C | SVT | SVT | P | PH CD |  |  |  |  |  |  |  |  |  |  |  |  |
| JUICE-UVS 11682 |  | SVT Detector Light Source Procurement Lead Time |  | 269d | 2017-01-03 A | 2018-01-26 A | JUICE-UVS 593952 | 100% |  |  | 05.03 | 05.03.01.04 | Detector Procurements | Phase C | % C | Mike | DSR | % C | SVT | SVT | P | PH CD |  |  |  |  |  |  |  |  |  |  |  |  |
| JUICE-UVS 593952 |  | Detector Procurements | milestone | 0d | 2017-01-03 A | 2017-01-03 A | JUICE-UVS 593677 | 100% |  |  | 05.03 | 05.03.01.04 | Detector Procurements | Phase C | % C | Mike | DSR | 0-100 |  |  | P | PH CD | C |  |  |  |  |  |  |  |  |  |  |  |
| JUICE-UVS593955 |  | SVT Detector EGSE Procurement Lead Time |  | 335d | 2017-01-03 A | 2018-04-30 A | JUICE-UVS 593952, JUICE-UVS 11643 | 100% |  |  | 05.03 | 05.03.01.04 | Detector Procurements | Phase C | % C | Mike | DSR | % C | SVT | SVT | P | PH CD |  |  |  |  |  |  |  |  |  |  |  |  |
| JUICE-UVS 9051 |  | FM Detector Elec. PWB Procurement |  | 18d | 2017-04-17 A | 2017-05-10 A | JUICE-UVS 9069, JUICE-UVS 593952, JUICE-UVS 9066 SS | 100% |  |  | 05.03 | 05.03.01.04 | Detector Procurements | Phase C | % C | Mike | DSR | 50-50 |  |  | P | PH CD |  | Phase B | Flight Quote | KP | 612 | C/D | OPT/DET | Y | Serv | C | 19190.25.970 |  |
| JUICE-UVS 592605 |  | Coupon Test DETE PWBs |  | 5d | 2017-05-11 A | 2017-05-17 A | JUICE-UVS 9051 | 100% |  |  | 05.03 | 05.03.01.04 | Detector Procurements | Phase C | % C | Mike | DSR | 50-50 |  |  | P | PH CD |  |  | Flight Quote | KP |  |  |  |  | Mat |  | 19190.25.970 |  |
| JUICE-UVS 11640 |  | Detector Light Source Procurement Delivery |  | 5d | 2018-01-29 A | 2018-02-02 A | JUICE-UVS 11682, JUICE-UVS 2030 | 100% |  |  | 05.03 | 05.03.01.04 | Detector Procurements | Phase C | % C | Mike | DSR | 0-100 |  |  | P | PH CD |  |  | Flight Quote | MD |  |  |  |  | Mat | C | 19190.25.970 |  |
| JUICE-UVS 11685 |  | Detector Light Source Material Task Receipt | milestone | 0d | 2018-02-02 A | 2018-02-02 A | JUICE-UVS 11640 | 100% |  |  | 05.03 | 05.03.01.04 | Detector Procurements | Phase C | % C | Mike | DSR | 0-100 |  |  | P | PH CD | R |  |  |  |  |  |  |  |  |  |  |  |
| JUICE-UVS 11637 |  | Detector Pump Station Procurement Delivery |  | 1d | 2018-04-23 A | 2018-04-23 A | JUICE-UVS 11643, JUICE-UVS 2030 | 100% |  |  | 05.03 | 05.03.01.04 | Detector Procurements | Phase C | % C | Mike | DSR | 0-100 |  |  | P | PH CD |  |  | Flight Quote | MD |  |  |  |  | Mat | C | 19190.25.970 |  |
| JUICE-UVS 11688 |  | Detector Pump Station Material Task Receipt | milestone | 0d | 2018-04-23 A | 2018-04-23 A | JUICE-UVS 11637 | 100% | 2018-05-04 | 2018-05-04 | 05.03 | 05.03.01.04 | Detector Procurements | Phase C | % C | Mike | DSR | 0-100 |  |  | P | PH CD | R |  |  |  |  |  |  |  |  |  |  |  |
| JUICE-UVS 593958 |  | Detector EGSE Procurement Delivery |  | 0.5d | 2018-04-30 A | 2018-04-30 A | JUICE-UVS593955, JUICE-UVS 2030 | 100% |  |  | 05.03 | 05.03.01.04 | Detector Procurements | Phase C | % C | Mike | DSR | 0-100 |  |  | P | PH CD |  |  | Flight Quote | MD |  |  |  |  | Mat | C | 19190.25.970 |  |
| JUICE-UVS593961 |  | Detector EGSE Material Task Receipt | milestone | 0d | 2018-04-30 A | 2018-04-30 A | JUICE-UVS 593958 | 100% |  |  | 05.03 | 05.03.01.04 | Detector Procurements | Phase C | % C | Mike | DSR | 0-100 |  |  | P | PH CD | C |  |  |  |  |  |  |  |  |  |  |  |
|  | 02 | **Optics** |  |  | 2016-10-03 | 2018-10-12 |  |  |  |  |  |  |  |  |  |  |  |  |  |  |  |  |  |  |  |  |  |  |  |  |  |  |  |  |
|  | 01 | **Optics FM** |  |  | 2016-10-03 | 2018-10-12 |  |  |  |  |  |  |  |  |  |  |  |  |  |  |  |  |  |  |  |  |  |  |  |  |  |  |  |  |
| JUICE-UVS593886 |  | Procure FM Optics | milestone | 0d | 2016-10-03 A | 2016-10-03 A | JUICE-UVS 0023 | 100% |  |  | 05.03 | 05.03.02.01 | Optics FM | Phase C | % C | Mike | DSR | 0-100 |  |  | P | PH CD | C |  |  |  |  |  |  |  |  |  |  |  |
| JUICE-UVS593889 |  | SVT Coat FM OAP/Gratings @ GSFC Lead Time |  | 400d | 2016-10-03 A | 2018-05-04 A | JUICE-UVS593886 | 100% |  |  | 05.03 | 05.03.02.01 | Optics FM | Phase C | % C | Mike | DSR | % C | SVT | SVT | P | PH CD |  |  |  |  |  |  |  |  |  |  |  |  |
| JUICE-UVS 9173 |  | Coat FM OAP/Gratings @ GSFC Delievery |  | 100d | 2018-05-07 A | 2018-10-12 A | JUICE-UVS593889 | 100% | 2018-05-07 | 2018-09-28 | 05.03 | 05.03.02.01 | Optics FM | Phase C | % C | Mike | DSR | 0-100 |  |  | P | PH CD |  |  | Flight Quote | MD | 632 | B | OPT/DET |  | Mat | C | 19190.25.310 |  |
| JUICE-UVS 592998 |  | Coat FM OAP/Gratings Material Task Receipt | milestone | 0d | 2018-10-12 A | 2018-10-12 A | JUICE-UVS 9173 | 100% |  |  | 05.03 | 05.03.02.01 | Optics FM | Phase C | % C | Mike | DSR | 0-100 |  |  | P | PH CD | R |  |  |  |  |  |  |  |  |  |  |  |
|  | 02 | **Optics Procurement** |  |  | 2016-10-03 | 2018-07-02 |  |  |  |  |  |  |  |  |  |  |  |  |  |  |  |  |  |  |  |  |  |  |  |  |  |  |  |  |
| JUICE-UVS593892 |  | SVT Procure Witness Sample Mirrors Lead Time |  | 434d | 2016-10-03 A | 2018-06-25 A | JUICE-UVS593886 | 100% |  |  | 05.03 | 05.03.02.02 | Optics Procurement | Phase C | % C | Mike | DSR | % C | SVT | SVT | P | PH CD |  |  |  |  |  |  |  |  |  |  |  |  |
| JUICE-UVS593895 |  | SVT Procure SP Mirror Lead Time |  | 434d | 2016-10-03 A | 2018-06-25 A | JUICE-UVS593886 | 100% |  |  | 05.03 | 05.03.02.02 | Optics Procurement | Phase C | % C | Mike | DSR | % C | SVT | SVT | P | PH CD |  |  |  |  |  |  |  |  |  |  |  |  |
| JUICE-UVS593898 |  | SVT FM OAP procurement (Fab/Test) (Nu-Tek) x2 Lead Time |  | 405d | 2016-10-03 A | 2018-04-30 A | JUICE-UVS593886 | 100% | 2016-10-03 | 2018-05-11 | 05.03 | 05.03.02.02 | Optics Procurement | Phase C | % C | Mike | DSR | % C | SVT | SVT | P | PH CD |  |  |  |  |  |  |  |  |  |  |  |  |
| JUICE-UVS 592989 |  | Receive FM Gratings x2 from LATMOS | milestone | 0d | 2018-02-01 A | 2018-02-01 A |  | 100% | 2018-04-02 | 2018-04-02 |  | 05.03.02.02 | Optics Procurement |  | % C | Mike | DSR |  |  |  | P |  |  |  |  |  |  |  |  |  |  |  |  |  |
| JUICE-UVS 9194 |  | FM OAP procurement (Fab/Test) (Nu-Tek) x2 Delivery |  | 5d | 2018-05-14 A | 2018-05-18 A | JUICE-UVS593898, JUICE-UVS 592989 | 100% |  |  | 05.03 | 05.03.02.02 | Optics Procurement | Phase C | % C | Mike | DSR | 0-100 |  |  | P | PH CD |  |  | Flight Quote | MD |  |  |  |  | Mat | C | 19190.25.950 |  |
| JUICE-UVS 593013 |  | FM OAP (Fab/Test) (Nu-Tek) x2 Material Task Receipt | milestone | 0d | 2018-05-18 A | 2018-05-18 A | JUICE-UVS 9194 | 100% |  |  | 05.03 | 05.03.02.02 | Optics Procurement | Phase C | % C | Mike | DSR | 0-100 |  |  | P | PH CD | R |  |  |  |  |  |  |  |  |  |  |  |
| JUICE-UVS 11511 |  | Procure SP Mirror Delivery |  | 5d | 2018-06-26 A | 2018-07-02 A | JUICE-UVS593895 | 100% |  |  | 05.03 | 05.03.02.02 | Optics Procurement | Phase C | % C | Mike | DSR | 0-100 |  |  | P | PH CD |  |  | Flight Quote | MD |  |  |  |  | Mat | C | 19190.25.950 |  |
| JUICE-UVS 9176 |  | Procure Witness Sample Mirrors Delivery |  | 5d | 2018-06-26 A | 2018-07-02 A | JUICE-UVS593892 | 100% |  |  | 05.03 | 05.03.02.02 | Optics Procurement | Phase C | % C | Mike | DSR | 0-100 |  |  | P | PH CD |  |  | Flight Quote | MD |  |  |  |  | Mat | C | 19190.25.950 | Activity Complete - Will remove constraint |
| JUICE-UVS 593007 |  | Witness Sample Mirrors Material Task Receipt | milestone | 0d | 2018-07-02 A | 2018-07-02 A | JUICE-UVS 9176 | 100% |  |  | 05.03 | 05.03.02.02 | Optics Procurement | Phase C | % C | Mike | DSR | 0-100 |  |  | P | PH CD | R |  |  |  |  |  |  |  |  |  |  |  |
| JUICE-UVS 593010 |  | SP Mirror Material Task Receipt | milestone | 0d | 2018-07-02 A | 2018-07-02 A | JUICE-UVS 11511 | 100% |  |  | 05.03 | 05.03.02.02 | Optics Procurement | Phase C | % C | Mike | DSR | 0-100 |  |  | P | PH CD | R |  |  |  |  |  |  |  |  |  |  |  |

| ID | WBS | Activity | Duration | Start | Finish | Predecessors | Complete | Remaining | Planned start | Planned finish | Total float | Free float | Expected finish | user_text8 | CA | WP/PP | Work Package Name | JUICE UVS Phases | EVT | NASA Phase | JUICE-UVS CAMs | OBS | P6 EVT | JUICE-UVS Charge #s | LOE | JUICE-UVS Phase CD | PHAS - Alice (Old) | BUDG - Budget Phase | SORT - Item Sort | PERT - Pert Select | JUICE-UVS Resources | M/S | JUICE Mission Phases |
| --- | --- | --- | --- | --- | --- | --- | --- | --- | --- | --- | --- | --- | --- | --- | --- | --- | --- | --- | --- | --- | --- | --- | --- | --- | --- | --- | --- | --- | --- | --- | --- | --- | --- |
|  | 04 | **Flight Software** |  | 2016-10-03 | 2019-12-17 |  |  |  |  |  |  |  |  |  |  |  |  |  |  |  |  |  |  |  |  |  |  |  |  |  |  |  |  |
|  | 01 | **FSW Mgmt** |  | 2016-10-03 | 2019-12-17 |  |  |  |  |  |  |  |  |  |  |  |  |  |  |  |  |  |  |  |  |  |  |  |  |  |  |  |  |
| JUICE-UVS 3411 |  | S/W Configuration Mgmt Phase C/D FY 17 | 250d | 2016-10-03 A | 2017-09-29 A | JUICE-UVS 0011 | 100% |  |  |  |  |  |  | MA | 05.04 | 05.04.01 | FSW Mgmt | Phase C | LOE | C | Maria | ISD-10 | LOE | 19190.25.410 | LOE | PH CD |  |  |  |  |  |  |  |
| JUICE-UVS 3430 |  | SW Support/Clerical/Misc. Phase C/D FY 17 | 250d | 2016-10-03 A | 2017-09-29 A | JUICE-UVS 0011 | 100% |  |  |  |  |  |  | MA | 05.04 | 05.04.01 | FSW Mgmt | Phase C | LOE | C | Maria | ISD-10 | LOE | 19190.25.410 | LOE | PH CD |  |  |  |  |  |  |  |
| JUICE-UVS 3458 |  | SW Project Management/Meetings Phase C/D FY 17 | 250d | 2016-10-03 A | 2017-09-29 A | JUICE-UVS 0011 | 100% |  |  |  |  |  |  | MA | 05.04 | 05.04.01 | FSW Mgmt | Phase C | LOE | C | Maria | ISD-10 | LOE | 19190.25.410 | LOE | PH CD |  |  |  |  |  |  |  |
| JUICE-UVS 3461 |  | SW Project Management & Team Meetings Phase C/D FY 18 | 250d | 2017-10-02 A | 2018-09-28 A | JUICE-UVS 3458 | 100% |  |  |  |  |  |  |  | 05.04 | 05.04.01 | FSW Mgmt | Phase C | LOE | C | Maria | ISD-10 | LOE | 19190.25.410 | LOE | PH CD |  |  |  |  |  |  |  |
| JUICE-UVS 3414 |  | S/W Configuration Mgmt Phase C/D FY 18 | 250d | 2017-10-02 A | 2018-09-28 A | JUICE-UVS 3411 | 100% |  |  |  |  |  |  |  | 05.04 | 05.04.01 | FSW Mgmt | Phase C | LOE | C | Maria | ISD-10 | LOE | 19190.25.410 | LOE | PH CD |  |  |  |  |  |  |  |
| JUICE-UVS 3433 |  | SW Support/Clerical/Misc. Phase C/D FY 18 | 250d | 2017-10-02 A | 2018-09-28 A | JUICE-UVS 3430 | 100% |  |  |  |  |  |  |  | 05.04 | 05.04.01 | FSW Mgmt | Phase C | LOE | C | Maria | ISD-10 | LOE | 19190.25.410 | LOE | PH CD |  |  |  |  |  |  |  |
| JUICE-UVS 3417 |  | S/W Configuration Mgmt Phase C/D FY 19 | 105d | 2018-10-01 A | 2019-12-17 | JUICE-UVS 3414 | 85% | 16d | 2018-10-01 | 2019-03-01 | 22d | 0d | 2019-12-17 | MA | 05.04 | 05.04.01 | FSW Mgmt | Phase C | LOE | C | Maria | ISD-10 | LOE | 19190.25.410 | LOE | PH CD |  |  |  |  |  |  |  |
| JUICE-UVS 3464 |  | SW Project Management & Team Meetings Phase C/D FY 19 | 105d | 2018-10-01 A | 2019-12-17 | JUICE-UVS594216, JUICE-UVS 3461 | 85% | 16d | 2018-10-01 | 2019-03-01 | 22d | 0d | 2019-12-17 | MA | 05.04 | 05.04.01 | FSW Mgmt | Phase C | LOE | C | Maria | ISD-10 | LOE | 19190.25.410 | LOE | PH CD |  |  |  |  |  |  |  |
| JUICE-UVS 592839 |  | SW Support/Clerical/Misc. Phase C/D FY 19 | 105d | 2018-10-01 A | 2019-12-17 | JUICE-UVS 3433 | 85% | 16d | 2018-10-01 | 2019-03-01 | 22d | 0d | 2019-12-17 |  | 05.04 | 05.04.01 | FSW Mgmt | Phase C | LOE |  | Maria | ISD-10 | LOE | 19190.25.410 | LOE | PH CD |  |  |  |  |  |  |  |
|  | 02 | **FSW SE** |  | 2016-10-03 | 2019-12-17 |  |  |  |  |  |  |  |  |  |  |  |  |  |  |  |  |  |  |  |  |  |  |  |  |  |  |  |  |
| JUICE-UVS 3413 |  | S/W Peer Reviews Phase C/D FY 17 | 64d | 2016-10-03 A | 2017-01-05 A | JUICE-UVS 0011 | 100% |  |  |  |  |  |  | MA | 05.04 | 05.04.02 | FSW SE | Phase C | LOE | C | Maria | ISD-10 | LOE | 19190.25.420 | LOE | PH CD | 913 | C/D | S/W | N |  |  |  |
| JUICE-UVS 3415 |  | S/W Project Review Meetings (PDR, CDR, etc.) FY 17 | 64d | 2016-10-03 A | 2017-01-05 A | JUICE-UVS 0011 | 100% |  |  |  |  |  |  | MA | 05.04 | 05.04.02 | FSW SE | Phase C | LOE | C | Maria | ISD-10 | LOE | 19190.25.420 | LOE | PH CD | 913 | C/D | S/W | N | 0Budget |  |  |
| JUICE-UVS 3416 |  | S/W Peer Reviews Phase C/D FY 17 | 186d | 2017-01-06 A | 2017-09-29 A | JUICE-UVS 3413 | 100% |  |  |  |  |  |  | MA | 05.04 | 05.04.02 | FSW SE | Phase C | LOE | C | Maria | ISD-10 | LOE | 19190.25.420 | LOE | PH CD |  |  |  |  |  |  |  |
| JUICE-UVS 3418 |  | S/W Project Review Meetings (PDR, CDR, etc.) FY 17 | 186d | 2017-01-06 A | 2017-09-29 A | JUICE-UVS 3415 | 100% |  |  |  |  |  |  | MA | 05.04 | 05.04.02 | FSW SE | Phase C | LOE | C | Maria | ISD-10 | LOE | 19190.25.420 | LOE | PH CD |  |  |  |  |  |  |  |
| JUICE-UVS 3419 |  | S/W Peer Reviews Phase C/D FY 18 | 250d | 2017-10-02 A | 2018-09-28 A | JUICE-UVS 3416 | 100% |  |  |  |  |  |  | MA | 05.04 | 05.04.02 | FSW SE | Phase C | LOE | C | Maria | ISD-10 | LOE | 19190.25.420 | LOE | PH CD |  |  |  |  | 0Budget |  |  |
| JUICE-UVS 3421 |  | S/W Project Review Meetings (PDR, CDR, etc.) FY 18 | 250d | 2017-10-02 A | 2018-09-28 A | JUICE-UVS 3418 | 100% |  |  |  |  |  |  |  | 05.04 | 05.04.02 | FSW SE | Phase C | LOE | C | Maria | ISD-10 | LOE | 19190.25.420 | LOE | PH CD |  |  |  |  |  |  |  |
| JUICE-UVS 3422 |  | S/W Peer Reviews Phase C/D FY 19 | 105d | 2018-10-01 A | 2019-04-19 A | JUICE-UVS 3419 | 100% |  | 2018-10-01 | 2019-03-01 |  |  |  | MA | 05.04 | 05.04.02 | FSW SE | Phase C | LOE | C | Maria | ISD-10 | LOE | 19190.25.420 | LOE | PH CD |  |  |  |  | 0Budget |  |  |
| JUICE-UVS 3427 |  | S/W Project Review Meetings (PDR, CDR, etc.) FY 19 | 105d | 2018-10-01 A | 2019-12-17 | JUICE-UVS 3421 | 85% | 16d | 2018-10-01 | 2019-03-01 | 22d | 0d | 2019-12-17 | MA | 05.04 | 05.04.02 | FSW SE | Phase C | LOE | C | Maria | ISD-10 | LOE | 19190.25.420 | LOE | PH CD |  |  |  |  |  |  |  |
|  | 03 | **FSW Build 1 (EM)** |  | 2016-12-28 | 2017-03-01 |  |  |  |  |  |  |  |  |  |  |  |  |  |  |  |  |  |  |  |  |  |  |  |  |  |  |  |  |
| JUICE-UVS 593664 |  | SW Simulator Setup Phase C | 18d | 2016-12-28 A | 2017-01-23 A | JUICE-UVS 0023 | 100% |  |  |  |  |  |  | MA | 05.04 | 05.04.03 | FSW Build 1 | Phase C | % C |  | Maria | ISD-10 | 50-50 | 19190.25.430 |  | PH CD |  |  |  |  |  |  |  |
| JUICE-UVS 592413 |  | Build 1 Version Description Document (VDD) | 34d | 2017-01-13 A | 2017-03-01 A | JUICE-UVS 593664 SS | 100% |  |  |  |  |  |  | MA | 05.04 | 05.04.03 | FSW Build 1 | Phase C | % C | C | Maria | ISD-10 | 50-50 | 19190.25.430 |  | PH CD |  |  |  |  |  |  |  |
| JUICE-UVS 592422 |  | Build 1 SW Delivery | 0d | 2017-02-27 A | 2017-02-27 A | JUICE-UVS 593664 | 100% |  |  |  |  |  |  | MA | 05.04 | 05.04.03 | FSW Build 1 | Phase C | % C | B | Maria | ISD-10 | 0-100 | 19190.25.430 |  | PH CD |  |  |  |  |  | D | End B |

| ID | WBS | Activity | Duration | Start | Finish | Predecessors | Complete | Planned start | Planned finish | Constraint | user_text6 | user_text8 | CA | WP/PP | Work Package Name | PHAS - Alice (Old) | BUDG - Budget Phase | SORT - Item Sort | PERT - Pert Select | JUICE Mission Phases | JUICE UVS Phases | EVT | NASA Phase | JUICE-UVS CAMs | OBS | P6 EVT | JUICE-UVS Charge #s | JUICE-UVS Phase CD | JUICE UVS Phase CD | M/S | user_text1 JUICE-UVS Risk ID | JUICE-UVS FM CP | Justify | Forecast Chg | JUICE-UVS Resources |
| --- | --- | --- | --- | --- | --- | --- | --- | --- | --- | --- | --- | --- | --- | --- | --- | --- | --- | --- | --- | --- | --- | --- | --- | --- | --- | --- | --- | --- | --- | --- | --- | --- | --- | --- | --- |
|  | 04 | **FSW Build 2 (EM)** |  | 2017-03-01 | 2017-10-11 |  |  |  |  |  |  |  |  |  |  |  |  |  |  |  |  |  |  |  |  |  |  |  |  |  |  |  |  |  |  |
| JUICE-UVS 592491 |  | S/W Build 2 Code (EM TM/TC) Phase 1 | 41d | 2017-03-01 A | 2017-04-26 A | JUICE-UVS594024 FF, JUICE-UVS 592422 | 100% |  |  |  | Phase B | MA | 05.04 | 05.04.04 | FSW Build 2 (EM) | 952 | B | S/W | Y | End B | Phase C | % C | B | Maria | ISD-10 | 50-50 | 19190.25.440 | PH CD |  |  |  |  |  |  |  |
| JUICE-UVS 592734 |  | SW Simulator Complete Functionality Phase 1 | 26d | 2017-03-01 A | 2017-04-05 A | JUICE-UVS 592491 SS | 100% |  |  |  |  | MA | 05.04 | 05.04.04 | FSW Build 2 (EM) |  |  |  |  |  | Phase C | % C |  | Maria | ISD-10 | 50-50 | 19190.25.440 | PH CD |  |  |  |  |  |  |  |
| JUICE-UVS 593376 |  | SW Simulator Complete Functionality Phase 2 | 25d | 2017-04-05 A | 2017-05-09 A | JUICE-UVS 592734 | 100% |  |  |  |  | MA | 05.04 | 05.04.04 | FSW Build 2 (EM) |  |  |  |  |  | Phase C | % C |  | Maria | ISD-10 | 50-50 | 19190.25.440 | PH CD |  |  |  |  |  |  |  |
| JUICE-UVS 20214 |  | S/W Build 2 Code (EM TM/TC) Phase 2 | 55d | 2017-04-26 A | 2017-07-14 A | JUICE-UVS 592491 | 100% |  |  |  | Phase B | MA | 05.04 | 05.04.04 | FSW Build 2 (EM) | 952 | B | S/W | Y | End B | Phase C | % C | B | Maria | ISD-10 | 50-50 | 19190.25.440 | PH CD |  |  |  |  |  |  |  |
| JUICE-UVS 20211 |  | S/W Build 2 Test (EM TM/TC) | 100d | 2017-05-17 A | 2017-10-10 A | JUICE-UVS 20214 FF, JUICE-UVS 593376 FF, JUICE-UVS594027 | 100% |  |  |  | Phase B | MA | 05.04 | 05.04.04 | FSW Build 2 (EM) | 952 | B | S/W | Y | End B | Phase C | % C | B | Maria | ISD-10 | 50-50 | 19190.25.440 | PH CD |  |  |  |  |  |  |  |
| JUICE-UVS 20217 |  | Build 2 Version Description Document (VDD) | 4.5d | 2017-10-04 A | 2017-10-10 A | JUICE-UVS 20211 FF | 100% |  |  |  |  | MA | 05.04 | 05.04.04 | FSW Build 2 (EM) |  | B | S/W |  | End B | Phase C | % C | C | Maria | ISD-10 | 0-100 | 19190.25.440 | PH CD | PH CD |  |  |  |  |  |  |
| JUICE-UVS 20223 |  | Build 2 SW Delivery | 0d | 2017-10-11 A | 2017-10-11 A | JUICE-UVS 20211, JUICE-UVS 20217 | 100% |  |  |  |  | MA | 05.04 | 05.04.04 | FSW Build 2 (EM) |  |  |  |  | End B | Phase C | % C | B | Maria | ISD-10 | 0-100 | 19190.25.440 | PH CD |  | D |  |  |  |  |  |
|  | 05 | **FSW Build 3 (EM)** |  | 2017-10-11 | 2019-09-30 |  |  |  |  |  |  |  |  |  |  |  |  |  |  |  |  |  |  |  |  |  |  |  |  |  |  |  |  |  |  |
| JUICE-UVS 3424 |  | S/W Build 3 Code (Full EM Integration) Phase 1 | 52d | 2017-10-11 A | 2017-12-27 A | JUICE-UVS 20223 FF, JUICE-UVS 20211 | 100% |  |  |  | Phase B | MA | 05.04 | 05.04.05 | FSW Build 3 (EM) | 953 | C/D | S/W | Y |  | Phase C | % C | B | Maria | ISD-10 | 50-50 | 19190.25.450 | PH CD |  |  | Risk ID 8, 29 |  |  |  |  |
| JUICE-UVS 3434 |  | S/W Build 3 Test (Full EM Integration) Phase 1 | 27d | 2017-12-19 A | 2018-01-29 A | JUICE-UVS594030, JUICE-UVS 592494 FF | 100% |  |  |  | Phase B | MA | 05.04 | 05.04.05 | FSW Build 3 (EM) | 953 | C/D | S/W | Y |  | Phase C | % C | C | Maria | ISD-10 | 50-50 | 19190.25.450 | PH CD | PH CD |  | Risk ID 8, 29 |  |  |  |  |
| JUICE-UVS 592494 |  | S/W Build 3 Code (Full EM Integration) Phase 2 | 101d | 2017-12-19 A | 2018-05-14 A | JUICE-UVS 3424, JUICE-UVS 10714 | 100% | 2017-12-19 | 2018-05-11 |  | Phase B | MA | 05.04 | 05.04.05 | FSW Build 3 (EM) | 953 | C/D | S/W | Y |  | Phase C | % C | B | Maria | ISD-10 | 50-50 | 19190.25.450 | PH CD |  |  | Risk ID 8, 29 | FM CP |  |  |  |
| JUICE-UVS 592497 |  | S/W Build 3 Test (Full EM Integration) Phase 2 | 107d | 2018-02-06 A | 2018-07-10 A | JUICE-UVS 3434 | 100% | 2018-02-06 | 2018-07-09 |  | Phase B | MA | 05.04 | 05.04.05 | FSW Build 3 (EM) | 953 | C/D | S/W | Y |  | Phase C | % C | C | Maria | ISD-10 | 50-50 | 19190.25.450 | PH CD | PH CD |  |  | FM CP |  |  |  |
| JUICE-UVS 3454 |  | ATP Dry Run on EM (Multiple Runs) Phase 1 | 28d | 2018-06-11 A | 2018-07-19 A | JUICE-UVS 592497 FF | 100% |  |  |  |  | MA | 05.04 | 05.04.05 | FSW Build 3 (EM) |  | C/D | S/W |  |  | Phase C | % C | C | Maria | ISD-10 | 50-50 | 19190.25.450 | PH CD | PH CD |  |  | FM CP | Activity Complete - Will remove constraint |  |  |
| JUICE-UVS 592500 |  | ATP Dry Run on EM (Multiple Runs) Phase 2 | 38d | 2018-07-20 A | 2018-09-13 A | JUICE-UVS 3454, JUICE-UVS 592473 FF, JUICE-UVS 10711 | 100% |  |  |  |  | MA | 05.04 | 05.04.05 | FSW Build 3 (EM) |  | C/D | S/W |  |  | Phase C | % C | C | Maria | ISD-10 | 50-50 | 19190.25.450 | PH CD | PH CD |  |  | FM CP |  |  |  |
| JUICE-UVS 3457 |  | ATP Run for Score on EM + Test Report | 41d | 2018-09-27 A | 2019-01-07 A | JUICE-UVS 592500 | 100% | 2018-09-27 | 2018-11-26 |  |  | MA | 05.04 | 05.04.05 | FSW Build 3 (EM) |  | C/D | S/W |  |  | Phase C | % C | C | Maria | ISD-10 | 0-100 | 19190.25.450 | PH CD | PH CD |  |  | FM CP |  |  |  |
| JUICE-UVS 592746 |  | Build 3 SW Delivery | 0.5d | 2019-01-08 A | 2019-01-08 A | JUICE-UVS 3457 | 100% |  |  |  |  | MA | 05.04 | 05.04.05 | FSW Build 3 (EM) |  |  |  |  |  | Phase C | % C |  | Maria | ISD-10 | 0-100 | 19190.25.450 | PH CD |  | D |  | FM CP |  |  |  |
| JUICE-UVS 3437 |  | FSW Design Document (As Build) Phase 1 | 43d | 2019-01-08 A | 2019-07-08 A | JUICE-UVS 592746 | 100% | 2019-01-08 | 2019-03-08 |  |  | MA | 05.04 | 05.04.05 | FSW Build 3 (EM) |  | B | S/W |  |  | Phase C | % C | C | Maria | ISD-10 | 50-50 | 19190.25.450 | PH CD |  |  |  | FM CP |  |  |  |
| JUICE-UVS 3493 |  | Build 3 Version Description Document (VDD) | 1.5d | 2019-09-03 A | 2019-09-03 A | JUICE-UVS 3457 | 100% | 2019-09-03 | 2019-09-04 | start on or after 2019-09-03 |  | MA | 05.04 | 05.04.05 | FSW Build 3 (EM) |  | B+ |  |  |  | Phase C | % C | C | Maria | ISD-10 | 0-100 | 19190.25.450 | PH CD | PH CD |  |  | FM CP |  |  |  |
| JUICE-UVS 592503 |  | FSW Design Document (As Build) Phase 2 | 10d | 2019-09-03 A | 2019-09-16 A | JUICE-UVS 3437 | 100% |  |  | start on or after 2019-09-03 |  | MA | 05.04 | 05.04.05 | FSW Build 3 (EM) |  | B | S/W |  |  | Phase C | % C | C | Maria | ISD-10 | 50-50 | 19190.25.450 | PH CD |  |  |  | FM CP |  |  |  |
| JUICE-UVS11520 |  | SW User Manual Phase 1 | 10d | 2019-09-03 A | 2019-09-16 A | JUICE-UVS 3496, JUICE-UVS 592746 | 100% |  |  | start on or after 2019-09-03 |  | MA | 05.04 | 05.04.05 | FSW Build 3 (EM) |  |  |  |  |  | Phase C | % C | C | Maria | ISD-10 | 50-50 | 19190.25.450 | PH CD | PH CD |  |  | FM CP |  |  |  |
| JUICE-UVS 593379 |  | SW User Manual Phase 2 | 1d | 2019-09-30 A | 2019-09-30 A | JUICE-UVS 2370 SS | 100% |  |  | start on or after 2019-09-30 |  | MA | 05.04 | 05.04.05 | FSW Build 3 (EM) |  |  |  |  |  | Phase C | % C | C | Maria | ISD-10 | 50-50 | 19190.25.450 | PH CD | PH CD |  |  | FM CP |  |  |  |
|  | 06 | **FSW Build 4 (FM)** |  | 2019-09-30 | 2019-10-17 |  |  |  |  |  |  |  |  |  |  |  |  |  |  |  |  |  |  |  |  |  |  |  |  |  |  |  |  |  |  |
| JUICE-UVS 3426 |  | S/W Build 4 Code (FM I&T PROMs) | 3d | 2019-09-30 A | 2019-10-02 A | JUICE-UVS 592746 | 100% |  |  | start on or after 2019-09-30 |  | MA | 05.04 | 05.04.06 | FSW Build 4 (FM) | 954 | C/D | S/W | Y |  | Phase C | % C | C | Maria | ISD-10 | 50-50 | 19190.25.460 | PH CD |  |  |  |  |  | Y |  |
| JUICE-UVS 3435 |  | S/W Build 4 Test (FM I&T PROMs) | 3d | 2019-10-03 A | 2019-10-07 A | JUICE-UVS 3426, JUICE-UVS 594228, JUICE-UVS 594225 | 100% |  |  |  |  | MA | 05.04 | 05.04.06 | FSW Build 4 (FM) |  | C/D | S/W | Y |  | Phase C | % C | C | Maria | ISD-10 | 50-50 | 19190.25.460 | PH CD |  |  |  |  |  | Y |  |
| JUICE-UVS 592398 |  | ATP Dry Run on EM & FM | 3d | 2019-10-08 A | 2019-10-10 A | JUICE-UVS 3435, JUICE-UVS 15709, JUICE-UVS 10717 | 100% |  |  |  |  | MA | 05.04 | 05.04.06 | FSW Build 4 (FM) |  | C/D | S/W |  |  | Phase C | % C | C | Maria | ISD-10 | 0-100 | 19190.25.460 | PH CD | PH CD |  |  |  |  | Y |  |
| JUICE-UVS 592401 |  | ATP Run for Score on FM + Test Report | 3d | 2019-10-14 A | 2019-10-16 A | JUICE-UVS 592398 FS+1d | 100% |  |  |  |  | MA | 05.04 | 05.04.06 | FSW Build 4 (FM) |  | C/D | S/W |  |  | Phase C | % C | C | Maria | ISD-10 | 0-100 | 19190.25.460 | PH CD | PH CD |  |  |  |  | Y |  |
| JUICE-UVS 3495 |  | Build 4 Version Description Document (VDD) | 1d | 2019-10-17 A | 2019-10-17 A | JUICE-UVS 592401 | 100% |  |  |  |  | MA | 05.04 | 05.04.06 | FSW Build 4 (FM) |  | C/D | S/W |  |  | Phase C | % C | C | Maria | ISD-10 | 0-100 | 19190.25.460 | PH CD |  |  |  |  | VDD not needed until Build 4 is done/needed | Y |  |
| JUICE-UVS 592749 |  | Build 4 SW Delivery | 0d | 2019-10-17 A | 2019-10-17 A | JUICE-UVS 592401 | 100% |  |  |  |  | MA | 05.04 | 05.04.06 | FSW Build 4 (FM) |  |  |  |  |  | Phase C | % C |  | Maria | ISD-10 | 0-100 | 19190.25.460 | PH CD |  | D |  |  |  | Y | 0Budget |

| ID | WBS | Activity | Type | Duration | Start | Finish | Predecessors | Complete | Planned start | Planned finish | user_text4 | user_text8 | CA | WP/PP | Work Package Name | JUICE UVS Phases | EVT | NASA Phase | JUICE-UVS CAMs | OBS | P6 EVT | JUICE-UVS Charge #s | JUICE-UVS FM CP | JUICE-UVS Phase CD | user_text1 JUICE-UVS Risk ID | BCR # | M/S | JUICE-UVS SVT | SVT | Justify | Forecast Chg |
| --- | --- | --- | --- | --- | --- | --- | --- | --- | --- | --- | --- | --- | --- | --- | --- | --- | --- | --- | --- | --- | --- | --- | --- | --- | --- | --- | --- | --- | --- | --- | --- |
|  | 07 | **GSW** |  |  | 2017-02-27 | 2019-04-26 |  |  |  |  |  |  |  |  |  |  |  |  |  |  |  |  |  |  |  |  |  |  |  |  |  |
| JUICE-UVS 592473 |  | Write Test Scripts (ATP on EM) Final |  | 342d | 2017-02-27 A | 2018-07-06 A | JUICE-UVS 592734 SS | 100% |  |  | Mod | MA | 05.04 | 05.04.07 | Test Scripts | Phase C | % C | C | Maria | ISD-10 | 50-50 | 19190.25.470 | FM CP | PH CD |  |  |  |  |  |  |  |
| JUICE-UVS 3496 |  | Update Test Scripts (ATP on FM) |  | 22d | 2018-10-26 A | 2019-04-26 A | JUICE-UVS 592473 | 100% | 2018-10-26 | 2018-11-28 |  | MA | 05.04 | 05.04.07 | Test Scripts | Phase C | % C | C | Maria | ISD-10 | 50-50 | 19190.25.470 | FM CP | PH CD |  |  |  |  |  |  |  |
|  | 08 | **TM/TC Database Definitions: SIS Usage & SC Operations** |  |  | 2017-03-10 | 2019-09-30 |  |  |  |  |  |  |  |  |  |  |  |  |  |  |  |  |  |  |  |  |  |  |  |  |  |
| JUICE-UVS593985 |  | Translate TM definitions into ESA-defined format |  | 21d | 2017-03-10 A | 2017-04-07 A | JUICE-UVS 592422 | 100% |  |  |  |  | 05.04 | 05.04.08 | TM/TC Database Definitions: SIS Usage & SC Operations | Phase C | % C |  | Maria | ISD-10 | 50-50 | 19190.25.471 |  | PH CD | Risk ID 23, 25 | 24 |  |  |  |  |  |
| JUICE-UVS593988 |  | Translate TC definitions into ESA-defined format |  | 21d | 2017-04-07 A | 2017-05-05 A | JUICE-UVS593985 | 100% |  |  |  |  | 05.04 | 05.04.08 | TM/TC Database Definitions: SIS Usage & SC Operations | Phase C | % C |  | Maria | ISD-10 | 50-50 | 19190.25.471 |  | PH CD | Risk ID 23, 25 | 24 |  |  |  |  |  |
| JUICE-UVS593991 |  | Incorporate all initial values, calibration parameters, etc into database |  | 10d | 2017-04-28 A | 2017-05-11 A | JUICE-UVS593988 | 100% |  |  |  |  | 05.04 | 05.04.08 | TM/TC Database Definitions: SIS Usage & SC Operations | Phase C | % C |  | Maria | ISD-10 | 0-100 | 19190.25.471 |  | PH CD | Risk ID 23, 25 | 24 |  |  |  |  |  |
| JUICE-UVS593994 |  | Database Verification with ESA-specified public-domain tool |  | 10d | 2017-05-12 A | 2017-05-25 A | JUICE-UVS593991 | 100% |  |  |  |  | 05.04 | 05.04.08 | TM/TC Database Definitions: SIS Usage & SC Operations | Phase C | % C |  | Maria | ISD-10 | 0-100 | 19190.25.471 |  | PH CD | Risk ID 23, 25 | 24 |  |  |  |  |  |
| JUICE-UVS593997 |  | Initial DB release for ESA/Airbus review | milestone | 0d | 2017-05-30 A | 2017-05-30 A | JUICE-UVS593994 | 100% |  |  |  |  | 05.04 | 05.04.08 | TM/TC Database Definitions: SIS Usage & SC Operations | Phase C | % C |  | Maria | ISD-10 | 0-100 | 19190.25.471 |  | PH CD | Risk ID 23, 25 | 24 | C |  |  |  |  |
| JUICE-UVS594000 |  | SVT Airbus Review |  | 10d | 2017-05-30 A | 2017-06-12 A | JUICE-UVS593997 | 100% |  |  |  |  | 05.04 | 05.04.08 | TM/TC Database Definitions: SIS Usage & SC Operations | Phase C | % C |  | Maria | ISD-10 | 0-100 | 19190.25.471 |  | PH CD | Risk ID 23, 25 | 24 |  | SVT | SVT |  |  |
| JUICE-UVS594003 |  | Incorporate feedback from Airbus/ESA |  | 15d | 2017-06-13 A | 2017-07-03 A | JUICE-UVS594000 | 100% |  |  |  |  | 05.04 | 05.04.08 | TM/TC Database Definitions: SIS Usage & SC Operations | Phase C | % C |  | Maria | ISD-10 | 50-50 | 19190.25.471 |  | PH CD | Risk ID 23, 25 | 24 |  |  |  |  |  |
| JUICE-UVS594009 |  | Test DB & Update database with FM Calibration Parameters |  | 24d | 2018-10-22 A | 2019-07-08 A | JUICE-UVS594003, JUICE-UVS 15709 | 100% | 2018-10-22 | 2018-11-26 |  |  | 05.04 | 05.04.08 | TM/TC Database Definitions: SIS Usage & SC Operations | Phase C | % C |  | Maria | ISD-10 | 0-100 | 19190.25.471 | FM CP | PH CD | Risk ID 23, 25 | 24 |  |  |  | Project Level Mandated Start Date |  |
| JUICE-UVS594012 |  | DB release for ESA/Airbus Review | milestone | 0d | 2019-07-08 A | 2019-07-08 A | JUICE-UVS594009 | 100% |  |  |  |  | 05.04 | 05.04.08 | TM/TC Database Definitions: SIS Usage & SC Operations | Phase C | % C |  | Maria | ISD-10 | 0-100 | 19190.25.471 | FM CP | PH CD | Risk ID 23, 25 | 24 | C |  |  |  |  |
| JUICE-UVS594015 |  | SVT Airbus Review |  | 10d | 2019-07-08 A | 2019-07-08 A | JUICE-UVS594012 | 100% | 2019-07-08 | 2019-07-19 |  |  | 05.04 | 05.04.08 | TM/TC Database Definitions: SIS Usage & SC Operations | Phase C | % C |  | Maria | ISD-10 | 0-100 | 19190.25.471 | FM CP | PH CD | Risk ID 23, 25 | 24 |  | SVT | SVT |  |  |
| JUICE-UVS594018 |  | Incorporate feedback from Airbus/ESA |  | 10d | 2019-07-22 A | 2019-09-30 A | JUICE-UVS594015 | 100% | 2019-07-22 | 2019-08-02 |  |  | 05.04 | 05.04.08 | TM/TC Database Definitions: SIS Usage & SC Operations | Phase C | % C |  | Maria | ISD-10 | 0-100 | 19190.25.471 | FM CP | PH CD | Risk ID 23, 25 | 24 |  |  |  |  | Y |
|  | 09 | **SpaceWire Updated** |  |  | 2017-03-28 | 2017-09-29 |  |  |  |  |  |  |  |  |  |  |  |  |  |  |  |  |  |  |  |  |  |  |  |  |  |
| JUICE-UVS594021 |  | Receive Updated FPGA spec incoporating SpW changes | milestone | 0d | 2017-03-28 A | 2017-03-28 A |  | 100% |  |  |  |  | 05.04 | 05.04.09 | SpaceWire Updated | Phase C | % C |  | Maria | ISD-10 | 0-100 | 19190.25.472 |  | PH CD | Risk ID 23 | 24 | R |  |  |  |  |
| JUICE-UVS594024 |  | FSW Update (including SDD update) |  | 18d | 2017-03-29 A | 2017-04-21 A | JUICE-UVS594021 | 100% |  |  |  |  | 05.04 | 05.04.09 | SpaceWire Updated | Phase C | % C |  | Maria | ISD-10 | 50-50 | 19190.25.472 |  | PH CD | Risk ID 23 | 24 |  |  |  |  |  |
| JUICE-UVS594027 |  | Simulator + ATP doc update: |  | 28d | 2017-03-29 A | 2017-05-05 A | JUICE-UVS594021 | 100% |  |  |  |  | 05.04 | 05.04.09 | SpaceWire Updated | Phase C | % C |  | Maria | ISD-10 | 50-50 | 19190.25.472 |  | PH CD | Risk ID 23 | 24 |  |  |  |  |  |
| JUICE-UVS594030 |  | GSE + test scripts updates: |  | 128d | 2017-03-29 A | 2017-09-29 A | JUICE-UVS594021 | 100% |  |  |  |  | 05.04 | 05.04.09 | SpaceWire Updated | Phase C | % C |  | Maria | ISD-10 | 50-50 | 19190.25.472 |  | PH CD | Risk ID 23 | 24 |  |  |  |  |  |
|  | 10 | **EM GSE SW** |  |  | 2017-03-06 | 2017-11-22 |  |  |  |  |  |  |  |  |  |  |  |  |  |  |  |  |  |  |  |  |  |  |  |  |  |
| JUICE-UVS 10699 |  | GSE Countrate Screen |  | 13d | 2017-03-06 A | 2017-03-22 A | JUICE-UVS 592422 | 100% |  |  |  |  | 05.04 | 05.04.10 | GSE SW | Phase C | % C |  | Maria | ISD-10 | 50-50 | 19190.25.473 |  | PH CD |  |  |  |  |  |  |  |
| JUICE-UVS 10702 |  | GSE Science Packet Decode-Histogram Reassembly |  | 11d | 2017-03-23 A | 2017-04-06 A | JUICE-UVS 10699 | 100% |  |  |  |  | 05.04 | 05.04.10 | GSE SW | Phase C | % C |  | Maria | ISD-10 | 50-50 | 19190.25.473 |  | PH CD |  |  |  |  |  |  |  |
| JUICE-UVS 10705 |  | GSE Science Packet Decode-Pixellist Reassembly |  | 11d | 2017-03-23 A | 2017-04-06 A | JUICE-UVS 10699 | 100% |  |  |  |  | 05.04 | 05.04.10 | GSE SW | Phase C | % C |  | Maria | ISD-10 | 50-50 | 19190.25.473 |  | PH CD |  |  |  |  |  |  |  |
| JUICE-UVS 10708 |  | GSE TM Check |  | 63d | 2017-04-07 A | 2017-07-07 A | JUICE-UVS 10705, JUICE-UVS 10702 | 100% |  |  |  |  | 05.04 | 05.04.10 | GSE SW | Phase C | % C |  | Maria | ISD-10 | 0-100 | 19190.25.473 |  | PH CD |  |  |  |  |  |  |  |
| JUICE-UVS 10711 |  | GSE Science Packet Decode-Histogram Presentation |  | 159d | 2017-04-07 A | 2017-11-22 A | JUICE-UVS 10708 SS, JUICE-UVS 10702 | 100% |  |  |  |  | 05.04 | 05.04.10 | GSE SW | Phase C | % C |  | Maria | ISD-10 | 50-50 | 19190.25.473 |  | PH CD |  |  |  |  |  |  |  |
| JUICE-UVS 10717 |  | GSE Bug fixes (Ongoing) |  | 124d | 2017-05-30 A | 2017-11-22 A | JUICE-UVS 10699 SS | 100% |  |  |  |  | 05.04 | 05.04.10 | GSE SW | Phase C | % C |  | Maria | ISD-10 | 50-50 | 19190.25.473 |  | PH CD |  |  |  |  |  |  |  |
| JUICE-UVS 10714 |  | GSE Science Packet Decode-Pixellist Presentation |  | 19d | 2017-06-26 A | 2017-07-21 A | JUICE-UVS 10705 | 100% |  |  |  |  | 05.04 | 05.04.10 | GSE SW | Phase C | % C |  | Maria | ISD-10 | 50-50 | 19190.25.473 |  | PH CD |  |  |  |  |  |  |  |

| ID | WBS | Activity | Duration | Start | Finish | Predecessors | Complete | Planned start | Planned finish | CA | WP/PP | Work Package Name | Justify | JUICE UVS Phases | EVT | JUICE-UVS CAMs | OBS | P6 EVT | JUICE-UVS Charge #s | LOE | Forecast Chg | JUICE-UVS FM CP | JUICE-UVS EM CP | user_text6 | user_text8 | PHAS - Alice (Old) | BUDG - Budget Phase | SORT - Item Sort | PERT - Pert Select | JUICE-UVS Summary Milestones | NASA Phase | JUICE-UVS Phase CD | user_text2 | BCR # |
| --- | --- | --- | --- | --- | --- | --- | --- | --- | --- | --- | --- | --- | --- | --- | --- | --- | --- | --- | --- | --- | --- | --- | --- | --- | --- | --- | --- | --- | --- | --- | --- | --- | --- | --- |
|  | 11 | **SW Bug Fixes** |  | 2017-11-30 | 2019-09-27 |  |  |  |  |  |  |  |  |  |  |  |  |  |  |  |  |  |  |  |  |  |  |  |  |  |  |  |  |  |
| JUICE-UVS594216 |  | SW Bug Fixes | 248d | 2017-11-30 A | 2019-09-27 A | JUICE-UVS 3411 | 100% | 2017-11-30 | 2018-11-26 | 05.04 | 05.04.11 | GSE Bug Fixes | Activity has started | Phase C | LOE | Maria | ISD-10 | LOE | 19190.25.474 | LOE | Y | FM CP |  |  |  |  |  |  |  |  |  |  |  |  |
|  | 12 | **SIS Testing** |  | 2018-04-30 | 2018-09-20 |  |  |  |  |  |  |  |  |  |  |  |  |  |  |  |  |  |  |  |  |  |  |  |  |  |  |  |  |  |
| JUICE-UVS 594219 |  | SIS Database Updates | 83d | 2018-04-30 A | 2018-08-28 A | JUICE-UVS 060 | 100% | 2018-04-30 | 2018-08-27 | 05.04 | 05.04.12 | SIS Testing | Activity has started | Phase C | % C | Maria | ISD-10 | % C | 19190.25.475 |  |  |  |  |  |  |  |  |  |  |  |  |  |  |  |
| JUICE-UVS 594222 |  | SIS Power-up Test with UVS | 33d | 2018-04-30 A | 2018-05-18 A | JUICE-UVS 060 | 100% | 2018-04-30 | 2018-06-15 | 05.04 | 05.04.12 | SIS Testing |  | Phase C | % C | Maria | ISD-10 | % C | 19190.25.475 |  |  |  |  |  |  |  |  |  |  |  |  |  |  |  |
| JUICE-UVS 594225 |  | SIS PUS-Services Scripts | 83d | 2018-05-22 A | 2018-09-20 A | JUICE-UVS 060 | 100% |  |  | 05.04 | 05.04.12 | SIS Testing | Activity has started | Phase C | % C | Maria | ISD-10 | % C | 19190.25.475 |  |  |  | EM CP |  |  |  |  |  |  |  |  |  |  |  |
| JUICE-UVS 594228 |  | FFT/AFT Test Plan | 99d | 2018-09-04 A | 2018-09-20 A | JUICE-UVS 060 | 100% | 2018-04-30 | 2018-09-20 | 05.04 | 05.04.12 | SIS Testing | Activity has started | Phase C | % C | Maria | ISD-10 | % C | 19190.25.475 |  |  |  |  |  |  |  |  |  |  |  |  |  |  |  |
|  | 05 | **I&T** |  | 2016-10-03 | 2020-01-10 |  |  |  |  |  |  |  |  |  |  |  |  |  |  |  |  |  |  |  |  |  |  |  |  |  |  |  |  |  |
|  | 01 | **EM AI&T** |  | 2017-01-30 | 2019-12-27 |  |  |  |  |  |  |  |  |  |  |  |  |  |  |  |  |  |  |  |  |  |  |  |  |  |  |  |  |  |
|  | 01 | **EM Integration** |  | 2017-01-30 | 2018-02-02 |  |  |  |  |  |  |  |  |  |  |  |  |  |  |  |  |  |  |  |  |  |  |  |  |  |  |  |  |  |
|  | 01 | **EM #1 Integration** |  | 2017-01-30 | 2017-12-27 |  |  |  |  |  |  |  |  |  |  |  |  |  |  |  |  |  |  |  |  |  |  |  |  |  |  |  |  |  |
| JUICE-UVS 4022 |  | EM #1 Assembly | 98d | 2017-01-30 A | 2017-06-16 A | JUICE-UVS 31268 FF, JUICE-UVS 592065 FF, JUICE-UVS 592056 FF | 100% |  |  | 05.05 | 05.05.01.01.01 | EM 1 Integration |  | Phase C | % C | Kris | DSE | 50-50 | 19190.25.500 |  |  |  |  | Phase B | KP | 551 | B | I&T | Y | Summary | C | PH CD |  |  |
| JUICE-UVS 4024 |  | EM #1 Checkout | 7d | 2017-06-30 A | 2017-08-11 A | JUICE-UVS 592413, JUICE-UVS 3143 FF, JUICE-UVS593967, JUICE-UVS 592584 FF, JUICE-UVS 4022 | 100% | 2017-06-30 | 2017-07-11 | 05.05 | 05.05.01.01.01 | EM 1 Integration |  | Phase C | % C | Kris | DSE | 50-50 | 19190.25.500 |  |  |  |  | Phase B | KP | 551 | B | I&T | Y |  | C | PH CD |  |  |
| JUICE-UVS 4029 |  | EM #1 Final Housing Closeout | 92d | 2017-08-21 A | 2017-12-27 A | JUICE-UVS 4024 | 100% | 2017-08-14 | 2017-12-27 | 05.05 | 05.05.01.01.01 | EM 1 Integration |  | Phase C | % C | Kris | DSE | 0-100 | 19190.25.500 |  |  |  |  |  | KP |  |  |  |  |  | C | PH CD |  |  |
|  | 02 | **EM #2 Integration** |  | 2017-07-17 | 2018-02-02 |  |  |  |  |  |  |  |  |  |  |  |  |  |  |  |  |  |  |  |  |  |  |  |  |  |  |  |  |  |
| JUICE-UVS 4051 |  | EM #2 Assembly | 15d | 2017-07-17 A | 2017-08-04 A | JUICE-UVS 591876, JUICE-UVS 591780 SS, JUICE-UVS 591921, JUICE-UVS 591897 SS, JUICE-UVS 591810 | 100% |  |  | 05.05 | 05.05.01.01.02 | EM 2 Integration |  | Phase C | % C | Kris | DSE | 50-50 | 19190.25.501 |  |  |  |  |  | KP |  | B | I&T |  |  | C | PH CD | DS1 |  |
| JUICE-UVS 4074 |  | EM 2 Optics Assy | 77d | 2017-09-28 A | 2018-01-15 A | JUICE-UVS 4051 | 100% | 2017-09-28 | 2018-01-19 | 05.05 | 05.05.01.01.02 | EM 2 Integration | Mandated Start Date to wait for CDR | Phase C | % C | Kris | DSE | 50-50 | 19190.25.501 |  |  |  |  |  | MD |  |  |  |  |  | C | PH CD | DS1 |  |
| JUICE-UVS 4054 |  | EM #2 Checkout | 15d | 2018-01-16 A | 2018-01-29 A | JUICE-UVS 4074 | 100% | 2018-01-16 | 2018-02-05 | 05.05 | 05.05.01.01.02 | EM 2 Integration |  | Phase C | % C | Kris | DSE | 50-50 | 19190.25.501 |  |  |  |  | Phase B | KP | 551 | C/D | I&T | N |  | C | PH CD | DS1 |  |
| JUICE-UVS 4056 |  | EM # 2 Final Housing Closeout | 3d | 2018-01-30 A | 2018-02-02 A | JUICE-UVS 4054 | 100% | 2018-01-30 | 2018-02-01 | 05.05 | 05.05.01.01.02 | EM 2 Integration |  | Phase C | % C | Kris | DSE | 0-100 | 19190.25.501 |  |  |  |  | Phase B | KP | 551 | C/D | I&T | N |  | C | PH CD | DS1 |  |
|  | 02 | **Deleted Per BCR 35** |  |  |  |  |  |  |  |  |  |  |  |  |  |  |  |  |  |  |  |  |  |  |  |  |  |  |  |  |  |  |  |  |
|  | 01 | **Deleted Per BCR 34 (EM 1 Funct Test)** |  |  |  |  |  |  |  |  |  |  |  |  |  |  |  |  |  |  |  |  |  |  |  |  |  |  |  |  |  |  |  |  |
|  | 01 | **Deleted Per BCR 34** |  |  |  |  |  |  |  |  |  |  |  |  |  |  |  |  |  |  |  |  |  |  |  |  |  |  |  |  |  |  |  |  |
|  | 02 | **Deleted Per BCR 34-1** |  |  |  |  |  |  |  |  |  |  |  |  |  |  |  |  |  |  |  |  |  |  |  |  |  |  |  |  |  |  |  |  |
|  | 01 | **Deleted Per BCR 34** |  |  |  |  |  |  |  |  |  |  |  |  |  |  |  |  |  |  |  |  |  |  |  |  |  |  |  |  |  |  |  |  |
|  | 02 | **Deleted Per BCR 34-1** |  |  |  |  |  |  |  |  |  |  |  |  |  |  |  |  |  |  |  |  |  |  |  |  |  |  |  |  |  |  |  |  |
|  | 03 | **Deleted Per BCR 34-2** |  |  |  |  |  |  |  |  |  |  |  |  |  |  |  |  |  |  |  |  |  |  |  |  |  |  |  |  |  |  |  |  |
|  | 02 | **Deleted Per BCE 34** |  |  |  |  |  |  |  |  |  |  |  |  |  |  |  |  |  |  |  |  |  |  |  |  |  |  |  |  |  |  |  |  |
|  | 01 | **Deleted Per BCR 34-1** |  |  |  |  |  |  |  |  |  |  |  |  |  |  |  |  |  |  |  |  |  |  |  |  |  |  |  |  |  |  |  |  |
|  | 02 | **Deleted Per BCR 34-2** |  |  |  |  |  |  |  |  |  |  |  |  |  |  |  |  |  |  |  |  |  |  |  |  |  |  |  |  |  |  |  |  |
|  | 01 | **Deleted Per BCR 34** |  |  |  |  |  |  |  |  |  |  |  |  |  |  |  |  |  |  |  |  |  |  |  |  |  |  |  |  |  |  |  |  |
|  | 02 | **Deleted Per BCR 34-1** |  |  |  |  |  |  |  |  |  |  |  |  |  |  |  |  |  |  |  |  |  |  |  |  |  |  |  |  |  |  |  |  |
|  | 03 | **Deleted Per BCR 34** |  |  |  |  |  |  |  |  |  |  |  |  |  |  |  |  |  |  |  |  |  |  |  |  |  |  |  |  |  |  |  |  |
|  | 03 | **Deleted Per BCR 34** |  |  |  |  |  |  |  |  |  |  |  |  |  |  |  |  |  |  |  |  |  |  |  |  |  |  |  |  |  |  |  |  |
|  | 04 | **EM Environmental Test** |  | 2017-08-07 | 2019-12-27 |  |  |  |  |  |  |  |  |  |  |  |  |  |  |  |  |  |  |  |  |  |  |  |  |  |  |  |  |  |
|  | 01 | **EM I&T Management** |  | 2017-08-07 | 2018-09-28 |  |  |  |  |  |  |  |  |  |  |  |  |  |  |  |  |  |  |  |  |  |  |  |  |  |  |  |  |  |
| JUICE-UVS594053 |  | EM I&T Manangement FY 17 | 38d | 2017-08-07 A | 2017-09-29 A | JUICE-UVS 0011 | 100% |  |  | 05.05 | 05.05.01.04.01 | EM I&T Management | Started on this date recently for BCR |  | LOE | Kris | DSE | LOE | 19190.25.502 | LOE |  |  |  |  |  |  |  |  |  |  |  |  |  | BCR 34 |
| JUICE-UVS594168 |  | EM I&T Manangement FY 18 | 250d | 2017-10-02 A | 2018-09-28 A | JUICE-UVS594053 | 100% |  |  | 05.05 | 05.05.01.04.01 | EM I&T Management |  |  | LOE | Kris | DSE | LOE | 19190.25.502 | LOE |  |  |  |  |  |  |  |  |  |  |  |  |  | BCR 34 |

Notes:
- JUICE-UVS 594219: Steps: Update to Curent UVS Software (done); Misc Fixes per ESA Feedback (done); Verification Entry (done)
- JUICE-UVS 594222: Steps: Connect UVS to the SIS & Verify TM (done); Adapt Power-On Example to UVS (done); Run Power-On Example Successfully (done)
- JUICE-UVS 594225: Steps: Learning .tcl/Running Scripts on SIS (done); Scripts Draft & Run (done); Final EM Service PUS Script Data Package (done)
- JUICE-UVS 594228: Steps: Phase 1 (done); Phase 2 (done); Phase 3 (done); Phase 4 (done)

| ID | WBS | Activity | Duration | Start | Finish | Predecessors | Complete | Planned start | Planned finish | CA | WP/PP | BCR # | Work Package Name | Justify | EVT | JUICE-UVS CAMs | OBS | P6 EVT | JUICE-UVS Charge #s | user_text1 JUICE-UVS Risk ID | JUICE-UVS EM CP |
| --- | --- | --- | --- | --- | --- | --- | --- | --- | --- | --- | --- | --- | --- | --- | --- | --- | --- | --- | --- | --- | --- |
|  | 02 | **EM1 Environmental Test** |  | 2017-09-18 | 2019-12-10 |  |  |  |  |  |  |  |  |  |  |  |  |  |  |  |  |
|  | 01 | **EM1 Functional Test** |  | 2017-09-18 | 2017-09-21 |  |  |  |  |  |  |  |  |  |  |  |  |  |  |  |  |
| JUICE-UVS594063 |  | Top Assy Close-out | 1d | 2017-09-18 A | 2017-09-18 A | JUICE-UVS 4029 | 100% |  |  | 05.05 | 05.05.01.04.02.01 | BCR 34 | EM1 Functional Test | Awaiting FPGA/SW closeout & to align with EMI Test | % C | Kris | DSE | 0-100 | 19190.25.503 |  |  |
| JUICE-UVS594057 |  | Baseline Func Test | 3d | 2017-09-19 A | 2017-09-21 A | JUICE-UVS 11499, JUICE-UVS594063 | 100% |  |  | 05.05 | 05.05.01.04.02.01 | BCR 34 | EM1 Functional Test | Awaiting FPGA/SW closeout & to align with EMI Test | % C | Kris | DSE | 0-100 | 19190.25.503 |  |  |
|  | 02 | **EM1 EMI/EMC Test** |  | 2017-09-25 | 2018-09-28 |  |  |  |  |  |  |  |  |  |  |  |  |  |  |  |  |
|  | 01 | **EM1 EMI/EMC Test - Full Configuration** |  | 2017-09-25 | 2018-03-16 |  |  |  |  |  |  |  |  |  |  |  |  |  |  |  |  |
| JUICE-UVS594066 |  | Grounding /Bonding Isolation Test | 1d | 2017-09-25 A | 2017-09-25 A | JUICE-UVS593991, JUICE-UVS594057 | 100% |  |  | 05.05 | 05.05.01.04.02.02.01 | BCR 34 | EM1 EMI/EMC Test-Full Configuration |  | % C | Kris | DSE | 0-100 | 19190.25.504 |  |  |
| JUICE-UVS594069 |  | EM EMI/EMC Testing | 19d | 2017-09-26 A | 2017-10-20 A | JUICE-UVS594066 | 100% |  |  | 05.05 | 05.05.01.04.02.02.01 | BCR 34 | EM1 EMI/EMC Test-Full Configuration |  | % C | Kris | DSE | 50-50 | 19190.25.504 | Risk ID 8 |  |
| JUICE-UVS594078 |  | Conduct EM UVS Magnetics Test | 5d | 2017-10-23 A | 2017-10-27 A | JUICE-UVS594069 | 100% |  |  | 05.05 | 05.05.01.04.02.02.01 | BCR 34 | EM1 EMI/EMC Test-Full Configuration |  | % C | Kris | DSE | 50-50 | 19190.25.504 |  |  |
| JUICE-UVS594081 |  | Collect Mag Test Data | 5d | 2017-10-30 A | 2017-11-03 A | JUICE-UVS594078 | 100% |  |  | 05.05 | 05.05.01.04.02.02.01 | BCR 34 | EM1 EMI/EMC Test-Full Configuration |  | % C | Kris | DSE | 50-50 | 19190.25.504 |  |  |
| JUICE-UVS594084 |  | Closeout As-Run Mag Test Proc/Report | 4d | 2017-11-13 A | 2017-11-16 A | JUICE-UVS594081 | 100% |  |  | 05.05 | 05.05.01.04.02.02.01 | BCR 34 | EM1 EMI/EMC Test-Full Configuration |  | % C | Kris | DSE | 50-50 | 19190.25.504 |  |  |
| JUICE-UVS594072 |  | Additional EMI/EMC Susceptibility | 5d | 2017-12-04 A | 2017-12-04 A | JUICE-UVS594078 | 100% | 2017-12-04 | 2017-12-08 | 05.05 | 05.05.01.04.02.02.01 | BCR 34 | EM1 EMI/EMC Test-Full Configuration | Project level Mandatory Finish Date | % C | Kris | DSE | 50-50 | 19190.25.504 |  |  |
| JUICE-UVS594087 |  | FSW LD Test | 5d | 2017-12-11 A | 2017-12-11 A | JUICE-UVS594072 | 100% | 2017-12-11 | 2017-12-15 | 05.05 | 05.05.01.04.02.02.01 | BCR 34 | EM1 EMI/EMC Test-Full Configuration |  | % C | Kris | DSE | 50-50 | 19190.25.504 |  |  |
| JUICE-UVS594075 |  | EMI/EMC Test Report | 53d | 2018-01-03 A | 2018-03-16 A | JUICE-UVS594084, JUICE-UVS594090 FF | 100% |  |  | 05.05 | 05.05.01.04.02.02.01 | BCR 34 | EM1 EMI/EMC Test-Full Configuration |  | % C | Kris | DSE | 50-50 | 19190.25.504 |  |  |
| JUICE-UVS594090 |  | EM UVS Post EMI Full Functional Test | 16d | 2018-01-15 A | 2018-03-05 A | JUICE-UVS594087 | 100% | 2018-01-15 | 2018-02-05 | 05.05 | 05.05.01.04.02.02.01 | BCR 34 | EM1 EMI/EMC Test-Full Configuration |  | % C | Kris | DSE | 0-100 | 19190.25.504 |  |  |
|  | 02 | **EM1 Reconfiguration & Test for ESA** |  | 2018-03-08 | 2018-09-28 |  |  |  |  |  |  |  |  |  |  |  |  |  |  |  |  |
| JUICE-UVS594093 |  | Reconfigure EM 1 | 5d | 2018-03-08 A | 2018-03-14 A | JUICE-UVS 20223, JUICE-UVS594090 | 100% |  |  | 05.05 | 05.05.01.04.02.02.02 | BCR 34 | EM1 Reconfiguration & Test for ESA |  | % C | Kris | DSE | 50-50 | 19190.25.505 |  |  |
| JUICE-UVS594096 |  | Full Functional Test | 74d | 2018-03-15 A | 2018-06-28 A | JUICE-UVS594093 | 100% |  |  | 05.05 | 05.05.01.04.02.02.02 | BCR 34 | EM1 Reconfiguration & Test for ESA |  | % C | Kris | DSE | 50-50 | 19190.25.505 |  | EM CP |
| JUICE-UVS594099 |  | EMI Test - CE/RE Only | 12d | 2018-06-29 A | 2018-07-17 A | JUICE-UVS594096 | 100% |  |  | 05.05 | 05.05.01.04.02.02.02 | BCR 34 | EM1 Reconfiguration & Test for ESA |  | % C | Kris | DSE | 50-50 | 19190.25.505 |  | EM CP |
| JUICE-UVS594102 |  | Full Functional Test | 1d | 2018-07-18 A | 2018-07-18 A | JUICE-UVS594099 | 100% |  |  | 05.05 | 05.05.01.04.02.02.02 | BCR 34 | EM1 Reconfiguration & Test for ESA |  | % C | Kris | DSE | 0-100 | 19190.25.505 |  | EM CP |
| JUICE-UVS594114 |  | EM1 FSW, SIS, Scripts Unit level testing | 20d | 2018-08-06 A | 2018-09-04 A | JUICE-UVS 3434, JUICE-UVS594075, JUICE-UVS594120 | 100% |  |  | 05.05 | 05.05.01.04.02.02.02 | BCR 34 | EM1 Reconfiguration & Test for ESA |  | % C | Kris | DSE | % C | 19190.25.505 |  | EM CP |
| JUICE-UVS594105 |  | Inspection & Physical Properties | 1d | 2018-09-05 A | 2018-09-28 A | JUICE-UVS594114 | 100% | 2018-09-05 | 2018-09-05 | 05.05 | 05.05.01.04.02.02.02 | BCR 34 | EM1 Reconfiguration & Test for ESA | Project Level Mandated Start Date | % C | Kris | DSE | 0-100 | 19190.25.505 |  | EM CP |
| JUICE-UVS594108 |  | Baseline Functional Test (3x Voltages) | 3d | 2018-09-06 A | 2018-09-07 A | JUICE-UVS594105 | 100% | 2018-09-06 | 2018-09-10 | 05.05 | 05.05.01.04.02.02.02 | BCR 34 | EM1 Reconfiguration & Test for ESA |  | % C | Kris | DSE | 50-50 | 19190.25.505 |  | EM CP |
| JUICE-UVS594111 |  | Test Results Closeout Review | 1d | 2018-09-11 A | 2018-09-11 A | JUICE-UVS594075, JUICE-UVS594108 | 100% |  |  | 05.05 | 05.05.01.04.02.02.02 | BCR 34 | EM1 Reconfiguration & Test for ESA |  | % C | Kris | DSE | 50-50 | 19190.25.505 |  | EM CP |

Notes:
- JUICE-UVS594114: Steps: FSW, SIS, Scripts Unit level test Preps (done); EM1 FSW Scripts Unit level testing (done); EM1 SIS Scripts Unit level testing (done); EM1 FSW-SIS I/F Scripts Unit level testing (done); Review EM1 Scripts Unit level testing results

| ID | WBS | Activity | Duration | Start | Finish | Predecessors | Complete | Remaining | Planned start | Planned finish | Total float | Free float | Constraint | Expected finish | CA | WP/PP | BCR # | Work Package Name | EVT | JUICE-UVS CAMs | OBS | P6 EVT | JUICE-UVS Charge #s | JUICE-UVS EM CP | JUICE-UVS SVT | user_text1 JUICE-UVS Risk ID | Sch Margin | Justify | Forecast Chg |
| --- | --- | --- | --- | --- | --- | --- | --- | --- | --- | --- | --- | --- | --- | --- | --- | --- | --- | --- | --- | --- | --- | --- | --- | --- | --- | --- | --- | --- | --- |
|  | 03 | **Prepare EM1 Data Package** |  | 2018-08-06 | 2018-09-19 |  |  |  |  |  |  |  |  |  |  |  |  |  |  |  |  |  |  |  |  |  |  |  |  |
| JUICE-UVS594117 |  | Acceptance Data Package Prep | 9d | 2018-08-06 A | 2018-08-16 A | JUICE-UVS594102 | 100% |  |  |  |  |  |  |  | 05.05 | 05.05.01.04.02.03 | BCR 34 | Prepare EM1 Data Package | % C | Kris | DSE | 50-50 | 19190.25.506 | EM CP |  |  |  |  |  |
| JUICE-UVS594123 |  | SVT ADP Review | 0d | 2018-08-06 A | 2018-08-06 A | JUICE-UVS594120 | 100% |  |  |  |  |  |  |  | 05.05 | 05.05.01.04.02.03 | BCR 34 | Prepare EM1 Data Package | % C | Kris | DSE | 50-50 | 19190.25.506 | EM CP | SVT |  |  |  |  |
| JUICE-UVS594120 |  | Submit ADP to ESA | 1d | 2018-08-17 A | 2018-08-17 A | JUICE-UVS594117 | 100% |  |  |  |  |  |  |  | 05.05 | 05.05.01.04.02.03 | BCR 34 | Prepare EM1 Data Package | % C | Kris | DSE | 0-100 | 19190.25.506 | EM CP |  |  |  |  |  |
| JUICE-UVS594126 |  | EM Delivery Review | 1d | 2018-09-12 A | 2018-09-12 A | JUICE-UVS594123, JUICE-UVS594111 | 100% |  |  |  |  |  |  |  | 05.05 | 05.05.01.04.02.03 | BCR 34 | Prepare EM1 Data Package | % C | Kris | DSE | 0-100 | 19190.25.506 | EM CP |  |  |  |  |  |
| JUICE-UVS594129 |  | Respond to RIDS | 5d | 2018-09-13 A | 2018-09-19 A | JUICE-UVS594126 | 100% |  |  |  |  |  |  |  | 05.05 | 05.05.01.04.02.03 | BCR 34 | Prepare EM1 Data Package | % C | Kris | DSE | 50-50 | 19190.25.506 | EM CP |  | Risk ID 27 |  |  |  |
| JUICE-UVS594132 |  | Schedule Margin | 0d | 2018-09-13 A | 2018-09-13 A | JUICE-UVS 594219, JUICE-UVS 594222, JUICE-UVS594126 | 100% |  |  |  |  |  |  |  | 05.05 | 05.05.01.04.02.03 | BCR 27, 34 | Prepare EM1 Data Package | % C | Kris | DSE | % C | 19190.25.506 | EM CP |  |  | Y |  |  |
|  | 04 | **EM1 Delivery** |  | 2018-09-13 | 2018-09-28 |  |  |  |  |  |  |  |  |  |  |  |  |  |  |  |  |  |  |  |  |  |  |  |  |
| JUICE-UVS594135 |  | Package, Ship Preparations, TSA Inspection prior to Boxing | 1d | 2018-09-13 A | 2018-09-13 A | JUICE-UVS594132 | 100% |  |  |  |  |  |  |  | 05.05 | 05.05.01.04.02.04 | BCR 34 | EM1 Delivery | % C | Kris | DSE | 0-100 | 19190.25.507 | EM CP |  |  |  |  |  |
| JUICE-UVS594138 |  | Hand carry to ESA | 2d | 2018-09-14 A | 2018-09-17 A | JUICE-UVS594135 | 100% |  |  |  |  |  |  |  | 05.05 | 05.05.01.04.02.04 | BCR 34 | EM1 Delivery | % C | Kris | DSE | 0-100 | 19190.25.507 | EM CP |  |  |  | Project level Mandatory Finish Date |  |
| JUICE-UVS594141 |  | Field Support | 5d | 2018-09-27 A | 2018-09-28 A | JUICE-UVS 098, JUICE-UVS594129 | 100% |  | 2018-09-27 | 2018-10-03 |  |  |  |  | 05.05 | 05.05.01.04.02.04 | BCR 34 | EM1 Delivery | % C | Kris | DSE | 0-100 | 19190.25.507 |  |  |  |  |  |  |
|  | 05 | **EM/FM I&T Anomaly Resolution** |  | 2017-11-27 | 2019-12-10 |  |  |  |  |  |  |  |  |  |  |  |  |  |  |  |  |  |  |  |  |  |  |  |  |
| JUICE-UVS594213 |  | EM/FM I&T Anomaly Resolution | 251d | 2017-11-27 A | 2019-12-10 | JUICE-UVS594053 | 96% | 11d | 2017-11-27 | 2018-11-26 | 21d | 0d |  | 2019-12-10 | 05.05 | 05.05.01.04.02.05 |  | EM I&T Anomaly Resolution | LOE | Kris | DSE | LOE | 19190.25.510 |  |  |  |  | Activity has started | Y |
|  | 03 | **EM2 Final Integration** |  | 2018-02-27 | 2019-12-27 |  |  |  |  |  |  |  |  |  |  |  |  |  |  |  |  |  |  |  |  |  |  |  |  |
|  | 01 | **EM2 Final Assembly/Testing** |  | 2018-02-27 | 2019-12-26 |  |  |  |  |  |  |  |  |  |  |  |  |  |  |  |  |  |  |  |  |  |  |  |  |
| JUICE-UVS594144 |  | Final Mechanism Assembly | 5d | 2018-02-27 A | 2018-03-05 A | JUICE-UVS 4056 | 100% |  |  |  |  |  |  |  | 05.05 | 05.05.01.04.03.01 | BCR 34 | EM2 Final Assembly/Testing | % C | Kris | DSE | 50-50 | 19190.25.508 |  |  |  |  |  |  |
| JUICE-UVS594147 |  | Optics Assembly/Alignment | 82d | 2018-03-06 A | 2018-06-29 A | JUICE-UVS594144 | 100% |  |  |  |  |  |  |  | 05.05 | 05.05.01.04.03.01 | BCR 34 | EM2 Final Assembly/Testing | % C | Kris | DSE | 50-50 | 19190.25.508 | EM CP |  |  |  |  |  |
| JUICE-UVS594150 |  | Detector/DETE AI&T | 57d | 2018-07-02 A | 2018-11-09 A | JUICE-UVS594147 | 100% |  | 2018-07-02 | 2018-09-21 |  |  |  |  | 05.05 | 05.05.01.04.03.01 | BCR 34 | EM2 Final Assembly/Testing | % C | Kris | DSE | 50-50 | 19190.25.508 | EM CP |  |  |  |  |  |
| JUICE-UVS594153 |  | Optical GSE Bracket Assembly | 10d | 2018-08-20 A | 2018-11-26 A | JUICE-UVS594150 | 100% |  | 2018-08-20 | 2018-09-04 |  |  |  |  | 05.05 | 05.05.01.04.03.01 | BCR 34 | EM2 Final Assembly/Testing | % C | Kris | DSE | 50-50 | 19190.25.508 | EM CP |  |  |  |  |  |
| JUICE-UVS594156 |  | Integrate Electronics | 5d | 2018-11-21 A | 2018-11-29 A | JUICE-UVS594153, JUICE-UVS594093 | 100% |  |  |  |  |  |  |  | 05.05 | 05.05.01.04.03.01 | BCR 34 | EM2 Final Assembly/Testing | % C | Kris | DSE | 50-50 | 19190.25.508 | EM CP |  |  |  |  |  |
| JUICE-UVS594159 |  | Full Functional Test | 5d | 2018-11-30 A | 2018-12-06 A | JUICE-UVS594156 | 100% |  |  |  |  |  |  |  | 05.05 | 05.05.01.04.03.01 | BCR 34 | EM2 Final Assembly/Testing | % C | Kris | DSE | 50-50 | 19190.25.508 | EM CP |  |  |  |  |  |
| JUICE-UVS594162 |  | End-to-End Bench Test | 5d | 2019-12-11 | 2019-12-17 | JUICE-UVS594159 |  |  |  |  | 21d | 5d | start on or after 2019-12-11 |  | 05.05 | 05.05.01.04.03.01 | BCR 34 | EM2 Final Assembly/Testing | % C | Kris | DSE | 50-50 | 19190.25.508 | EM CP |  |  |  |  |  |
| JUICE-UVS594177 |  | CAL & Test Report | 10d | 2019-12-11 | 2019-12-26 | JUICE-UVS594159 |  |  |  |  | 16d | 0d | start on or after 2019-12-11 |  | 05.05 | 05.05.01.04.03.01 | BCR 34 | EM2 Final Assembly/Testing | % C | Kris | DSE | 50-50 | 19190.25.508 | EM CP |  |  |  |  |  |
|  | 02 | **EM2 Delivery to FSW** |  | 2019-12-27 | 2019-12-27 |  |  |  |  |  |  |  |  |  |  |  |  |  |  |  |  |  |  |  |  |  |  |  |  |
| JUICE-UVS594165 |  | EM2 Delivery to FSW | 1d | 2019-12-27 | 2019-12-27 | JUICE-UVS594162, JUICE-UVS594177 |  |  |  |  | 16d |  |  |  | 05.05 | 05.05.01.04.03.02 | BCR 34 | EM2 Delivery to FSW | % C | Kris | DSE | 0-100 | 19190.25.509 | EM CP |  |  |  |  |  |

| ID | WBS | Activity | Duration | Start | Finish | Predecessors | Complete | Remaining | Planned start | Planned finish | Total float | Free float | Constraint | Expected finish | user_text8 | CA | WP/PP | Work Package Name | JUICE UVS Phases | EVT | NASA Phase | JUICE-UVS CAMs | OBS | P6 EVT | JUICE-UVS Charge #s | JUICE-UVS CP | JUICE-UVS Phase CD | JUICE-UVS FM CP | Justify | BUDG - Budget Phase | SORT - Item Sort | PHAS - Alice (Old) | PERT - Pert Select | user_text2 | user_text6 | Forecast Chg |
| --- | --- | --- | --- | --- | --- | --- | --- | --- | --- | --- | --- | --- | --- | --- | --- | --- | --- | --- | --- | --- | --- | --- | --- | --- | --- | --- | --- | --- | --- | --- | --- | --- | --- | --- | --- | --- |
|  | 02 | **FM AI&T** |  | 2018-03-29 | 2020-01-10 |  |  |  |  |  |  |  |  |  |  |  |  |  |  |  |  |  |  |  |  |  |  |  |  |  |  |  |  |  |  |  |
|  | 01 | **Integrate Optics & Detector** |  | 2018-03-29 | 2019-02-07 |  |  |  |  |  |  |  |  |  |  |  |  |  |  |  |  |  |  |  |  |  |  |  |  |  |  |  |  |  |  |  |
| JUICE-UVS 5781 |  | Bake-out #1 Housing | 62d | 2018-03-29 A | 2018-06-26 A | JUICE-UVS 2622 | 100% |  |  |  |  |  |  |  | MD | 05.05 | 05.05.02.01 | Integrate FM Optics & Detector | Phase C | % C | C | Kris | DSE | 0-100 | 19190.25.520 | CP | PH CD |  |  |  |  |  |  |  |  |  |
| JUICE-UVS 5790 |  | Bake-out #2 Additional Components | 5d | 2018-06-26 A | 2018-07-02 A | JUICE-UVS 2660, JUICE-UVS 5781, JUICE-UVS 2682 | 100% |  |  |  |  |  |  |  | MD | 05.05 | 05.05.02.01 | Integrate FM Optics & Detector | Phase C | % C | C | Kris | DSE | 0-100 | 19190.25.520 | CP | PH CD | FM CP |  |  |  |  |  |  |  |  |
| JUICE-UVS 5799 |  | Bench Test Detector | 3d | 2018-08-06 A | 2018-08-08 A | JUICE-UVS593718, JUICE-UVS 9099 | 100% |  |  |  |  |  |  |  | MD | 05.05 | 05.05.02.01 | Integrate FM Optics & Detector | Phase C | % C | C | Kris | DSE | 0-100 | 19190.25.520 |  | PH CD | FM CP | Bench Test Detector not needed until as late as possible |  |  |  |  |  |  |  |
| JUICE-UVS 5784 |  | Bake-out #3 Housing | 3d | 2018-08-30 A | 2018-09-05 A | JUICE-UVS 5790 | 100% |  |  |  |  |  |  |  | MD | 05.05 | 05.05.02.01 | Integrate FM Optics & Detector | Phase C | % C | C | Kris | DSE | 0-100 | 19190.25.520 | CP | PH CD | FM CP | Project Level Mandated Start Date |  |  |  |  |  |  |  |
| JUICE-UVS 5778 |  | Assemble Housing | 20d | 2018-09-06 A | 2018-10-03 A | JUICE-UVS593907, JUICE-UVS593904, JUICE-UVS 593901, JUICE-UVS593838, JUICE-UVS 11679, JUICE-UVS 5784 | 100% |  |  |  |  |  |  |  | MD | 05.05 | 05.05.02.01 | Integrate FM Optics & Detector | Phase C | % C | C | Kris | DSE | 50-50 | 19190.25.520 | CP | PH CD | FM CP |  |  |  |  |  |  |  |  |
| JUICE-UVS 5805 |  | Actuator & wiring clean-up | 6d | 2018-09-26 A | 2018-10-03 A | JUICE-UVS 5778 FF | 100% |  |  |  |  |  |  |  | MD | 05.05 | 05.05.02.01 | Integrate FM Optics & Detector | Phase C | % C | C | Kris | DSE | 0-100 | 19190.25.520 |  | PH CD | FM CP |  |  |  |  |  |  |  |  |
| JUICE-UVS 5766 |  | TVAC Test FM Det Elec & Detector | 6d | 2018-10-01 A | 2018-10-08 A | JUICE-UVS 5799 | 100% |  |  |  |  |  |  |  | MD | 05.05 | 05.05.02.01 | Integrate FM Optics & Detector | Phase C | % C | C | Kris | DSE | 0-100 | 19190.25.520 |  | PH CD | FM CP | Project Level Mandated Start Date | C/D | INT&TEST |  |  |  |  |  |
| JUICE-UVS 5787 |  | Bake-out #4 Housing | 5d | 2018-11-12 A | 2018-11-16 A | JUICE-UVS 5805, JUICE-UVS 2656, JUICE-UVS 592842, JUICE-UVS593916, JUICE-UVS593910, JUICE-UVS593913, JUICE-UVS 2674 | 100% |  |  |  |  |  |  |  | MD | 05.05 | 05.05.02.01 | Integrate FM Optics & Detector | Phase C | % C | C | Kris | DSE | 0-100 | 19190.25.520 | CP | PH CD | FM CP |  |  |  |  |  |  |  |  |
| JUICE-UVS 5757 |  | Install & Align OAP to Housing | 5d | 2018-11-27 A | 2018-12-03 A | JUICE-UVS 592998, JUICE-UVS 593013, JUICE-UVS 593007, JUICE-UVS 5787 | 100% |  |  |  |  |  |  |  | MD | 05.05 | 05.05.02.01 | Integrate FM Optics & Detector | Phase C | % C | C | Kris | DSE | 0-100 | 19190.25.520 | CP | PH CD | FM CP |  | C/D | INT&TEST | 651 | Y |  |  |  |
| JUICE-UVS 5775 |  | Install & Align Grating to Housing | 5d | 2018-12-04 A | 2018-12-10 A | JUICE-UVS 592989, JUICE-UVS 5757 | 100% |  |  |  |  |  |  |  | MD | 05.05 | 05.05.02.01 | Integrate FM Optics & Detector | Phase C | % C | C | Kris | DSE | 0-100 | 19190.25.520 | CP | PH CD | FM CP |  | C/D | INT&TEST |  |  |  |  |  |
| JUICE-UVS 5793 |  | Bake-out #5 Housing | 0d | 2018-12-11 A | 2018-12-11 A | JUICE-UVS 5775 | 100% |  |  |  |  |  |  |  | MD | 05.05 | 05.05.02.01 | Integrate FM Optics & Detector | Phase C | % C | C | Kris | DSE | 0-100 | 19190.25.520 | CP | PH CD | FM CP |  |  |  |  |  |  |  |  |
| JUICE-UVS 5808 |  | Bake-out #6 Housing | 0d | 2018-12-12 A | 2018-12-12 A | JUICE-UVS 5766, JUICE-UVS 5793 | 100% |  |  |  |  |  |  |  | MD | 05.05 | 05.05.02.01 | Integrate FM Optics & Detector | Phase C | % C | C | Kris | DSE | 0-100 | 19190.25.520 | CP | PH CD | FM CP |  |  |  |  |  |  |  |  |
| JUICE-UVS 5811 |  | Integrate Detector | 3d | 2019-01-02 A | 2019-01-22 A | JUICE-UVS 5808, JUICE-UVS 593148, JUICE-UVS 592836, JUICE-UVS 15706 | 100% |  | 2019-01-02 | 2019-01-04 |  |  |  |  | MD | 05.05 | 05.05.02.01 | Integrate FM Optics & Detector | Phase C | % C | C | Kris | DSE | 0-100 | 19190.25.520 | CP | PH CD | FM CP |  |  |  |  |  |  |  |  |
| JUICE-UVS 5844 |  | C&DH Flight FPGA Install | 5d | 2019-01-02 A | 2019-01-08 A | JUICE-UVS 3193, JUICE-UVS 592992, JUICE-UVS 594207, JUICE-UVS 594210 | 100% |  |  |  |  |  |  |  |  | 05.05 | 05.05.02.02 | Integrate FM Electronics | Phase C | % C | C | Kris | DSE | 0-100 | 19190.25.520 |  | PH CD | FM CP |  | C/D | INT&TEST |  |  |  |  |  |
| JUICE-UVS 5802 |  | Install & Align SP to Housing | 3d | 2019-02-05 A | 2019-02-07 A | JUICE-UVS 593010, JUICE-UVS 5637 | 100% |  |  |  |  |  |  |  | MD | 05.05 | 05.05.02.01 | Integrate FM Optics & Detector | Phase C | % C | C | Kris | DSE | 0-100 | 19190.25.520 | CP | PH CD | FM CP |  |  |  |  |  |  |  |  |
|  | 02 | **Integrate Electronics** |  | 2018-06-15 | 2019-12-31 |  |  |  |  |  |  |  |  |  |  |  |  |  |  |  |  |  |  |  |  |  |  |  |  |  |  |  |  |  |  |  |
| JUICE-UVS 15688 |  | Initial Electronics Integ (All Bds & Loads) | 41d | 2018-06-15 A | 2018-08-14 A | JUICE-UVS 3286, JUICE-UVS 3198, JUICE-UVS 3264 FF, JUICE-UVS 592530, JUICE-UVS 3057, JUICE-UVS 5109 | 100% |  | 2018-06-15 | 2018-08-13 |  |  |  |  |  | 05.05 | 05.05.02.02 | Integrate FM Electronics | Phase C | % C | C | Kris | DSE | 50-50 | 19190.25.521 |  | PH CD | FM CP |  | C/D | INT&TEST |  | Y | DS3 |  |  |
| JUICE-UVS 15709 |  | Initial Test C&DH, LVPS, Loads | 10d | 2018-08-29 A | 2018-09-13 A | JUICE-UVS 15688 | 100% |  |  |  |  |  |  |  |  | 05.05 | 05.05.02.02 | Integrate FM Electronics | Phase C | % C | C | Kris | DSE | 50-50 | 19190.25.521 |  | PH CD | FM CP | Activity has started | C/D | INT&TEST |  |  | DS3 |  |  |
| JUICE-UVS 592992 |  | Disassemble Electronics | 1d | 2018-10-04 A | 2018-10-05 A | JUICE-UVS 15709 | 100% |  | 2018-10-04 | 2018-10-04 |  |  |  |  |  | 05.05 | 05.05.02.02 | Integrate FM Electronics | Phase C | % C |  | Kris | DSE | 0-100 | 19190.25.521 |  | PH CD | FM CP |  |  |  |  |  |  |  |  |
| JUICE-UVS 15706 |  | Install Flight Harness to FM | 2d | 2018-11-20 A | 2018-11-21 A | JUICE-UVS 15688, JUICE-UVS 3298, JUICE-UVS 5103 | 100% |  |  |  |  |  |  |  |  | 05.05 | 05.05.02.02 | Integrate FM Electronics | Phase C | % C | C | Kris | DSE | 0-100 | 19190.25.521 |  | PH CD | FM CP |  | C/D | INT&TEST |  |  |  |  |  |
| JUICE-UVS 5847 |  | C&DH Flight FPGA Test | 2d | 2019-01-09 A | 2019-01-10 A | JUICE-UVS 5844 | 100% |  |  |  |  |  |  |  |  | 05.05 | 05.05.02.02 | Integrate FM Electronics | Phase C | % C |  | Kris | DSE | 0-100 | 19190.25.521 |  | PH CD | FM CP |  |  |  |  |  |  |  |  |
| JUICE-UVS 5814 |  | C&DH Flight PROM Install | 2d | 2019-04-09 A | 2019-04-10 A | JUICE-UVS 592746, JUICE-UVS 5847 | 100% |  |  |  |  |  | start on or after 2019-04-09 |  |  | 05.05 | 05.05.02.02 | Integrate FM Electronics | Phase C | % C | C | Kris | DSE | 0-100 | 19190.25.521 |  | PH CD | FM CP |  | C/D | INT&TEST |  |  |  |  |  |
| JUICE-UVS 5736 |  | Post Stake & Coat Functional Test (C&DH,LVPS,HVPS) | 2d | 2019-04-26 A | 2019-04-30 A | JUICE-UVS 5814 | 100% |  | 2019-04-26 | 2019-04-29 |  |  | start on or after 2019-04-26 |  |  | 05.05 | 05.05.02.02 | Integrate FM Electronics | Phase C | % C | C | Kris | DSE | 0-100 | 19190.25.521 |  | PH CD | FM CP |  |  |  |  |  |  |  |  |
| JUICE-UVS 5817 |  | C&DH Final QA Insp. & Stake & Coat | 2d | 2019-04-30 A | 2019-05-01 A | JUICE-UVS 5820 | 100% |  |  |  |  |  |  |  |  | 05.05 | 05.05.02.02 | Integrate FM Electronics | Phase C | % C | C | Kris | DSE | 0-100 | 19190.25.521 |  | PH CD | FM CP |  |  |  |  |  |  |  |  |
| JUICE-UVS 5820 |  | C&DH Flight PROM Test | 0d | 2019-04-30 A | 2019-04-30 A | JUICE-UVS 5736 | 100% |  |  |  |  |  |  |  |  | 05.05 | 05.05.02.02 | Integrate FM Electronics | Phase C | % C |  | Kris | DSE | 0-100 | 19190.25.521 |  | PH CD | FM CP |  |  |  |  |  |  |  |  |
| JUICE-UVS 15697 |  | Bakeout FM Elec | 3d | 2019-05-02 A | 2019-05-06 A | JUICE-UVS 3264, JUICE-UVS 5817 | 100% |  |  |  |  |  |  |  |  | 05.05 | 05.05.02.02 | Integrate FM Electronics | Phase C | % C | C | Kris | DSE | 0-100 | 19190.25.521 |  | PH CD | FM CP |  | C/D | INT&TEST |  |  |  |  |  |
| JUICE-UVS 592995 |  | Final Electronics Integration | 2d | 2019-05-07 A | 2019-05-08 A | JUICE-UVS 15697 | 100% |  |  |  |  |  |  |  |  | 05.05 | 05.05.02.02 | Integrate FM Electronics | Phase C | % C |  | Kris | DSE | 50-50 | 19190.25.521 |  | PH CD | FM CP |  |  |  |  |  |  |  |  |
| JUICE-UVS 592548 |  | Install Heater Harness | 1d | 2019-05-22 A | 2019-05-22 A | JUICE-UVS 11655, JUICE-UVS 592545 | 100% |  |  |  |  |  | start on or after 2019-05-22 |  |  | 05.05 | 05.05.02.02 | Integrate FM Electronics | Phase C | % C |  | Kris | DSE | 0-100 | 19190.25.521 |  | PH CD | FM CP |  |  |  |  |  |  |  |  |
| JUICE-UVS 15712 |  | S/W Build 4 ATP (Run for Score on FM) | 20d | 2019-06-24 A | 2019-12-31 | JUICE-UVS 592995 | 50% | 24d | 2019-06-24 | 2019-07-22 | 14d | 0d |  | 2019-12-31 |  | 05.05 | 05.05.02.02 | Integrate FM Electronics | Phase C | % C | C | Kris | DSE | 50-50 | 19190.25.521 |  | PH CD | FM CP |  | C/D | INT&TEST |  |  |  | Phase B | Y |

Notes:
- JUICE-UVS 5817: Steps: LVPS 1&2 Bench FTP Test (done); LVPS 1&2 Install FM Mag, Resistors & Final Assy (done); LVPS 1&2 Final Bring up & FTP Test (done); LVPS 1&2 Thermal Cycle tests (done); LVPS 1&2 Stake & Coat (done); LVPS 1&2 Final abbreviated test (done)

| ID | WBS | Activity | Duration | Start | Finish | Predecessors | Complete | Planned start | Planned finish | Constraint | CA | WP/PP | Work Package Name | BUDG - Budget Phase | SORT - Item Sort | JUICE UVS Phases | EVT | NASA Phase | JUICE-UVS CAMs | OBS | P6 EVT | JUICE-UVS Charge #s | JUICE-UVS CP | JUICE-UVS FM CP | JUICE-UVS Phase CD | PHAS - Alice (Old) | PERT - Pert Select | user_text1 JUICE-UVS Risk ID | JUICE-UVS Summary Milestones | Forecast Chg |
| --- | --- | --- | --- | --- | --- | --- | --- | --- | --- | --- | --- | --- | --- | --- | --- | --- | --- | --- | --- | --- | --- | --- | --- | --- | --- | --- | --- | --- | --- | --- |
|  | 03 | **FM Test** |  | 2019-01-23 | 2019-06-03 |  |  |  |  |  |  |  |  |  |  |  |  |  |  |  |  |  |  |  |  |  |  |  |  |  |
| JUICE-UVS 5637 |  | Final Alignment & Focus Tests w/Detector | 10d | 2019-01-23 A | 2019-02-05 A | JUICE-UVS 5811 | 100% |  |  | start on or after 2019-01-23 | 05.05 | 05.05.02.03 | FM Test | C/D | INT&TEST | Phase C | % C | C | Kris | DSE | 0-100 | 19190.25.522 | CP | FM CP | PH CD |  |  |  |  |  |
| JUICE-UVS 5850 |  | Baseline Func Test | 1d | 2019-05-24 A | 2019-05-29 A | JUICE-UVS 593264, JUICE-UVS 593258, JUICE-UVS 2030, JUICE-UVS 5802 | 100% | 2019-05-28 | 2019-05-28 |  | 05.05 | 05.05.02.03 | FM Test | C/D | INT&TEST | Phase C | % C | C | Kris | DSE | 50-50 | 19190.25.522 | CP | FM CP | PH CD | 651 | Y |  |  |  |
| JUICE-UVS 5853 |  | Flight Ambient Actuator Test | 1d | 2019-05-30 A | 2019-05-30 A | JUICE-UVS 5850 | 100% |  |  | start on or after 2019-05-28 | 05.05 | 05.05.02.03 | FM Test | C/D | INT&TEST | Phase C | % C | C | Kris | DSE | 0-100 | 19190.25.522 | CP | FM CP | PH CD |  |  |  |  |  |
| JUICE-UVS 15661 |  | Light Leak & Radiometric Alignment Test | 2d | 2019-05-31 A | 2019-06-03 A | JUICE-UVS 5853 | 100% |  |  |  | 05.05 | 05.05.02.03 | FM Test | C/D | INT&TEST | Phase C | % C | C | Kris | DSE | 0-100 | 19190.25.522 | CP | FM CP | PH CD |  |  |  |  |  |
|  | 04 | **FM Environmental Test** |  | 2019-05-24 | 2020-01-09 |  |  |  |  |  |  |  |  |  |  |  |  |  |  |  |  |  |  |  |  |  |  |  |  |  |
|  | 01 | **EMI/EMC Test** |  | 2019-05-24 | 2019-09-04 |  |  |  |  |  |  |  |  |  |  |  |  |  |  |  |  |  |  |  |  |  |  |  |  |  |
|  | 01 | **EMI/EMC Testing** |  | 2019-05-24 | 2019-09-03 |  |  |  |  |  |  |  |  |  |  |  |  |  |  |  |  |  |  |  |  |  |  |  |  |  |
| JUICE-UVS 5601 |  | FM EMI/EMC Testing | 10d | 2019-05-24 A | 2019-06-04 A | JUICE-UVS 5604, JUICE-UVS 11661 | 100% | 2019-05-28 | 2019-06-10 |  | 05.05 | 05.05.02.04.01.01 | FM EMI/EMC Test | C/D | INT&TEST | Phase C | % C | C | Kris | DSE | 50-50 | 19190.25.523 | CP | FM CP | PH CD |  | Y | Risk ID 8 |  |  |
| JUICE-UVS 5604 |  | Grounding/Bonding Isolation Test | 1d | 2019-06-04 A | 2019-06-04 A | JUICE-UVS 15661 | 100% |  |  |  | 05.05 | 05.05.02.04.01.01 | FM EMI/EMC Test | C/D | INT&TEST | Phase C | % C | C | Kris | DSE | 50-50 | 19190.25.523 | CP | FM CP | PH CD |  |  |  | Summary |  |
| JUICE-UVS 5610 |  | EMI/EMC Test Report | 15d | 2019-07-29 A | 2019-09-03 A | JUICE-UVS 5601 | 100% | 2019-07-29 | 2019-08-16 | start on or after 2019-07-29 | 05.05 | 05.05.02.04.01.01 | FM EMI/EMC Test | C/D | INT&TEST | Phase C | % C | C | Kris | DSE | 50-50 | 19190.25.523 |  | FM CP | PH CD |  |  |  |  | Y |
|  | 02 | **Magnetics Susceptibility Testing** |  | 2019-05-29 | 2019-09-04 |  |  |  |  |  |  |  |  |  |  |  |  |  |  |  |  |  |  |  |  |  |  |  |  |  |
| JUICE-UVS 5616 |  | Conduct FM UVS Magnetics Susceptibility & Cleanliness Tests | 7d | 2019-05-29 A | 2019-06-06 A | JUICE-UVS 5601, JUICE-UVS 11646 | 100% |  |  |  | 05.05 | 05.05.02.04.01.02 | FM Magnetics Test |  |  | Phase C | % C | C | Kris | DSE | 0-100 | 19190.25.524 | CP | FM CP | PH CD |  |  |  |  |  |
| JUICE-UVS 5625 |  | Collect Mag Test Data | 1d | 2019-08-06 A | 2019-08-06 A | JUICE-UVS 5616 | 100% |  |  | start on or after 2019-08-05 | 05.05 | 05.05.02.04.01.02 | FM Magnetics Test |  |  | Phase C | % C | C | Kris | DSE | 0-100 | 19190.25.524 | CP | FM CP | PH CD |  |  |  |  |  |
| JUICE-UVS 5622 |  | Closeout As-Run Mag Test Proc/Report | 20d | 2019-08-07 A | 2019-09-04 A | JUICE-UVS 5625 | 100% |  |  |  | 05.05 | 05.05.02.04.01.02 | FM Magnetics Test |  |  | Phase C | % C | C | Kris | DSE | 50-50 | 19190.25.524 |  | FM CP | PH CD |  |  |  |  | Y |
|  | 03 | **Post EMI Functional Testing** |  | 2019-07-11 | 2019-07-12 |  |  |  |  |  |  |  |  |  |  |  |  |  |  |  |  |  |  |  |  |  |  |  |  |  |
| JUICE-UVS 15646 |  | Functional & Radiometric Bench Test | 2d | 2019-07-11 A | 2019-07-12 A | JUICE-UVS 5616 | 100% |  |  | start on or after 2019-07-11 | 05.05 | 05.05.02.04.01.03 | FM Post-EMI Functional Test |  |  | Phase C | % C | C | Kris | DSE | 0-100 | 19190.25.525 | CP | FM CP | PH CD |  |  |  |  |  |
|  | 02 | **Vibe Test** |  | 2019-07-22 | 2019-10-02 |  |  |  |  |  |  |  |  |  |  |  |  |  |  |  |  |  |  |  |  |  |  |  |  |  |
| JUICE-UVS 593259 |  | Package & Move FM & GSE to Vibe Facility | 0.5d | 2019-07-22 A | 2019-07-22 A | JUICE-UVS 15646 | 100% |  |  | start on or after 2019-07-22 | 05.05 | 05.05.02.04.02 | FM Vibe Test |  |  | Phase C | % C |  | Kris | DSE | 0-100 | 19190.25.526 | CP | FM CP | PH CD |  |  |  |  |  |
| JUICE-UVS 6006 |  | Sensor Protoflight Vibe | 1d | 2019-07-24 A | 2019-07-24 A | JUICE-UVS 593259, JUICE-UVS 11619 | 100% |  |  | start on or after 2019-07-24 | 05.05 | 05.05.02.04.02 | FM Vibe Test |  |  | Phase C | % C | C | Kris | DSE | 0-100 | 19190.25.526 | CP | FM CP | PH CD |  |  |  |  |  |
| JUICE-UVS 15655 |  | UVS full functional test (post-vibe test) | 0.5d | 2019-07-25 A | 2019-07-25 A | JUICE-UVS 6006 | 100% |  |  |  | 05.05 | 05.05.02.04.02 | FM Vibe Test | C/D | INT&TEST | Phase C | % C | C | Kris | DSE | 0-100 | 19190.25.526 | CP | FM CP | PH CD |  |  |  |  |  |
| JUICE-UVS 6012 |  | UVS Ambient Actuator test (Full test A&B side, all actuators) | 0.5d | 2019-07-25 A | 2019-07-25 A | JUICE-UVS 15655 | 100% |  |  |  | 05.05 | 05.05.02.04.02 | FM Vibe Test |  |  | Phase C | % C | C | Kris | DSE | 0-100 | 19190.25.526 | CP | FM CP | PH CD |  |  |  |  |  |
| JUICE-UVS 16021 |  | Post-Vibe optics alignment check | 2d | 2019-07-26 A | 2019-07-29 A | JUICE-UVS 6012 | 100% |  |  |  | 05.05 | 05.05.02.04.02 | FM Vibe Test |  |  | Phase C | % C | C | Kris | DSE | 0-100 | 19190.25.526 | CP | FM CP | PH CD |  |  |  |  |  |
| JUICE-UVS 16009 |  | Detector Pumpdown (overnight pump) | 0d | 2019-07-30 A | 2019-07-30 A | JUICE-UVS 16021 | 100% |  |  |  | 05.05 | 05.05.02.04.02 | FM Vibe Test |  |  | Phase C | % C | C | Kris | DSE | 0-100 | 19190.25.526 | CP | FM CP | PH CD |  |  |  |  |  |
| JUICE-UVS 15676 |  | End-to-End/Radiometric Test | 2d | 2019-07-31 A | 2019-08-01 A | JUICE-UVS 16009 | 100% |  |  |  | 05.05 | 05.05.02.04.02 | FM Vibe Test | C/D | INT&TEST | Phase C | % C | C | Kris | DSE | 0-100 | 19190.25.526 | CP | FM CP | PH CD |  |  |  |  |  |
| JUICE-UVS 15670 |  | Vibe Test Report | 5d | 2019-08-06 A | 2019-08-12 A | JUICE-UVS 6006 | 100% |  |  | start on or after 2019-08-05 | 05.05 | 05.05.02.04.02 | FM Vibe Test | C/D | INT&TEST | Phase C | % C | C | Kris | DSE | 0-100 | 19190.25.526 |  | FM CP | PH CD |  |  |  |  |  |
| JUICE-UVS 15667 |  | Inspection & Physical Properties | 4d | 2019-09-27 A | 2019-10-02 A | JUICE-UVS 16048 | 100% |  |  |  | 05.05 | 05.05.02.04.02 | FM Vibe Test | C/D | INT&TEST | Phase C | % C | C | Kris | DSE | 50-50 | 19190.25.526 | CP | FM CP | PH CD |  |  |  |  |  |

| ID | WBS | Activity | Duration | Start | Finish | Predecessors | Complete | Planned start | Planned finish | Total float | Free float | Constraint | user_text8 | CA | WP/PP | Work Package Name | Justify | JUICE UVS Phases | EVT | NASA Phase | JUICE-UVS CAMs | OBS | P6 EVT | JUICE-UVS Charge #s | JUICE-UVS CP | JUICE-UVS FM CP | JUICE-UVS Phase CD | PHAS - Alice (Old) | BUDG - Budget Phase | SORT - Item Sort | PERT - Pert Select | Forecast Chg | JUICE-UVS Summary Milestones | BCR # | Sch Margin | JUICE UVS Phase CD | JUICE-UVS Resources |
| --- | --- | --- | --- | --- | --- | --- | --- | --- | --- | --- | --- | --- | --- | --- | --- | --- | --- | --- | --- | --- | --- | --- | --- | --- | --- | --- | --- | --- | --- | --- | --- | --- | --- | --- | --- | --- | --- |
|  | 03 | **Thermal Test** |  | 2019-07-17 | 2019-10-01 |  |  |  |  |  |  |  |  |  |  |  |  |  |  |  |  |  |  |  |  |  |  |  |  |  |  |  |  |  |  |  |  |
| JUICE-UVS 15685 |  | Thermal Vacuum Chamber Certification | 0d | 2019-07-17 A | 2019-07-17 A | JUICE-UVS 4352 | 100% |  |  |  |  | as late as possible | BW | 05.05 | 05.05.02.04.03 | FM TVAC/TBAL Test | TVAC Chamber Cert to be done right before I&T | Phase C | % C | C | Kris | DSE | 0-100 | 19190.25.527 | CP | FM CP | PH CD |  |  |  |  |  |  |  |  |  |  |
| JUICE-UVS 6042 |  | Perform Safe-to-mate w/GSE cables | 0.5d | 2019-07-17 A | 2019-07-17 A | JUICE-UVS 15685, JUICE-UVS 11502 | 100% |  |  |  |  | as late as possible | BW | 05.05 | 05.05.02.04.03 | FM TVAC/TBAL Test | Safe-to-mate not needed until as late as possible | Phase C | % C | C | Kris | DSE | 0-100 | 19190.25.527 | CP | FM CP | PH CD |  |  |  |  |  |  |  |  |  |  |
| JUICE-UVS 15679 |  | FM TVAC Instrument testing | 10d | 2019-08-01 A | 2019-08-14 A | JUICE-UVS 592578, JUICE-UVS 6042, JUICE-UVS 11652, JUICE-UVS 15676 | 100% |  |  |  |  | start on or after 2019-08-01 | BW | 05.05 | 05.05.02.04.03 | FM TVAC/TBAL Test |  | Phase C | % C | C | Kris | DSE | 50-50 | 19190.25.527 |  | FM CP | PH CD | 651 | C/D | INT&TEST | Y |  |  |  |  |  |  |
| JUICE-UVS 15682 |  | TVAC Test Report | 10d | 2019-08-15 A | 2019-08-28 A | JUICE-UVS 15679 | 100% |  |  |  |  |  | BW | 05.05 | 05.05.02.04.03 | FM TVAC/TBAL Test |  | Phase C | % C | C | Kris | DSE | 0-100 | 19190.25.527 |  | FM CP | PH CD |  | C/D | INT&TEST |  |  |  |  |  |  |  |
| JUICE-UVS 592551 |  | Install Blankets | 1d | 2019-09-04 A | 2019-09-04 A | JUICE-UVS 592548, JUICE-UVS 15679, JUICE-UVS 592533 | 100% |  |  |  |  |  | BW | 05.05 | 05.05.02.04.03 | FM TVAC/TBAL Test |  | Phase C | % C |  | Kris | DSE | 0-100 | 19190.25.527 | CP | FM CP | PH CD |  |  |  |  |  |  |  |  |  |  |
| JUICE-UVS 16048 |  | Thermal Balance test, analysis & test correlation | 5d | 2019-09-05 A | 2019-09-26 A | JUICE-UVS 592551 | 100% | 2019-09-05 | 2019-09-11 |  |  |  | BW | 05.05 | 05.05.02.04.03 | FM TVAC/TBAL Test |  | Phase C | % C | C | Kris | DSE | 0-100 | 19190.25.527 | CP | FM CP | PH CD |  |  |  |  |  |  |  |  |  |  |
| JUICE-UVS 16051 |  | Remove Blankets | 0.5d | 2019-09-30 A | 2019-10-01 A | JUICE-UVS 16048 | 100% | 2019-09-30 | 2019-09-30 |  |  | start on or after 2019-09-30 | BW | 05.05 | 05.05.02.04.03 | FM TVAC/TBAL Test |  | Phase C | % C |  | Kris | DSE | 0-100 | 19190.25.527 | CP | FM CP | PH CD |  |  |  |  | Y |  |  |  |  |  |
|  | 04 | **FM Calibration & Pre-Delivery Testing** |  | 2019-10-01 | 2020-01-09 |  |  |  |  |  |  |  |  |  |  |  |  |  |  |  |  |  |  |  |  |  |  |  |  |  |  |  |  |  |  |  |  |
| JUICE-UVS 5577 |  | FM Sensor UV Calibration | 15d | 2019-10-01 A | 2019-10-22 A | JUICE-UVS 16051, JUICE-UVS 9159, JUICE-UVS 2178 | 100% |  |  |  |  |  | MD | 05.05 | 05.05.02.04.04 | FM Cal & Pre-Delivery Testing |  | Phase C | % C | C | Kris | DSE | 50-50 | 19190.25.528 | CP | FM CP | PH CD |  | C/D | INT&TEST | Y |  |  |  |  |  |  |
| JUICE-UVS 15595 |  | Cal Test Report | 2d | 2019-12-11 | 2019-12-12 | JUICE-UVS 5577 |  |  |  | 25d | 0d | start on or after 2019-12-11 | MD | 05.05 | 05.05.02.04.04 | FM Cal & Pre-Delivery Testing |  | Phase C | % C | C | Kris | DSE | 0-100 | 19190.25.528 | CP | FM CP | PH CD |  | C/D | INT&TEST |  |  |  |  |  |  |  |
| JUICE-UVS 15589 |  | Test Results Closeout Review | 0d | 2019-12-13 | 2019-12-13 | JUICE-UVS593949, JUICE-UVS 15595, JUICE-UVS 15682, JUICE-UVS 15670, JUICE-UVS 5610, JUICE-UVS 5622 |  |  |  | 25d | 17d |  | MD | 05.05 | 05.05.02.04.04 | FM Cal & Pre-Delivery Testing |  | Phase C | % C | C | Kris | DSE | 0-100 | 19190.25.528 | CP | FM CP | PH CD |  | C/D | INT&TEST |  |  |  |  |  |  |  |
| JUICE-UVS 5580 |  | Install MLI & Perform Radiometric_End-to-End Test | 2d | 2020-01-02 | 2020-01-03 | JUICE-UVS594213, JUICE-UVS 5577 |  |  |  | 8d | 0d | start on or after 2020-01-02 | MD | 05.05 | 05.05.02.04.04 | FM Cal & Pre-Delivery Testing |  | Phase C | % C | C | Kris | DSE | 0-100 | 19190.25.528 | CP | FM CP | PH CD |  | C/D | INT&TEST |  |  |  |  |  |  |  |
| JUICE-UVS 5586 |  | UVS Sensor NVRR test | 0.5d | 2020-01-06 | 2020-01-06 | JUICE-UVS 5580 |  |  |  | 8d | 0d |  | MD | 05.05 | 05.05.02.04.04 | FM Cal & Pre-Delivery Testing |  | Phase C | % C | C | Kris | DSE | 0-100 | 19190.25.528 | CP | FM CP | PH CD |  | C/D | INT&TEST |  |  |  |  |  |  |  |
| JUICE-UVS 5592 |  | Full Func Test | 1d | 2020-01-06 | 2020-01-07 | JUICE-UVS 5586 |  |  |  | 8d | 0d |  | MD | 05.05 | 05.05.02.04.04 | FM Cal & Pre-Delivery Testing |  | Phase C | % C | C | Kris | DSE | 0-100 | 19190.25.528 | CP | FM CP | PH CD |  | C/D | INT&TEST |  |  |  |  |  |  |  |
| JUICE-UVS 15583 |  | UVS final Visual Inspection, Black light | 0.5d | 2020-01-07 | 2020-01-07 | JUICE-UVS 15667 FF, JUICE-UVS 5592 |  |  |  | 8d | 0d |  | MD | 05.05 | 05.05.02.04.04 | FM Cal & Pre-Delivery Testing |  | Phase C | % C | C | Kris | DSE | 0-100 | 19190.25.528 | CP | FM CP | PH CD |  | C/D | INT&TEST |  |  |  |  |  |  |  |
| JUICE-UVS 6036 |  | Photograph Instrument | 0.5d | 2020-01-08 | 2020-01-08 | JUICE-UVS 15583 |  |  |  | 8d | 0d |  | MD | 05.05 | 05.05.02.04.04 | FM Cal & Pre-Delivery Testing |  | Phase C | % C | C | Kris | DSE | 0-100 | 19190.25.528 |  | FM CP | PH CD |  |  |  |  |  |  |  |  |  |  |
| JUICE-UVS 16030 |  | Install final Red tag items | 0.5d | 2020-01-08 | 2020-01-08 | JUICE-UVS 6036 |  |  |  | 8d | 0d |  | MD | 05.05 | 05.05.02.04.04 | FM Cal & Pre-Delivery Testing |  | Phase C | % C | C | Kris | DSE | 0-100 | 19190.25.528 |  | FM CP | PH CD |  |  |  |  |  |  |  |  |  |  |
| JUICE-UVS 16036 |  | Package, Ship preparations, TSA inspection prior to boxing up | 1d | 2020-01-09 | 2020-01-09 | JUICE-UVS 11664, JUICE-UVS 16030, JUICE-UVS 593261 |  |  |  | 8d | 0d |  | MD | 05.05 | 05.05.02.04.04 | FM Cal & Pre-Delivery Testing |  | Phase C | % C | C | Kris | DSE | 0-100 | 19190.25.528 | CP | FM CP | PH CD |  |  |  |  |  |  |  |  |  |  |
|  | 05 | **FM Delivery** |  | 2020-01-10 | 2020-01-10 |  |  |  |  |  |  |  |  |  |  |  |  |  |  |  |  |  |  |  |  |  |  |  |  |  |  |  |  |  |  |  |  |
| JUICE-UVS 5598 |  | FM JUICE-UVS Delivery | 0d | 2020-01-10 | 2020-01-10 | JUICE-UVS 15589, JUICE-UVS 15712, JUICE-UVS 592749, JUICE-UVS 3495, JUICE-UVS 2469, JUICE-UVS 5607, JUICE-UVS 593322 FF, JUICE-UVS594801, JUICE-UVS594804, JUICE-UVS594807, JUICE-UVS594810, JUICE-UVS 11649 FF |  |  |  | 8d |  |  | SP | 05.05 | 05.05.02.05 | FM Delivery | Project level Mandatory Finish Date | Phase C | % C | C | Kris | DSE | 0-100 | 19190.25.529 | CP | FM CP | PH CD |  | C/D | INT&TEST | Y |  | Summary |  |  |  |  |
| JUICE-UVS 5607 |  | FM Schedule Margin | 0d | 2020-01-10 | 2020-01-10 | JUICE-UVS 16036, JUICE-UVS594018 |  |  |  | 8d | 0d |  | SP | 05.05 | 05.05.02.05 | FM Delivery |  | Phase C | % C | C | Kris | DSE | % C | 19190.25.529 | CP | FM CP | PH CD |  |  |  |  |  |  | 27 | Y |  |  |
|  | 03 | **E/MGSE AI&T** |  | 2016-11-16 | 2019-12-20 |  |  |  |  |  |  |  |  |  |  |  |  |  |  |  |  |  |  |  |  |  |  |  |  |  |  |  |  |  |  |  |  |
|  | 01 | **Electrical GSE** |  | 2016-11-16 | 2019-01-02 |  |  |  |  |  |  |  |  |  |  |  |  |  |  |  |  |  |  |  |  |  |  |  |  |  |  |  |  |  |  |  |  |
|  | 01 | **S/C Emulator & Power** |  | 2016-11-16 | 2016-11-17 |  |  |  |  |  |  |  |  |  |  |  |  |  |  |  |  |  |  |  |  |  |  |  |  |  |  |  |  |  |  |  |  |
| JUICE-UVS 11496 |  | S/C Emulator & Power | 2d | 2016-11-16 A | 2016-11-17 A | JUICE-UVS 0011 | 100% |  |  |  |  |  |  | 05.05 | 05.05.03.01.01 | Electrical GSE - S/C Emulator/Power |  | Phase C | % C | C | Kris | DSE | 0-100 | 19190.25.530 |  |  | PH CD |  |  |  |  |  |  | 15 |  | PH CD | 0Budget |

| ID | WBS | Activity | Type | Duration | Start | Finish | Predecessors | Complete | Remaining | Planned start | Planned finish | Total float | Free float | Expected finish | CA | WP/PP | Work Package Name | JUICE UVS Phases | EVT | JUICE UVS Phase CD | NASA Phase | JUICE-UVS CAMs | OBS | P6 EVT | JUICE-UVS Charge #s | JUICE-UVS Phase CD | JUICE-UVS CP | user_text8 | user_text7 | Forecast Chg | M/S | JUICE-UVS Procurements | JUICE-UVS SVT | SVT | JUICE Mission Phases | JUICE-UVS Resources | BUDG - Budget Phase | user_text4 |
| --- | --- | --- | --- | --- | --- | --- | --- | --- | --- | --- | --- | --- | --- | --- | --- | --- | --- | --- | --- | --- | --- | --- | --- | --- | --- | --- | --- | --- | --- | --- | --- | --- | --- | --- | --- | --- | --- | --- |
|  | 02 | **Cables** |  |  | 2017-06-07 | 2019-01-02 |  |  |  |  |  |  |  |  |  |  |  |  |  |  |  |  |  |  |  |  |  |  |  |  |  |  |  |  |  |  |  |  |
| JUICE-UVS 11499 |  | Rack GSE Cables |  | 20d | 2017-06-07 A | 2017-07-05 A | JUICE-UVS 3030b6 | 100% |  |  |  |  |  |  | 05.05 | 05.05.03.01.02 | Electrical GSE - Cables | Phase C | % C | PH CD | C | Kris | DSE | 50-50 | 19190.25.531 | PH CD |  |  |  |  |  |  |  |  |  |  |  |  |
| JUICE-UVS 11502 |  | TVAC GSE Cables |  | 193d | 2018-02-26 A | 2019-01-02 A | JUICE-UVS 592475 | 100% |  | 2018-02-26 | 2018-11-30 |  |  |  | 05.05 | 05.05.03.01.02 | Electrical GSE - Cables | Phase C | % C | PH CD | C | Kris | DSE | % C | 19190.25.531 | PH CD | CP |  |  |  |  |  |  |  |  |  |  |  |
|  | 02 | **Mechanical GSE** |  |  | 2018-02-05 | 2019-12-20 |  |  |  |  |  |  |  |  |  |  |  |  |  |  |  |  |  |  |  |  |  |  |  |  |  |  |  |  |  |  |  |  |
| JUICE-UVS 593178 |  | Lifting Handles Design |  | 2d | 2018-02-05 A | 2018-02-07 A | JUICE-UVS 2581 | 100% |  | 2018-02-05 | 2018-02-06 |  |  |  | 05.05 | 05.05.03.02 | Mechanical GSE | Phase C | % C |  |  | Kris | DSE | 0-100 | 19190.25.532 | PH CD | CP |  |  |  |  |  |  |  |  |  |  |  |
| JUICE-UVS 593172 |  | Vacuum Test Fixture Design |  | 2d | 2018-08-20 A | 2018-08-21 A | JUICE-UVS 2030 | 100% |  |  |  |  |  |  | 05.05 | 05.05.03.02 | Mechanical GSE | Phase C | % C |  |  | Kris | DSE | 0-100 | 19190.25.532 | PH CD | CP |  |  |  |  |  |  |  |  |  |  |  |
| JUICE-UVS 11652 |  | Vacuum Test Fixture Fab |  | 63d | 2018-08-24 A | 2019-07-08 A | JUICE-UVS 593172 | 100% |  | 2018-08-24 | 2018-11-26 |  |  |  | 05.05 | 05.05.03.02 | Mechanical GSE | Phase C | % C |  | C | Kris | DSE | 0-100 | 19190.25.532 | PH CD | CP | BW |  |  |  |  |  |  |  |  |  |  |
| JUICE-UVS 11619 |  | Lifting Handles Fab |  | 10d | 2019-01-14 A | 2019-01-25 A | JUICE-UVS 593178 | 100% |  |  |  |  |  |  | 05.05 | 05.05.03.02 | Mechanical GSE | Phase C | % C | PH CD | C | Kris | DSE | 0-100 | 19190.25.532 | PH CD | CP | KP | Flight Quote |  |  |  |  |  |  |  |  |  |
| JUICE-UVS 593169 |  | Vibe Test Fixture Design |  | 7.2d | 2019-06-26 A | 2019-07-05 A | JUICE-UVS 2030 | 100% |  | 2019-06-26 | 2019-07-08 |  |  |  | 05.05 | 05.05.03.02 | Mechanical GSE | Phase C | % C |  |  | Kris | DSE | 0-100 | 19190.25.532 | PH CD | CP |  |  |  |  |  |  |  |  |  |  |  |
| JUICE-UVS 11649 |  | Vibe Test Fixture & OGSE Fab |  | 5.5d | 2019-07-08 A | 2019-12-20 | JUICE-UVS 593169 | 50% | 19d | 2019-07-08 | 2019-07-15 | 19d | 0d | 2019-12-20 | 05.05 | 05.05.03.02 | Mechanical GSE | Phase C | % C |  | C | Kris | DSE | 50-50 | 19190.25.532 | PH CD | CP | BW |  | Y |  |  |  |  |  |  |  |  |
|  | 04 | **AI&T Procurements** |  |  | 2016-10-03 | 2019-05-21 |  |  |  |  |  |  |  |  |  |  |  |  |  |  |  |  |  |  |  |  |  |  |  |  |  |  |  |  |  |  |  |  |
| JUICE-UVS593868 |  | AI&T Procurements | milestone | 0d | 2016-10-03 A | 2016-10-03 A | JUICE-UVS 0023 | 100% |  |  |  |  |  |  | 05.05 | 05.05.04 | AI&T Procurements | Phase C | % C |  |  | Kris | DSE | 0-100 |  | PH CD |  |  |  |  | C | P |  |  |  |  |  |  |
| JUICE-UVS593871 |  | SVT Procure Heaters Lead Time |  | 543d | 2016-10-03 A | 2019-04-26 A | JUICE-UVS593868 | 100% |  | 2016-10-03 | 2018-11-30 |  |  |  | 05.05 | 05.05.04 | AI&T Procurements | Phase C | % C |  |  | Kris | DSE | % C |  | PH CD |  |  |  |  |  | P | SVT | SVT |  |  |  |  |
| JUICE-UVS593874 |  | SVT Procure EGSE Lab Equipment Lead Time |  | 543d | 2016-10-03 A | 2019-04-12 A | JUICE-UVS593868 | 100% |  | 2016-10-03 | 2018-11-30 |  |  |  | 05.05 | 05.05.04 | AI&T Procurements | Phase C | % C |  |  | Kris | DSE | % C |  | PH CD |  |  |  |  |  | P | SVT | SVT |  |  |  |  |
| JUICE-UVS593877 |  | SVT Shipping Cases Lead Time |  | 584d | 2016-10-03 A | 2019-04-26 A | JUICE-UVS593868 | 100% |  | 2016-10-03 | 2019-01-31 |  |  |  | 05.05 | 05.05.04 | AI&T Procurements | Phase C | % C |  |  | Kris | DSE | % C |  | PH CD |  |  |  |  |  | P | SVT | SVT |  |  |  |  |
| JUICE-UVS 11517 |  | EGSE Lab Equipment Delivery |  | 1d | 2019-04-15 A | 2019-04-15 A | JUICE-UVS593874 | 100% |  |  |  |  |  |  | 05.05 | 05.05.04 | AI&T Procurements | Phase C | % C |  | B | Kris | DSE | 0-100 | 19190.25.960 | PH CD |  |  | Flight Cost Entered |  |  | P |  |  | End B | Mat |  |  |
| JUICE-UVS 11661 |  | EGSE Material Task Receipt | milestone | 0d | 2019-04-15 A | 2019-04-15 A | JUICE-UVS 11517 | 100% |  |  |  |  |  |  | 05.05 | 05.05.04 | AI&T Procurements | Phase C | % C |  |  | Kris | DSE | 0-100 |  | PH CD |  |  |  |  | C | P |  |  |  |  |  |  |
| JUICE-UVS 592467 |  | Heaters Delivery |  | 19d | 2019-05-01 A | 2019-05-21 A | JUICE-UVS593871 | 100% |  | 2019-05-01 | 2019-05-29 |  |  |  | 05.05 | 05.05.04 | AI&T Procurements | Phase C | % C |  | C | Kris | DSE | 0-100 | 19190.25.960 | PH CD |  | KP | Flight Quote |  |  | P |  |  |  | Mat | B+ |  |
| JUICE-UVS11514 |  | Shipping Cases Delivery |  | 1d | 2019-05-01 A | 2019-05-01 A | JUICE-UVS593877 | 100% |  |  |  |  |  |  | 05.05 | 05.05.04 | AI&T Procurements | Phase C | % C | PH CD | C | Kris | DSE | 0-100 | 19190.25.960 | PH CD |  | KP | Flight Quote |  |  | P |  |  |  | Serv |  |  |
| JUICE-UVS 11664 |  | Shipping Cases Material Task Receipt | milestone | 0d | 2019-05-01 A | 2019-05-01 A | JUICE-UVS11514 | 100% |  |  |  |  |  |  | 05.05 | 05.05.04 | AI&T Procurements | Phase C | % C |  |  | Kris | DSE | 0-100 |  | PH CD |  |  |  |  | C | P |  |  |  |  |  |  |
| JUICE-UVS 11655 |  | Heater Material Task Receipt | milestone | 0d | 2019-05-21 A | 2019-05-21 A | JUICE-UVS 592467 | 100% |  | 2019-05-29 | 2019-05-29 |  |  |  | 05.05 | 05.05.04 | AI&T Procurements | Phase C | % C |  |  | Kris | DSE | 0-100 |  | PH CD |  |  |  |  | C | P |  |  |  |  |  |  |
|  | 07 | **Instrument Operations** |  |  | 2020-11-17 | 2022-09-21 |  |  |  |  |  |  |  |  |  |  |  |  |  |  |  |  |  |  |  |  |  |  |  |  |  |  |  |  |  |  |  |  |
|  | 01 | **Instrument Operations-1** |  |  | 2020-11-17 | 2022-09-21 |  |  |  |  |  |  |  |  |  |  |  |  |  |  |  |  |  |  |  |  |  |  |  |  |  |  |  |  |  |  |  |  |
|  | 01 | **Instrument Operations** |  |  | 2020-11-17 | 2022-09-21 |  |  |  |  |  |  |  |  |  |  |  |  |  |  |  |  |  |  |  |  |  |  |  |  |  |  |  |  |  |  |  |  |
| JUICE-UVS 592324 |  | Instruments Ops FY 21 |  | 217d | 2020-11-17 | 2021-09-30 | JUICE-UVS 0026 |  |  |  |  | 1d | 0d |  | 07 | 07.01.01 | Instruement Operations | Phase D |  |  |  | Maria | ISD-10 | LOE |  | PH CD |  |  |  |  |  |  |  |  |  |  |  | Mod |
| JUICE-UVS 592599 |  | Instruments Ops FY 22 |  | 242d | 2021-10-01 | 2022-09-20 | JUICE-UVS 592324 |  |  |  |  | 1d |  |  | 07 | 07.01.01 | Instruement Operations | Phase D |  |  |  | Maria | ISD-10 | LOE |  | PH CD |  |  |  |  |  |  |  |  |  | 0Budget |  | Mod |
| JUICE-UVS 5646 |  | JUICE-UVS Cruise/Interplanetary Transfer Sppt 2022 End of Phase D |  | 126d | 2022-03-22 | 2022-09-21 | JUICE-UVS 0057 |  |  |  |  | 0d |  |  | 07 | 07.01.01 | Instruement Operations | Phase D |  |  | D | Maria | ISD-10 | LOE |  | PH CD |  |  |  |  |  |  |  |  |  | 0Budget |  | Mod |
| JUICE-UVS 5709 |  | JUICE-UVS Pre Launch |  | 52d | 2022-03-22 | 2022-06-03 | JUICE-UVS 0057 |  |  |  |  | 0d |  |  | 07 | 07.01.01 | Instruement Operations | Phase D |  |  | D | Maria | ISD-10 | LOE |  | PH CD |  |  |  |  |  |  |  |  |  | 0Budget |  | Mod |

Notes:
- JUICE-UVS 11502: Steps: BP GSE Cables (done); Misc Cables (done); TVAC GSE Cables (done) / Justify: Activity has started
- JUICE-UVS 593172: Justify: Vacuum Test Fixture Design not needed until as late as possible
- JUICE-UVS 11652: Justify: Vacuum Test Fixture Fab not needed until as late as possible
- JUICE-UVS 11619: Justify: Lifting Handle Fab not needed until as late as possible
- JUICE-UVS 593169: Justify: Vibe Fixture Design not needed until as late as possible
- JUICE-UVS 11649: Justify: Vibe Fixture Fab not needed until as late as possible
- JUICE-UVS 592467: Justify: Heater Delivery not needed until December 2017

| ID | WBS | Activity | Type | Duration | Start | Finish | Predecessors | Complete | Remaining | Planned start | Planned finish | Total float | Free float | Constraint | Expected finish | user_text1 JUICE-UVS Risk ID | user_text8 | CA | WP/PP | Work Package Name | JUICE UVS Phases | EVT | NASA Phase | JUICE-UVS CAMs | OBS | P6 EVT | JUICE-UVS Charge #s | JUICE-UVS Phase CD | JUICE-UVS Resources | Justify | M/S | JUICE-UVS Procurements | JUICE-UVS SVT | SVT |
| --- | --- | --- | --- | --- | --- | --- | --- | --- | --- | --- | --- | --- | --- | --- | --- | --- | --- | --- | --- | --- | --- | --- | --- | --- | --- | --- | --- | --- | --- | --- | --- | --- | --- | --- |
|  | 02 | **Delete Per BCR 38** |  |  |  |  |  |  |  |  |  |  |  |  |  |  |  |  |  |  |  |  |  |  |  |  |  |  |  |  |  |  |  |  |
|  | 01 | **Delete Per BCR 38** |  |  |  |  |  |  |  |  |  |  |  |  |  |  |  |  |  |  |  |  |  |  |  |  |  |  |  |  |  |  |  |  |
|  | 03 | **Delete Per BCR 38-1** |  |  |  |  |  |  |  |  |  |  |  |  |  |  |  |  |  |  |  |  |  |  |  |  |  |  |  |  |  |  |  |  |
|  | 01 | **Delete Per BCR 38** |  |  |  |  |  |  |  |  |  |  |  |  |  |  |  |  |  |  |  |  |  |  |  |  |  |  |  |  |  |  |  |  |
|  | 09 | **Ground Data System (SOC)** |  |  | 2016-10-03 | 2022-08-26 |  |  |  |  |  |  |  |  |  |  |  |  |  |  |  |  |  |  |  |  |  |  |  |  |  |  |  |  |
|  | 01 | **GDS Management** |  |  | 2016-10-03 | 2022-08-26 |  |  |  |  |  |  |  |  |  |  |  |  |  |  |  |  |  |  |  |  |  |  |  |  |  |  |  |  |
|  | 01 | **GDS Mgmt Phase C/D** |  |  | 2016-10-03 | 2018-05-25 |  |  |  |  |  |  |  |  |  |  |  |  |  |  |  |  |  |  |  |  |  |  |  |  |  |  |  |  |
| JUICE-UVS 11179 |  | SOC Support - FY 17 |  | 250d | 2016-10-03 A | 2017-09-29 A | JUICE-UVS 0011 | 100% |  |  |  |  |  |  |  | Risk ID 28 | MA | 09 | 09.01.01 | GDS Mgmt. Phase D | Phase C | LOE | C | Maria | ISD-10 | LOE | 19190.29.110 | PH CD |  |  |  |  |  |  |
| JUICE-UVS 11182 |  | SOC Support - FY 18 |  | 250d | 2017-10-02 A | 2018-05-25 A | JUICE-UVS 11179 | 100% |  | 2017-10-02 | 2018-09-28 |  |  |  |  | Risk ID 28 | MA | 09 | 09.01.01 | GDS Mgmt. Phase D | Phase C | LOE | C | Maria | ISD-10 | LOE | 19190.29.110 | PH CD |  |  |  |  |  |  |
| JUICE-UVS 11185 |  | SOC Support - FY 19 |  | 1d | 2018-05-24 A | 2018-05-24 A | JUICE-UVS 11182 | 100% |  |  |  |  |  |  |  | Risk ID 28 | MA | 09 | 09.01.01 | GDS Mgmt. Phase D | Phase C | LOE | C | Maria | ISD-10 | LOE | 19190.29.110 | PH CD |  |  |  |  |  |  |
| JUICE-UVS 11188 |  | SOC Support - FY 20 |  | 1d | 2018-05-24 A | 2018-05-24 A | JUICE-UVS 11185 | 100% |  |  |  |  |  |  |  | Risk ID 28 | MA | 09 | 09.01.01 | GDS Mgmt. Phase D | Phase C | LOE | C | Maria | ISD-10 | LOE | 19190.29.110 | PH CD |  |  |  |  |  |  |
| JUICE-UVS 11191 |  | SOC Support - FY 21 Start of Phase D |  | 1d | 2018-05-24 A | 2018-05-24 A | JUICE-UVS 11233 | 100% |  |  |  |  |  |  |  | Risk ID 28 | MA | 09 | 09.01.01 | GDS Mgmt. Phase D | Phase D | LOE | D | Maria | ISD-10 | LOE | 19190.29.110 | PH CD |  |  |  |  |  |  |
| JUICE-UVS 11233 |  | SOC Support - FY 21 End of Phase C |  | 1d | 2018-05-24 A | 2018-05-24 A | JUICE-UVS 11188 | 100% |  |  |  |  |  |  |  | Risk ID 28 | MA | 09 | 09.01.01 | GDS Mgmt. Phase D | Phase C | LOE | C | Maria | ISD-10 | LOE | 19190.29.110 | PH CD | 0Budget |  |  |  |  |  |
| JUICE-UVS 11236 |  | SOC Support - FY 22 End of Phase D |  | 1d | 2018-05-24 A | 2018-05-24 A | JUICE-UVS 11191 | 100% |  |  |  |  |  |  |  | Risk ID 28 | MA | 09 | 09.01.01 | GDS Mgmt. Phase D | Phase D | LOE | D | Maria | ISD-10 | LOE | 19190.29.110 | PH CD | 0Budget |  |  |  |  |  |
| JUICE-UVS 7980 |  | Data Management FY 18 |  | 1d | 2018-05-24 A | 2018-05-24 A | JUICE-UVS 0029, JUICE-UVS 11188 | 100% |  |  |  |  |  |  |  | Risk ID 28 | MA | 09 | 09.01.01 | GDS Mgmt. Phase D | Phase C | LOE | D | Maria | ISD-10 | LOE | 19190.29.110 | PH CD |  |  |  |  |  |  |
| JUICE-UVS 7983 |  | Data Management FY 18 |  | 1d | 2018-05-24 A | 2018-05-24 A | JUICE-UVS 7980 | 100% |  |  |  |  |  |  |  | Risk ID 28 | MA | 09 | 09.01.01 | GDS Mgmt. Phase D | Phase D | LOE |  | Maria | ISD-10 | LOE | 19190.29.110 | PH CD |  |  |  |  |  |  |
|  | 02 | **GDS Mgmt PP** |  |  | 2019-09-30 | 2022-08-26 |  |  |  |  |  |  |  |  |  |  |  |  |  |  |  |  |  |  |  |  |  |  |  |  |  |  |  |  |
| JUICE-UVS 594231 |  | SOC Support FY 19 -22 |  | 811d | 2019-09-30 A | 2022-08-26 | JUICE-UVS 0011 | 15% | 691d | 2019-09-30 | 2022-12-27 | 16d | 0d | start on or after 2019-09-30 | 2022-08-26 | Risk ID 28 | MA | 09 | 09.01.02 | GDS Mgmt. PP | Phase C | PP | C | Maria | ISD-10 | PP |  | PH CD |  | SOC Support planned start dated |  |  |  |  |
| JUICE-UVS 594240 |  | Data Management FY 21 - 22 |  | 419d | 2020-10-01 | 2022-06-03 | JUICE-UVS 0011 |  |  |  |  | 74d |  | start on or after 2020-10-01 |  | Risk ID 28 | MA | 09 | 09.01.02 | GDS Mgmt. PP | Phase C | PP | D | Maria | ISD-10 | PP |  | PH CD |  | Data Management planned start dated |  |  |  |  |
|  | 02 | **GDS Development PP** |  |  | 2020-02-03 | 2021-10-29 |  |  |  |  |  |  |  |  |  |  |  |  |  |  |  |  |  |  |  |  |  |  |  |  |  |  |  |  |
| JUICE-UVS 593880 |  | GDS Purchase Request | milestone | 0d | 2020-02-03 | 2020-02-03 | JUICE-UVS 592908 |  |  |  |  | 289d | 0d | start on or after 2020-02-03 |  |  |  | 09 | 09.02 | GDS Development PP | Phase C | PP |  | Maria | ISD-10 | PP |  | PH CD |  | Project Mandated GDS Purchase Start Date | C | P |  |  |
| JUICE-UVS 593883 |  | SVT GDS Procurement Lead Time |  | 54d | 2020-02-03 | 2020-04-16 | JUICE-UVS 593880 SS |  |  |  |  | 289d | 0d |  |  |  |  | 09 | 09.02 | GDS Development PP | Phase C | PP |  | Maria | ISD-10 | PP |  | PH CD |  |  |  | P | SVT | SVT |
| JUICE-UVS 7990 |  | GDS Procurement Delivery |  | 5d | 2020-04-17 | 2020-04-23 | JUICE-UVS 593883 |  |  |  |  | 289d | 0d |  |  |  |  | 09 | 09.02 | GDS Development PP | Phase C | PP | E | Maria | ISD-10 | PP |  | PH CD | 0Budget |  |  | P |  |  |
| JUICE-UVS 7993 |  | GDS Material Task Receipt | milestone | 0d | 2020-04-23 | 2020-04-23 | JUICE-UVS 7990 |  |  |  |  | 289d | 141d |  |  |  |  | 09 | 09.02 | GDS Development PP | Phase C | PP |  | Maria | ISD-10 | PP |  | PH CD |  |  | C | P |  |  |
| JUICE-UVS 10600 |  | GDS Training, Integration & Test |  | 362d | 2020-11-16 | 2021-10-29 | JUICE-UVS 7993, JUICE-UVS 0014 |  |  | 2020-11-16 | 2022-04-27 | 148d |  |  |  |  |  | 09 | 09.02 | GDS Development PP | Phase C | PP | B | Maria | ISD-10 | PP |  | PH CD |  |  |  |  |  |  |
| JUICE-UVS 593661 |  | GDS Software Development |  | 362d | 2020-11-16 | 2021-10-29 | JUICE-UVS 0014 |  |  | 2020-11-16 | 2022-04-27 | 148d |  |  |  |  |  | 09 | 09.02 | GDS Development PP | Phase C | PP |  | Maria | ISD-10 | PP |  | PH CD |  |  |  |  |  |  |

| ID | WBS | Activity | Type | Duration | Start | Finish | Predecessors | Complete | Remaining | Planned start | Planned finish | Total float | Free float | Constraint | Expected finish | user_text4 | user_text8 | CA | WP/PP | Work Package Name | JUICE UVS Phases | EVT | NASA Phase | JUICE-UVS CAMs | OBS | P6 EVT | JUICE-UVS Charge #s | JUICE-UVS Phase CD | JUICE UVS Phase CD | user_text1 JUICE-UVS Risk ID | user_text2 | M/S | LOE | PHAS - Alice (Old) | BUDG - Budget Phase | SORT - Item Sort | PERT - Pert Select | JUICE-UVS Resources |
| --- | --- | --- | --- | --- | --- | --- | --- | --- | --- | --- | --- | --- | --- | --- | --- | --- | --- | --- | --- | --- | --- | --- | --- | --- | --- | --- | --- | --- | --- | --- | --- | --- | --- | --- | --- | --- | --- | --- |
|  | 03 | **Delete Per BCR 37** |  |  |  |  |  |  |  |  |  |  |  |  |  |  |  |  |  |  |  |  |  |  |  |  |  |  |  |  |  |  |  |  |  |  |  |  |
|  | 04 | **Delete Per BCR 37-1** |  |  |  |  |  |  |  |  |  |  |  |  |  |  |  |  |  |  |  |  |  |  |  |  |  |  |  |  |  |  |  |  |  |  |  |  |
|  | 10 | **System Integration & Test** |  |  | 2018-11-02 | 2022-09-21 |  |  |  |  |  |  |  |  |  |  |  |  |  |  |  |  |  |  |  |  |  |  |  |  |  |  |  |  |  |  |  |  |
|  | 01 | **Oversight, Planning/Procedures** |  |  | 2018-11-02 | 2022-09-21 |  |  |  |  |  |  |  |  |  |  |  |  |  |  |  |  |  |  |  |  |  |  |  |  |  |  |  |  |  |  |  |  |
| JUICE-UVS 5688 |  | EM Support @ ESTEC |  | 45d | 2018-11-02 A | 2019-07-08 A | JUICE-UVS594138 | 100% |  | 2018-11-02 | 2019-01-10 |  |  | start on or after 2018-11-02 |  | Mod | MD | 10.0 | 10.01 | SIT Oversight, Planning/Procedures | Phase C | % C | C | Mike | DSR | % C | 19190.29.710 | PH CD |  |  |  |  |  |  |  |  |  |  |
| JUICE-UVS 5685 |  | EM & FM I&T Support @ ESTEC FY 19 |  | 145d | 2019-10-07 A | 2020-05-01 | JUICE-UVS 5688 |  | 111d |  |  | 387d | 0d | start on or after 2019-10-07 | 2020-05-01 |  |  | 10.0 | 10.01 |  | Phase C | % C | C | Mike | DSR | % C | 19190.29.710 |  | PH CD |  |  |  |  |  |  |  |  |  |
| JUICE-UVS 5700 |  | FM I&T Support @ ESTEC FY 20 |  | 169d | 2020-05-04 | 2021-01-07 | JUICE-UVS 5685 |  |  |  |  | 387d | 0d |  |  | Mod | MD | 10.0 | 10.01 | SIT Oversight, Planning/Procedures | Phase C | % C | C | Mike | DSR | % C | 19190.29.710 | PH CD |  | Risk ID 9, 26 | CS5 |  |  |  |  |  |  |  |
| JUICE-UVS 5703 |  | FM I&T Support @ ESTEC Complete | milestone | 0d | 2021-01-07 | 2021-01-07 | JUICE-UVS 5700 |  |  |  |  | 387d |  | finish on or after 2020-06-02 |  |  |  | 10.0 | 10.01 | SIT Oversight, Planning/Procedures | Phase C | % C |  | Mike | DSR | % C |  | PH CD |  | Risk ID 9, 26 |  | C |  |  |  |  |  |  |
| JUICE-UVS 5691 |  | I&T Support @ Launch Site |  | 40d | 2022-07-26 | 2022-09-21 | JUICE-UVS 5703 |  |  |  |  | 0d |  | as late as possible |  | Mod | MD | 10.0 | 10.01 | SIT Oversight, Planning/Procedures | Phase C | % C | D | Mike | DSR | % C | 19190.29.710 | PH CD |  | Risk ID 9, 26 | CS5 |  |  |  |  |  |  |  |
| JUICE-UVS 5694 |  | STM Support @ ESTEC |  | 10d | 2022-09-08 | 2022-09-21 | JUICE-UVS 51067 |  |  |  |  | 0d |  | as late as possible |  |  | MD | 10.0 | 10.01 | SIT Oversight, Planning/Procedures | Phase C | % C | C | Mike | DSR | % C | 19190.29.710 | PH CD |  |  |  |  |  |  |  |  |  |  |
|  | 02 | **AI&T Support** |  |  | 2020-01-22 | 2022-06-07 |  |  |  |  |  |  |  |  |  |  |  |  |  |  |  |  |  |  |  |  |  |  |  |  |  |  |  |  |  |  |  |  |
| JUICE-UVS 5010 |  | Spacecraft Functional Test Support |  | 250d | 2020-01-22 | 2021-01-19 | JUICE-UVS 089 |  |  |  |  | 72d | 0d |  |  | Mod | MD | 10.0 | 10.02 | SIT AI&T Support | Phase C | LOE | C | Mike | DSR | LOE | 19190.29.810 | PH CD |  |  |  |  | LOE | 710 | C/D | INT&TEST | N |  |
| JUICE-UVS 592563 |  | Additional Support FY 21 |  | 101d | 2020-09-30 | 2021-02-24 | JUICE-UVS 0029 |  |  |  |  | 293d | 221d |  |  | Mod | MD | 10.0 | 10.02 | SIT AI&T Support | Phase C | LOE |  | Mike | DSR | LOE | 19190.29.810 | PH CD |  |  |  |  | LOE |  |  |  |  |  |
| JUICE-UVS 5030 |  | Spacecraft Environmental Test Support |  | 247d | 2021-01-20 | 2022-01-14 | JUICE-UVS 5010 |  |  |  |  | 72d | 0d |  |  | Mod | MD | 10.0 | 10.02 | SIT AI&T Support | Phase C | LOE | C | Mike | DSR | LOE | 19190.29.810 | PH CD |  |  |  |  | LOE | 730 | C/D | INT&TEST | N |  |
| JUICE-UVS 592566 |  | Additional Support FY 21 |  | 100d | 2022-01-17 | 2022-06-07 | JUICE-UVS 5030, JUICE-UVS 592563 |  |  |  |  | 72d |  |  |  | Mod | MD | 10.0 | 10.02 | SIT AI&T Support | Phase C | LOE |  | Mike | DSR | LOE | 19190.29.810 | PH CD |  |  |  |  | LOE |  |  |  |  |  |
|  | 03 | **Ground Support Equipment** |  |  | 2021-08-02 | 2021-10-26 |  |  |  |  |  |  |  |  |  |  |  |  |  |  |  |  |  |  |  |  |  |  |  |  |  |  |  |  |  |  |  |  |
| JUICE-UVS 5050 |  | Launch Site I&T Spt |  | 20d | 2021-08-02 | 2021-08-27 | JUICE-UVS 0023 |  |  |  |  | 99d | 0d | as late as possible |  | Mod |  | 10.0 | 10.03 | SIT Ground Support Equipment | Phase D | % C | D | Mike | DSR | 50-50 | 19190.39.310 | PH CD |  |  |  |  | X | 810 | C/D | INT&TEST | N |  |
| JUICE-UVS 5060 |  | Prep for Commissioning & Post-Launch Checkout |  | 40d | 2021-08-30 | 2021-10-26 | JUICE-UVS 5050 |  |  |  |  | 99d | 0d | as late as possible |  | Mod |  | 10.0 | 10.03 | SIT Ground Support Equipment | Phase D | % C | D | Mike | DSR | 50-50 | 19190.39.310 | PH CD |  |  |  |  | X | 820 | C/D | INT&TEST | N | 0Budget |
| JUICE-UVS 5063 |  | Post-Launch Checkout Complete | milestone | 0d | 2021-10-26 | 2021-10-26 | JUICE-UVS 5060 |  |  |  |  | 99d |  | finish on or after 2021-10-26 |  |  |  | 10.0 | 10.03 | SIT Ground Support Equipment | Phase D | % C |  | Mike | DSR | 0-100 |  | PH CD |  |  |  | C |  |  |  |  |  |  |

Notes:
- JUICE-UVS 5688: Steps: EM FFT Test Spec Update (done); EM FFT Test Spec Release (done); EM Electrical Integration (done); EM S/C FFT Support (done); EM S/C Testing Oversight (done) / Justify: Project Level Mandated Start Date
- JUICE-UVS 5703: Justify: Project Level Mandated Finish Date
- JUICE-UVS 5691: Justify: Project Level Mandated Start Date
- JUICE-UVS 5694: Justify: Project level Mandated Finish Date
- JUICE-UVS 5050: Justify: Launch Site Spt not need until as late as Possible
- JUICE-UVS 5060: Justify: Commissioning & Post-Launch Spt not need until as late as Possible
- JUICE-UVS 5063: Justify: Project Level Mandatory Finish Date

## Activity codes

| Code | Value | Meaning |
| --- | --- | --- |
| BUDG - Budget Phase | B | Phase B Dollars |
| BUDG - Budget Phase | B+ | Juno POP for MSFC |
| BUDG - Budget Phase | C/D | Phase C/D Dollars |
| EVT | % C | Percent Complete |
| EVT | LOE | Level of Effort |
| EVT | PP | Planning Package |
| Forecast Chg | Y | Change Incorporated |
| JUICE Mission Phases | End B | End of B to July 1 2016 |
| JUICE UVS Phase CD | PH CD | Phase CD |
| JUICE UVS Phases | Phase C | JUICE-UVS Phase C Tasks |
| JUICE UVS Phases | Phase D | JUICE-UVS Phase D Tasks |
| JUICE-UVS CAMs | Brandon | Brandon Walther |
| JUICE-UVS CAMs | Cyndi | Cyndi Kempe |
| JUICE-UVS CAMs | Joerg | Joerg Gerhardus |
| JUICE-UVS CAMs | Kris | Kristian Persson |
| JUICE-UVS CAMs | Maria | Maria Araujo |
| JUICE-UVS CAMs | Mary F | Mary Francis Araujo |
| JUICE-UVS CAMs | Matt | Matt Freeman |
| JUICE-UVS CAMs | Mike | Mike Davis |
| JUICE-UVS CP | CP | Critical Path |
| JUICE-UVS Charge #s | 19190.21.110 | Sustained PM |
| JUICE-UVS Charge #s | 19190.21.180 | Custom Broker Support |
| JUICE-UVS Charge #s | 19190.21.190 | MGT SDRLs |
| JUICE-UVS Charge #s | 19190.21.210 | Discrete PM |
| JUICE-UVS Charge #s | 19190.21.220 | Project Control |
| JUICE-UVS Charge #s | 19190.21.310 | Financial |
| JUICE-UVS Charge #s | 19190.21.410 | CAM Support Labor |
| JUICE-UVS Charge #s | 19190.21.420 | CAM Support Non-Labor |
| JUICE-UVS Charge #s | 19190.21.510 | Travel Phase C |
| JUICE-UVS Charge #s | 19190.21.610 | Project Support |
| JUICE-UVS Charge #s | 19190.21.710 | ESA QR Support |
| JUICE-UVS Charge #s | 19190.21.720 | NASA CDR Support |
| JUICE-UVS Charge #s | 19190.21.730 | ESA CDR Support |
| JUICE-UVS Charge #s | 19190.21.740 | NASA PER Support |
| JUICE-UVS Charge #s | 19190.21.750 | NASA PSR Support |
| JUICE-UVS Charge #s | 19190.21.810 | Config MGT |
| JUICE-UVS Charge #s | 19190.21.820 | Doc Control |
| JUICE-UVS Charge #s | 19190.21.910 | Control Stores |
| JUICE-UVS Charge #s | 19190.22.110 | Sustained SE Support |
| JUICE-UVS Charge #s | 19190.22.120 | Discrete SE Support |
| JUICE-UVS Charge #s | 19190.22.210 | Specs/ICDs (Doors) |
| JUICE-UVS Charge #s | 19190.22.310 | PSD Analysis |
| JUICE-UVS Charge #s | 19190.22.320 | UVS RAD Analysis |
| JUICE-UVS Charge #s | 19190.22.330 | UVS FMEA |
| JUICE-UVS Charge #s | 19190.22.340 | PWA WCA |
| JUICE-UVS Charge #s | 19190.22.350 | Thermal Analysis |
| JUICE-UVS Charge #s | 19190.22.351 | Revise Thermal Analysis |
| JUICE-UVS Charge #s | 19190.22.360 | Structural Analysis |
| JUICE-UVS Charge #s | 19190.22.370 | UVS PRA |
| JUICE-UVS Charge #s | 19190.22.410 | Verification Plan/Matrix |
| JUICE-UVS Charge #s | 19190.22.420 | Verification - ADP |
| JUICE-UVS Charge #s | 19190.22.430 | UVS Test Plans |
| JUICE-UVS Charge #s | 19190.22.440 | UVS Test Procs |
| JUICE-UVS Charge #s | 19190.22.450 | UVS ATP Proc |
| JUICE-UVS Charge #s | 19190.22.460 | UVS Cal Proc |
| JUICE-UVS Charge #s | 19190.22.510 | Contamination Control |
| JUICE-UVS Charge #s | 19190.22.515 | Contamination Control FY 18-19 |
| JUICE-UVS Charge #s | 19190.23.110 | PA Sustaining support |
| JUICE-UVS Charge #s | 19190.23.120 | PA Discrete Support |
| JUICE-UVS Charge #s | 19190.23.210 | Safety Engineering |
| JUICE-UVS Charge #s | 19190.23.220 | Hazard Analysis |
| JUICE-UVS Charge #s | 19190.23.310 | Sustained Parts Engineering |
| JUICE-UVS Charge #s | 19190.23.320 | Discrete Parts Engineering |
| JUICE-UVS Charge #s | 19190.23.410 | Materials & Process |
| JUICE-UVS Charge #s | 19190.23.510 | Harware QA Support |
| JUICE-UVS Charge #s | 19190.23.610 | Sustained SWQA Support |
| JUICE-UVS Charge #s | 19190.23.620 | Discrete SWQA Support |
| JUICE-UVS Charge #s | 19190.24.110 | Science Oversight & Supt PI |
| JUICE-UVS Charge #s | 19190.24.120 | Science Oversight & Supt DPI |
| JUICE-UVS Charge #s | 19190.24.130 | Discrete Science Support |
| JUICE-UVS Charge #s | 19190.24.140 | Science Oversight & Supt CO-I |
| JUICE-UVS Charge #s | 19190.24.210 | CO-I CU |
| JUICE-UVS Charge #s | 19190.24.220 | CO-I JHU |
| JUICE-UVS Charge #s | 19190.24.230 | CO-I Magrath |
| JUICE-UVS Charge #s | 19190.24.310 | Mission Design & Analysis |
| JUICE-UVS Charge #s | 19190.25.105 | Mechanical Oversight |
| JUICE-UVS Charge #s | 19190.25.110 | EM Structural Housing Fab CD |
| JUICE-UVS Charge #s | 19190.25.111 | FM Final Design |
| JUICE-UVS Charge #s | 19190.25.112 | FM Housing Fab |
| JUICE-UVS Charge #s | 19190.25.113 | FM TA Plates |
| JUICE-UVS Charge #s | 19190.25.114 | FM Housing Cover |
| JUICE-UVS Charge #s | 19190.25.115 | FM Pump Out Tube |
| JUICE-UVS Charge #s | 19190.25.116 | FM Mechanisms |
| JUICE-UVS Charge #s | 19190.25.120 | Fab Fixtures |
| JUICE-UVS Charge #s | 19190.25.122 | Handling Fixtures |
| JUICE-UVS Charge #s | 19190.25.140 | STM Design |
| JUICE-UVS Charge #s | 19190.25.141 | STM Elec Bd MMs |
| JUICE-UVS Charge #s | 19190.25.142 | STM Det MM |
| JUICE-UVS Charge #s | 19190.25.143 | STM Grating |
| JUICE-UVS Charge #s | 19190.25.144 | STM Mirror |
| JUICE-UVS Charge #s | 19190.25.145 | STM DET |
| JUICE-UVS Charge #s | 19190.25.146 | STM Housing |
| JUICE-UVS Charge #s | 19190.25.147 | STM Assembly |
| JUICE-UVS Charge #s | 19190.25.148 | STM Bench Check |
| JUICE-UVS Charge #s | 19190.25.149 | STM Vibe Test |
| JUICE-UVS Charge #s | 19190.25.150 | STM Thermal Test |
| JUICE-UVS Charge #s | 19190.25.151 | STM Mass Props |
| JUICE-UVS Charge #s | 19190.25.152 | STM Final Closeout |
| JUICE-UVS Charge #s | 19190.25.160 | EM Mechanical |
| JUICE-UVS Charge #s | 19190.25.170 | Back Shell Labor |
| JUICE-UVS Charge #s | 19190.25.171 | Back Shell QA |
| JUICE-UVS Charge #s | 19190.25.210 | C&DH EM Test CD |
| JUICE-UVS Charge #s | 19190.25.211 | C&DH FM Final Design |
| JUICE-UVS Charge #s | 19190.25.212 | C&DH FM FPGA |
| JUICE-UVS Charge #s | 19190.25.213 | C&DH FM Fab |
| JUICE-UVS Charge #s | 19190.25.214 | C&DH FM Test |
| JUICE-UVS Charge #s | 19190.25.220 | LVPS FM Final Design |
| JUICE-UVS Charge #s | 19190.25.221 | LVPS FM 1 Fab |
| JUICE-UVS Charge #s | 19190.25.222 | LVPS FM 2 Fab |
| JUICE-UVS Charge #s | 19190.25.223 | LVPS FM 1 Test |
| JUICE-UVS Charge #s | 19190.25.224 | LVPS FM 2 Test |
| JUICE-UVS Charge #s | 19190.25.225 | LVPS Input Filter |
| JUICE-UVS Charge #s | 19190.25.230 | HVPS FM Final Design |
| JUICE-UVS Charge #s | 19190.25.231 | HVPS FM Fab |
| JUICE-UVS Charge #s | 19190.25.232 | HVPS EM Test |
| JUICE-UVS Charge #s | 19190.25.233 | HVPS FM Test |
| JUICE-UVS Charge #s | 19190.25.240 | Harness FM |
| JUICE-UVS Charge #s | 19190.25.241 | Backplane EM Fab |
| JUICE-UVS Charge #s | 19190.25.242 | Backplane EM Test |
| JUICE-UVS Charge #s | 19190.25.243 | Backplane FM Design |
| JUICE-UVS Charge #s | 19190.25.244 | Backplane FM Fab |
| JUICE-UVS Charge #s | 19190.25.245 | Backplane FM Test |
| JUICE-UVS Charge #s | 19190.25.310 | Optics FM |
| JUICE-UVS Charge #s | 19190.25.330 | Detector SubC MGT |
| JUICE-UVS Charge #s | 19190.25.331 | Discrete SubC MGT |
| JUICE-UVS Charge #s | 19190.25.332 | Detector FM |
| JUICE-UVS Charge #s | 19190.25.333 | Detector Subcontract & MS Payment |
| JUICE-UVS Charge #s | 19190.25.410 | FSW MGT |
| JUICE-UVS Charge #s | 19190.25.420 | FSW SE |
| JUICE-UVS Charge #s | 19190.25.430 | FSW Build 1 |
| JUICE-UVS Charge #s | 19190.25.440 | FSW Build 2 (EM) |
| JUICE-UVS Charge #s | 19190.25.450 | FSW Build 3 (EM) |
| JUICE-UVS Charge #s | 19190.25.460 | FSW Build 4 (FM) |
| JUICE-UVS Charge #s | 19190.25.470 | Test Scripts |
| JUICE-UVS Charge #s | 19190.25.471 | TM/TC Database Definitions |
| JUICE-UVS Charge #s | 19190.25.472 | SpaceWire Updated |
| JUICE-UVS Charge #s | 19190.25.473 | GSE SW |
| JUICE-UVS Charge #s | 19190.25.474 | SW Bug Fixes |
| JUICE-UVS Charge #s | 19190.25.475 | SIS Testing |
| JUICE-UVS Charge #s | 19190.25.500 | EM Integration |
| JUICE-UVS Charge #s | 19190.25.501 | EM 2 Integration |
| JUICE-UVS Charge #s | 19190.25.502 | EM I&T Management |
| JUICE-UVS Charge #s | 19190.25.503 | EM 1 Functional Test |
| JUICE-UVS Charge #s | 19190.25.504 | EM 1 EMI/EMC Test Full Configuration |
| JUICE-UVS Charge #s | 19190.25.505 | EM 1 Reconfiguration & Test for ESA |
| JUICE-UVS Charge #s | 19190.25.506 | Prepare EM 1 Data Package |
| JUICE-UVS Charge #s | 19190.25.507 | EM 1 Delivery |
| JUICE-UVS Charge #s | 19190.25.508 | EM 2 Final Assembly/Testing |
| JUICE-UVS Charge #s | 19190.25.509 | EM 2 Delivery to FSW |
| JUICE-UVS Charge #s | 19190.25.510 | Anomaly Resolution |
| JUICE-UVS Charge #s | 19190.25.520 | Integrate FM Optics & Detector |
| JUICE-UVS Charge #s | 19190.25.521 | Integrate FM Electronics |
| JUICE-UVS Charge #s | 19190.25.522 | FM Test |
| JUICE-UVS Charge #s | 19190.25.523 | FM EMI/EMC Test |
| JUICE-UVS Charge #s | 19190.25.524 | FM Magnetics Test |
| JUICE-UVS Charge #s | 19190.25.525 | FM Post - EMI Functional Test |
| JUICE-UVS Charge #s | 19190.25.526 | FM Vibe Test |
| JUICE-UVS Charge #s | 19190.25.527 | FM TVAC/TBAL Test |
| JUICE-UVS Charge #s | 19190.25.528 | FM Cal & Pre delivery Testing |
| JUICE-UVS Charge #s | 19190.25.529 | FM Delivery |
| JUICE-UVS Charge #s | 19190.25.530 | Electrical GSE - SC Emulator/Power |
| JUICE-UVS Charge #s | 19190.25.531 | Electrical GSE - Cables |
| JUICE-UVS Charge #s | 19190.25.532 | Mechanical GSE |
| JUICE-UVS Charge #s | 19190.25.570 | Instrument SDRLs |
| JUICE-UVS Charge #s | 19190.25.601 | LVPS AR 19190-4 |
| JUICE-UVS Charge #s | 19190.25.801 | EM Electrical Harness |
| JUICE-UVS Charge #s | 19190.25.905 | Back Shell Parts |
| JUICE-UVS Charge #s | 19190.25.910 | FM Mech Piece Parts |
| JUICE-UVS Charge #s | 19190.25.915 | EM Mechanical Procurements |
| JUICE-UVS Charge #s | 19190.25.920 | Mechanical Procurements |
| JUICE-UVS Charge #s | 19190.25.930 | EGSE Procurement |
| JUICE-UVS Charge #s | 19190.25.940 | EEE Parts Procurements |
| JUICE-UVS Charge #s | 19190.25.941 | C&DH Procurements |
| JUICE-UVS Charge #s | 19190.25.942 | LVPS Procurements |
| JUICE-UVS Charge #s | 19190.25.943 | HVPS Procurements |
| JUICE-UVS Charge #s | 19190.25.944 | Harness Procurements |
| JUICE-UVS Charge #s | 19190.25.945 | Backplane Procurements |
| JUICE-UVS Charge #s | 19190.25.946 | EE HIgh Value Parts |
| JUICE-UVS Charge #s | 19190.25.950 | Optics Procurement |
| JUICE-UVS Charge #s | 19190.25.960 | AI&T Procurements AB |
| JUICE-UVS Charge #s | 19190.25.970 | Detector Procurements |
| JUICE-UVS Charge #s | 19190.29.110 | GDS MGT Phase D |
| JUICE-UVS Charge #s | 19190.29.710 | SIT Oversight, Planning/Procs |
| JUICE-UVS Charge #s | 19190.29.810 | SIT AI&T Support |
| JUICE-UVS Charge #s | 19190.31.510 | Travel Phase D |
| JUICE-UVS Charge #s | 19190.39.310 | SIT GSE |
| JUICE-UVS EM CP | EM CP | EM Critical Path |
| JUICE-UVS FM CP | FM CP | FM Critical Path |
| JUICE-UVS Phase AB Charge #s | 19190.15.141 | Mech EM1 Fab |
| JUICE-UVS Phase AB Charge #s | 19190.15.250 | Harness & Backplane |
| JUICE-UVS Phase AB Charge #s | 19190.15.412 | EM Mech Parts |
| JUICE-UVS Phase CD | PH CD | JUICE-UVS CS Tasks |
| JUICE-UVS Procurements | P | JUICE-UVS Procurements |
| JUICE-UVS Resources | 0Budget | $0.00 Budget |
| JUICE-UVS Resources | Mat | Material |
| JUICE-UVS Resources | SUBs | Sub Contractor |
| JUICE-UVS Resources | Serv | Service |
| JUICE-UVS STM CP | STM CP | STM Critical Path |
| JUICE-UVS SVT | SVT | Schedule Visability Task |
| JUICE-UVS Summary Milestones | Summary | Summary Milestones |
| LOE | LOE | Level of Effort |
| M/S | C | Completion M/S |
| M/S | D | Deliverable M/S |
| M/S | P | Project Level M/S |
| M/S | R | Receivable M/S |
| Major Milestones | x | Major Milestone |
| NASA Phase | B | Phase B |
| NASA Phase | C | Phase C |
| NASA Phase | D | Phase D |
| NASA Phase | E | Phase E |
| OBS | DSE | Dept. Space Engineering |
| OBS | DSI | Dept Space Instrumentation |
| OBS | DSR | Dept. Space Research |
| OBS | IQS | Institute Quality Systems |
| OBS | ISD-10 | Intelligent Systems Dept. (Div10) |
| OBS | SSED | Division Business Operations |
| P6 EVT | % C | Percent Complete (Physical) |
| P6 EVT | LOE | Level of Effort |
| P6 EVT | PP | Planning Package |
| PERT - Pert Select | N | Hide in PERT |
| PERT - Pert Select | Y | View in PERT |
| PHAS - Alice (Old) | 130 | SM |
| PHAS - Alice (Old) | 415 | Prelim. Sensor C&DH Design |
| PHAS - Alice (Old) | 493 | Detector System-Siegmund Scientific |
| PHAS - Alice (Old) | 535 | Alice EM Fab C&DH |
| PHAS - Alice (Old) | 544 | Alice EM Component Checkout HVPS |
| PHAS - Alice (Old) | 545 | Alice EM Component Checkout C&DH |
| PHAS - Alice (Old) | 551 | Alice EM Integration & Test |
| PHAS - Alice (Old) | 593 | Detector System-Siegmund Scientific Phase C/D |
| PHAS - Alice (Old) | 594 | EM EEE Parts |
| PHAS - Alice (Old) | 612 | Alice Design Updates Optics/Detector |
| PHAS - Alice (Old) | 613 | Alice Design Updates Mechanical |
| PHAS - Alice (Old) | 614 | Alice Design Updates HVPS |
| PHAS - Alice (Old) | 615 | Alice Design Updates C&DH |
| PHAS - Alice (Old) | 617 | Alice Design Updates LVPS |
| PHAS - Alice (Old) | 618 | Alice Design Updates Harness |
| PHAS - Alice (Old) | 632 | Alice Sensor Optics Fab |
| PHAS - Alice (Old) | 633 | Alice PFM Fab Mechanical |
| PHAS - Alice (Old) | 634 | Alice PFM Fab HVPS |
| PHAS - Alice (Old) | 635 | Alice PFM Fab C&DH |
| PHAS - Alice (Old) | 637 | Alice PFM Fab LVPS |
| PHAS - Alice (Old) | 638 | Alice PFM Fab Harness |
| PHAS - Alice (Old) | 644 | Alice PFM Component Checkout HVPS |
| PHAS - Alice (Old) | 645 | Alice PFM Component Checkout C&DH |
| PHAS - Alice (Old) | 647 | Alice PFM Component Checkout LVPS |
| PHAS - Alice (Old) | 648 | Alice PFM Component Checkout Harness |
| PHAS - Alice (Old) | 651 | Alice PFM Integration |
| PHAS - Alice (Old) | 694 | Flight EEE Parts |
| PHAS - Alice (Old) | 710 | Instrument/Spacecraft Bus Integration |
| PHAS - Alice (Old) | 730 | Spacecraft Environmental Test Support |
| PHAS - Alice (Old) | 810 | Launch Site Integration and Test Support |
| PHAS - Alice (Old) | 820 | On-Orbit Commissioning Support |
| PHAS - Alice (Old) | 913 | IV&V Support |
| PHAS - Alice (Old) | 952 | Software ATP Development |
| PHAS - Alice (Old) | 953 | Test Script Development & Dry Run |
| PHAS - Alice (Old) | 954 | Software Test Readiness Review |
| SORT - Item Sort | ELEC | Electrical |
| SORT - Item Sort | ELEC/C&DH | Electrical/C&DH |
| SORT - Item Sort | ELEC/HVPS | Electrical/High Voltage Power Supply |
| SORT - Item Sort | ELEC/LVPS | Electrical/ Low Voltage Power Supply |
| SORT - Item Sort | INT&TEST | Integration and Test |
| SORT - Item Sort | MECH | Mechanical |
| SORT - Item Sort | MILE | Milestones |
| SORT - Item Sort | OPT/DET | Optics/Detector |
| SORT - Item Sort | PLANS | Various Test Plans/Procedures/Reports |
| SORT - Item Sort | S/W | Software |
| SORT - Item Sort | SYS ENG | Systems Engineering |
| SVT | SVT | Schedule Visibility Task |
| Sch Margin | Y | Schedule Margin Task |
| SubC | APL | John Hopkins University Applied Physics Laboratory |
| SubC | CU | Colorado University |
| SubC | SS | Sensor Sciences |
