# TP3 - Coastal Plant Outage Turnaround

Schedule from MS Project XML, 2026-02-02 to 2026-06-26, status date 2026-04-30, A marks actual dates.

## Calendars

- Standard: Mon-Fri 08:00-12:00, 13:00-17:00; Sat-Sun off.

## Schedule

| ID | WBS | Task | Type | Duration | Start | Finish | Predecessors | Complete | Remaining | Actual start | Baseline start | Baseline finish | Baseline duration | Constraint |
| --- | --- | --- | --- | --- | --- | --- | --- | --- | --- | --- | --- | --- | --- | --- |
| 1 | 1 | **Pre-outage** |  | 20d | 2026-02-02 A | 2026-02-27 |  |  | 20d |  | 2026-02-02 | 2026-02-27 | 20d |  |
| 2 | 1.1 | Outage readiness review | milestone | 0d | 2026-02-02 A | 2026-02-02 A |  | 100% |  |  | 2026-02-02 | 2026-02-02 | 0d |  |
| 3 | 1.2 | Scaffolding & insulation removal |  | 10d | 2026-02-02 A | 2026-02-13 A | 2 | 100% |  |  | 2026-02-02 | 2026-02-13 | 10d |  |
| 4 | 1.3 | Permits & isolation plans |  | 15d | 2026-02-02 A | 2026-02-20 A | 2 | 100% |  |  | 2026-02-02 | 2026-02-20 | 15d |  |
| 5 | 1.4 | Pre-fabricate spool pieces |  | 20d | 2026-02-02 A | 2026-02-27 |  | 85% | 3d |  | 2026-02-02 | 2026-02-27 | 20d |  |
| 6 | 1.5 | Rental equipment staging |  | 5d | 2026-02-02 A | 2026-02-06 A |  | 100% |  |  | 2026-02-02 | 2026-02-06 | 5d |  |
| 7 | 1.6 | Welder qualification |  | 5d | 2026-02-02 A | 2026-02-06 A |  | 100% |  |  | 2026-02-02 | 2026-02-06 | 5d |  |
| 8 | 1.7 | Craft onboarding & badging |  | 8d | 2026-02-02 A | 2026-02-11 A | 2 | 100% |  |  |  |  |  |  |
| 9 | 2 | **Execution** |  | 92d | 2026-02-09 | 2026-06-16 |  |  | 92d | 2026-02-23 | 2026-02-09 | 2026-06-16 | 92d |  |
| 10 | 2.1 | Unit shutdown & cooldown |  | 5d | 2026-02-23 A | 2026-02-27 A | 3, 4 | 100% |  |  | 2026-02-23 | 2026-02-27 | 5d |  |
| 11 | 2.2 | Exchanger bundle pulls |  | 12d | 2026-03-02 A | 2026-03-17 A | 10, 8 | 100% |  |  | 2026-03-02 | 2026-03-13 | 10d |  |
| 12 | 2.3 | Tube bundle retube |  | 50d | 2026-03-18 A | 2026-05-26 | 11, 7 | 30% | 35d |  | 2026-03-16 | 2026-05-22 | 50d |  |
| 13 | 2.4 | Tower internals replacement |  | 60d | 2026-03-04 A | 2026-05-26 | 10FS+2d | 25% | 45d |  | 2026-03-04 | 2026-05-26 | 60d | must start on 2026-03-04 |
| 14 | 2.5 | Piping demolition & replacement |  | 40d | 2026-03-02 | 2026-04-24 | 10SS+3d, 5 |  |  |  | 2026-03-02 | 2026-04-24 | 40d |  |
| 15 | 2.6 | Valve overhaul program |  | 25d | 2026-03-09 | 2026-04-10 | 14SS+5d |  |  |  | 2026-03-09 | 2026-04-10 | 25d |  |
| 16 | 2.7 | Instrumentation & controls upgrade |  | 30d | 2026-04-06 A | 2026-05-15 | 12SS | 20% | 24d |  | 2026-03-16 | 2026-04-24 | 30d |  |
| 17 | 2.8 | Hydrotest & reinstatement |  | 10d | 2026-05-13 | 2026-05-26 | 14FF, 13FF, 11 |  |  |  | 2026-05-13 | 2026-05-26 | 10d |  |
| 18 | 2.9 | Reinstate insulation & scaffolding |  | 15d | 2026-05-27 | 2026-06-16 | 15FS-1d, 16FS-2d, 17 |  |  |  | 2026-05-27 | 2026-06-16 | 15d |  |
| 19 | 2.10 | Spent catalyst disposal |  | 47d | 2026-03-02 A | 2026-05-05 A | 10 | 100% |  |  | 2026-03-02 | 2026-03-06 | 5d |  |
| 20 | 2.11 | Warehouse inventory reconciliation |  | 10d | 2026-02-09 | 2026-02-20 | 6 |  |  |  | 2026-02-09 | 2026-02-20 | 10d |  |
| 21 | 3 | **Closeout** |  | 13d | 2026-06-09 | 2026-06-26 |  |  |  |  | 2026-06-09 | 2026-06-26 | 13d |  |
| 22 | 3.1 | Startup & performance test |  | 10d | 2026-06-12 | 2026-06-26 | 18 |  |  |  | 2026-06-12 | 2026-06-26 | 10d | must finish on 2026-06-26 |
| 23 | 3.2 | Demobilize rental equipment |  | 3d | 2026-06-09 | 2026-06-11 | 22SF |  |  |  | 2026-06-09 | 2026-06-11 | 3d |  |
| 24 | 3.3 | Outage complete | milestone | 0d | 2026-06-26 | 2026-06-26 | 22 |  |  |  | 2026-06-26 | 2026-06-26 | 0d |  |
